| entry | activity_code | activity_id | activity_name | activity_status | total_float |
| --- | --- | --- | --- | --- | --- |
| 1 | CHI05-PH2-FIT-BL-D5,2,2,1 | CHI05-05-FC-F | Site Secured Finish (August 04, 2025) | Not Started | 0 |
| 2 | CHI05-PH2-FIT-BL-D5,2,2,1 | CHI05-05-NTP-S | Notice To Proceed | Not Started | 0 |
| 3 | CHI05-PH2-FIT-BL-D5,2,2,2 | CHI05-03-L1CX-S | Start L1 CX (Red Tag) for Colo 3 | Not Started | 95 |
| 4 | CHI05-PH2-FIT-BL-D5,2,2,2 | CHI05-03-ROJ-F | Complete Last ROJ Arrival for Colo 3 | Not Started | 119 |
| 5 | CHI05-PH2-FIT-BL-D5,2,2,2 | CHI05-03-L2CX-S | Start L2 CX (Yellow Tag) for Colo 3 | Not Started | 77 |
| 6 | CHI05-PH2-FIT-BL-D5,2,2,2 | CHI05-03-L1CX-F | Complete L1 Cx (All Red Tags/ROJ) for Colo 3 | Not Started | 63 |
| 7 | CHI05-PH2-FIT-BL-D5,2,2,2 | CHI05-03-L2CX-F | Complete L2 CX (Yellow Tag) for Colo 3 | Not Started | 52 |
| 8 | CHI05-PH2-FIT-BL-D5,2,2,2 | CHI05-03-POW-F | Power-ON Utility for Colo 3 | Not Started | 51 |
| 9 | CHI05-PH2-FIT-BL-D5,2,2,2 | CHI05-03-L3CX-S | Start L3 Cx (Green tag) for Colo 3 | Not Started | 56 |
| 10 | CHI05-PH2-FIT-BL-D5,2,2,2 | CHI05-03-SSC-F | Complete Phase 3 Security System Test for Colo 3 | Not Started | 17 |
| 11 | CHI05-PH2-FIT-BL-D5,2,2,2 | CHI05-03-MEQ-S | Start-up Mechanical Equipment for Colo 3 | Not Started | 72 |
| 12 | CHI05-PH2-FIT-BL-D5,2,2,2 | CHI05-03-CSA-F | Interior Finishes/CSA Complete for Colo 3 | Not Started | 56 |
| 13 | CHI05-PH2-FIT-BL-D5,2,2,2 | CHI05-03-GEN-F | Generators Ready Fuel for Colo 3 | Not Started | 109 |
| 14 | CHI05-PH2-FIT-BL-D5,2,2,2 | CHI05-03-MEP-F | MEP Rough-in Complete for Colo 3 | Not Started | 76 |
| 15 | CHI05-PH2-FIT-BL-D5,2,2,2 | CHI05-03-L3CX-F | Complete L3 CX (Green Tag) for Colo 3 | Not Started | 38 |
| 16 | CHI05-PH2-FIT-BL-D5,2,2,2 | CHI05-03-BAS-F | Complete BAS SAT for Colo 3 | Not Started | 56 |
| 17 | CHI05-PH2-FIT-BL-D5,2,2,2 | CHI05-03-EPMS-F | Complete EPMS SAT for Colo 3 | Not Started | 56 |
| 18 | CHI05-PH2-FIT-BL-D5,2,2,2 | CHI05-03-FIRE-F | Complete Fire Alarm for Colo 3 | Not Started | 56 |
| 19 | CHI05-PH2-FIT-BL-D5,2,2,2 | CHI05-03-L4CX-F | Complete L4 Cx (Blue Tag) for Colo 3 | Not Started | 17 |
| 20 | CHI05-PH2-FIT-BL-D5,2,2,2 | CHI05-03-L5CX-F | Complete L5/IST (White Tag) for Colo 3 | Not Started | 17 |
| 21 | CHI05-PH2-FIT-BL-D5,2,2,2 | CHI05-03-RNI-F | Complete Ready for Network Install (RNI) For Colo 3 | Not Started | 38 |
| 22 | CHI05-PH2-FIT-BL-D5,2,2,2 | CHI05-03-CO-F | Complete CorpNet For Colo 3 | Not Started | 48 |
| 23 | CHI05-PH2-FIT-BL-D5,2,2,3 | CHI05-05-ROJ-F | Complete Last ROJ Arrival for Colo 5 | Not Started | 119 |
| 24 | CHI05-PH2-FIT-BL-D5,2,2,3 | CHI05-05-L2CX-S | Start L2 CX (Yellow Tag) for Colo 5 | Not Started | 77 |
| 25 | CHI05-PH2-FIT-BL-D5,2,2,3 | CHI05-05-L1CX-F | Complete L1 Cx (All Red Tags/ROJ) for Colo 5 | Not Started | 49 |
| 26 | CHI05-PH2-FIT-BL-D5,2,2,3 | CHI05-05-L2CX-F | Complete L2 CX (Yellow Tag) for Colo 5 | Not Started | 39 |
| 27 | CHI05-PH2-FIT-BL-D5,2,2,3 | CHI05-05-POW-F | Power-ON Utility for Colo 5 | Not Started | 73 |
| 28 | CHI05-PH2-FIT-BL-D5,2,2,3 | CHI05-05-L3CX-S | Start L3 Cx (Green tag) for Colo 5 | Not Started | 73 |
| 29 | CHI05-PH2-FIT-BL-D5,2,2,3 | CHI05-05-MEQ-S | Start-up Mechanical Equipment for Colo 5 | Not Started | 97 |
| 30 | CHI05-PH2-FIT-BL-D5,2,2,3 | CHI05-05-CSA-F | Interior Finishes/CSA Complete for Colo 5 | Not Started | 64 |
| 31 | CHI05-PH2-FIT-BL-D5,2,2,3 | CHI05-05-GEN-F | Generators Ready Fuel for Colo 5 | Not Started | 112 |
| 32 | CHI05-PH2-FIT-BL-D5,2,2,3 | CHI05-05-MEP-F | MEP Rough-in Complete for Colo 5 | Not Started | 100 |
| 33 | CHI05-PH2-FIT-BL-D5,2,2,3 | CHI05-05-L3CX-F | Complete L3 CX (Green Tag) for Colo 5 | Not Started | 35 |
| 34 | CHI05-PH2-FIT-BL-D5,2,2,3 | CHI05-05-BAS-F | Complete BAS SAT for Colo 5 | Not Started | 57 |
| 35 | CHI05-PH2-FIT-BL-D5,2,2,3 | CHI05-05-EPMS-F | Complete EPMS SAT for Colo 5 | Not Started | 57 |
| 36 | CHI05-PH2-FIT-BL-D5,2,2,3 | CHI05-05-FIR-F | Complete Fire Alarm for Colo 5 | Not Started | 57 |
| 37 | CHI05-PH2-FIT-BL-D5,2,2,3 | CHI05-05-SSC-F | Complete Phase 3 Security System Test for Colo 5 | Not Started | 35 |
| 38 | CHI05-PH2-FIT-BL-D5,2,2,3 | CHI05-05-L4CX-F | Complete L4 Cx (Blue Tag) for Colo 5 | Not Started | 35 |
| 39 | CHI05-PH2-FIT-BL-D5,2,2,3 | CHI05-05-L5CX-F | Complete L5/IST (White Tag) for Colo 5 | Not Started | 35 |
| 40 | CHI05-PH2-FIT-BL-D5,2,2,3 | CHI05-05-L1CX-S | Start L1 CX (Red Tag) for Colo 5 | Not Started | 74 |
| 41 | CHI05-PH2-FIT-BL-D5,2,2,3 | CHI05-05-RNI-F | Complete Ready for Network Install (RNI) For Colo 5 | Not Started | 56 |
| 42 | CHI05-PH2-FIT-BL-D5,2,2,3 | CHI05-05-CO-F | Complete CorpNet For Colo 5 | Not Started | 66 |
| 43 | CHI05-PH2-FIT-BL-D5,2,2,4 | CHI05-04-ROJ-F | Complete Last ROJ Arrival for Colo 4 | Not Started | 122 |
| 44 | CHI05-PH2-FIT-BL-D5,2,2,4 | CHI05-04-L2CX-S | Start L2 CX (Yellow Tag) for Colo 4 | Not Started | 82 |
| 45 | CHI05-PH2-FIT-BL-D5,2,2,4 | CHI05-04-L1CX-F | Complete L1 Cx (All Red Tags/ROJ) for Colo 4 | Not Started | 14 |
| 46 | CHI05-PH2-FIT-BL-D5,2,2,4 | CHI05-04-L2CX-F | Complete L2 CX (Yellow Tag) for Colo 4 | Not Started | 15 |
| 47 | CHI05-PH2-FIT-BL-D5,2,2,4 | CHI05-04-POW-F | Power-ON Utility for Colo 4 | Not Started | 58 |
| 48 | CHI05-PH2-FIT-BL-D5,2,2,4 | CHI05-04-L3CX-S | Start L3 Cx (Green tag) for Colo 4 | Not Started | 28 |
| 49 | CHI05-PH2-FIT-BL-D5,2,2,4 | CHI05-04-SSC-F | Complete Phase 3 Security System Test for Colo 4 | Not Started | 0 |
| 50 | CHI05-PH2-FIT-BL-D5,2,2,4 | CHI05-04-MEQ-S | Start-up Mechanical Equipment for Colo 4 | Not Started | 22 |
| 51 | CHI05-PH2-FIT-BL-D5,2,2,4 | CHI05-04-CSA-F | Interior Finishes/CSA Complete for Colo 4 | Not Started | 35 |
| 52 | CHI05-PH2-FIT-BL-D5,2,2,4 | CHI05-04-GEN-F | Generators Ready Fuel for Colo 4 | Not Started | 113 |
| 53 | CHI05-PH2-FIT-BL-D5,2,2,4 | CHI05-04-MEP-F | MEP Rough-in Complete for Colo 4 | Not Started | 43 |
| 54 | CHI05-PH2-FIT-BL-D5,2,2,4 | CHI05-04-L3CX-F | Complete L3 CX (Green Tag) for Colo 4 | Not Started | 0 |
| 55 | CHI05-PH2-FIT-BL-D5,2,2,4 | CHI05-04-BAS-F | Complete BAS SAT for Colo 4 | Not Started | 28 |
| 56 | CHI05-PH2-FIT-BL-D5,2,2,4 | CHI05-04-EPMS-F | Complete EPMS SAT for Colo 4 | Not Started | 28 |
| 57 | CHI05-PH2-FIT-BL-D5,2,2,4 | CHI05-04-FIRE-F | Complete Fire Alarm for Colo 4 | Not Started | 28 |
| 58 | CHI05-PH2-FIT-BL-D5,2,2,4 | CHI05-04-L4CX-F | Complete L4 Cx (Blue Tag) for Colo 4 | Not Started | 0 |
| 59 | CHI05-PH2-FIT-BL-D5,2,2,4 | CHI05-04-L5CX-F | Complete L5/IST (White Tag) for Colo 4 | Not Started | 0 |
| 60 | CHI05-PH2-FIT-BL-D5,2,2,4 | CHI05-04-L1CX-S | Start L1 CX (Red Tag) for Colo 4 | Not Started | 72 |
| 61 | CHI05-PH2-FIT-BL-D5,2,2,4 | CHI05-04-RNI-F | Complete Ready for Network Install (RNI) For Colo 4 | Not Started | 21 |
| 62 | CHI05-PH2-FIT-BL-D5,2,2,4 | CHI05-04-CO-F | Complete CorpNet For Colo 4 | Not Started | 26 |
| 63 | CHI05-PH2-FIT-BL-D5,2,2,5 | CHI05-02-L1CX-S | Start L1 CX (Red Tag) for Colo 2 | Not Started | 95 |
| 64 | CHI05-PH2-FIT-BL-D5,2,2,5 | CHI05-02-ROJ-F | Complete Last ROJ Arrival for Colo 2 | Not Started | 92 |
| 65 | CHI05-PH2-FIT-BL-D5,2,2,5 | CHI05-02-L2CX-S | Start L2 CX (Yellow Tag) for Colo 2 | Not Started | 77 |
| 66 | CHI05-PH2-FIT-BL-D5,2,2,5 | CHI05-02-L1CX-F | Complete L1 Cx (All Red Tags/ROJ) for Colo 2 | Not Started | 90 |
| 67 | CHI05-PH2-FIT-BL-D5,2,2,5 | CHI05-02-L2CX-F | Complete L2 CX (Yellow Tag) for Colo 2 | Not Started | 47 |
| 68 | CHI05-PH2-FIT-BL-D5,2,2,5 | CHI05-02-POW-F | Power-ON Utility for Colo 2 | Not Started | 29 |
| 69 | CHI05-PH2-FIT-BL-D5,2,2,5 | CHI05-02-L3CX-S | Start L3 Cx (Green tag) for Colo 2 | Not Started | 73 |
| 70 | CHI05-PH2-FIT-BL-D5,2,2,5 | CHI05-02-MEQ-S | Start-up Mechanical Equipment for Colo 2 | Not Started | 96 |

| entry | activity_code | activity_id | activity_name | activity_status | total_float |
| --- | --- | --- | --- | --- | --- |
| 71 | CHI05-PH2-FIT-BL-D5,2,2,5 | CHI05-02-CSA-F | Interior Finishes/CSA Complete for Colo 2 | Not Started | 78 |
| 72 | CHI05-PH2-FIT-BL-D5,2,2,5 | CHI05-02-GEN-F | Generators Ready Fuel for Colo 2 | Not Started | 122 |
| 73 | CHI05-PH2-FIT-BL-D5,2,2,5 | CHI05-02-MEP-F | MEP Rough-in Complete for Colo 2 | Not Started | 94 |
| 74 | CHI05-PH2-FIT-BL-D5,2,2,5 | CHI05-02-L3CX-F | Complete L3 CX (Green Tag) for Colo 2 | Not Started | 35 |
| 75 | CHI05-PH2-FIT-BL-D5,2,2,5 | CHI05-02-BAS-F | Complete BAS SAT for Colo 2 | Not Started | 57 |
| 76 | CHI05-PH2-FIT-BL-D5,2,2,5 | CHI05-02-EPMS-F | Complete EPMS SAT for Colo 2 | Not Started | 57 |
| 77 | CHI05-PH2-FIT-BL-D5,2,2,5 | CHI05-02-FIRE-F | Complete Fire Alarm for Colo 2 | Not Started | 57 |
| 78 | CHI05-PH2-FIT-BL-D5,2,2,5 | CHI05-02-SSC-F | Complete Phase 3 Security System Test for Colo 2 | Not Started | 35 |
| 79 | CHI05-PH2-FIT-BL-D5,2,2,5 | CHI05-02-L4CX-F | Complete L4 Cx (Blue Tag) for Colo 2 | Not Started | 35 |
| 80 | CHI05-PH2-FIT-BL-D5,2,2,5 | CHI05-02-L5CX-F | Complete L5/IST (White Tag) for Colo 2 | Not Started | 35 |
| 81 | CHI05-PH2-FIT-BL-D5,2,2,5 | CHI05-02-RNI-F | Complete Ready for Network Install (RNI) For Colo 2 | Not Started | 56 |
| 82 | CHI05-PH2-FIT-BL-D5,2,2,5 | CHI05-02-CO-F | Complete CorpNet For Colo 2 | Not Started | 66 |
| 83 | CHI05-PH2-FIT-BL-D5,3,3,5,6,2 | CHI05-02-01-MG-1000 | Install Dampers and actuators at Louvers - Upper level (RED) - COLO2 Cell 1 - MG | Not Started | 0 |
| 84 | CHI05-PH2-FIT-BL-D5,3,3,5,6,2 | CHI05-02-01-MG-1010 | Install Dampers and actuators at Louvers - Lower level (OA) - COLO2 Cell 1 - MG | Not Started | 0 |
| 85 | CHI05-PH2-FIT-BL-D5,3,3,5,6,2 | CHI05-02-01-MG-1020 | Overhead MEP Installation - COLO2 Cell 1 - MG | Not Started | 48 |
| 86 | CHI05-PH2-FIT-BL-D5,3,3,5,6,2 | CHI05-02-01-MG-1030 | Deliver AHU into Mech. Gallery - COLO2 Cell 1 - MG | Not Started | 48 |
| 87 | CHI05-PH2-FIT-BL-D5,3,3,5,6,2 | CHI05-02-01-MG-1040 | Install Walls and Primer Paint - COLO2 Cell 1 - MG | Not Started | 48 |
| 88 | CHI05-PH2-FIT-BL-D5,3,3,5,6,2 | CHI05-02-01-MG-1060 | Placing the AHU - COLO2 Cell 1 - MG | Not Started | 94 |
| 89 | CHI05-PH2-FIT-BL-D5,3,3,5,6,2 | CHI05-02-01-MG-1050 | Layout Ceiling and install Pencile Rod - COLO2 Cell 1 - MG | Not Started | 98 |
| 90 | CHI05-PH2-FIT-BL-D5,3,3,5,6,2 | CHI05-02-01-MG-1070 | Piping and Electrical Termination to AHUs - COLO2 Cell 1 - MG | Not Started | 94 |
| 91 | CHI05-PH2-FIT-BL-D5,3,3,5,6,2 | CHI05-02-01-MG-1080 | Pipe Testing - COLO2 Cell 1 - MG | Not Started | 100 |
| 92 | CHI05-PH2-FIT-BL-D5,3,3,5,6,2 | CHI05-02-01-MG-1090 | Install ceiling and Light Fittings - COLO2 Cell 1 - MG | Not Started | 100 |
| 93 | CHI05-PH2-FIT-BL-D5,3,3,5,6,2 | CHI05-02-01-MG-1100 | Trim out MEP - COLO2 Cell 1 - MG | Not Started | 109 |
| 94 | CHI05-PH2-FIT-BL-D5,3,3,5,6,2 | CHI05-02-01-MG-1045 | Post Wall Overhead MEP - COLO2 Cell 1 - MG | Not Started | 94 |
| 95 | CHI05-PH2-FIT-BL-D5,3,3,5,6,1 | CHI05-02-01-DH-1050 | Cable Pulling at PDU & Busway - COLO2 Cell 1 - DH | Not Started | 42 |
| 96 | CHI05-PH2-FIT-BL-D5,3,3,5,6,1 | CHI05-02-01-DH-1000 | Overhead MEP and Hangers (Above Ceiling) - COLO2 Cell 1 - DH | Not Started | 68 |
| 97 | CHI05-PH2-FIT-BL-D5,3,3,5,6,1 | CHI05-02-01-DH-1060 | HAC install and Rise - COLO2 Cell 1 - DH | Not Started | 78 |
| 98 | CHI05-PH2-FIT-BL-D5,3,3,5,6,1 | CHI05-02-01-DH-1070 | Termination at PDU & Busway- COLO2 Cell 1 - DH | Not Started | 53 |
| 99 | CHI05-PH2-FIT-BL-D5,3,3,5,6,1 | CHI05-02-01-DH-1010 | Security Screen Installation - COLO2 Cell 1 - DH | Not Started | 48 |
| 100 | CHI05-PH2-FIT-BL-D5,3,3,5,6,1 | CHI05-02-01-DH-1020 | Ceiling Grid and Tile - COLO2 Cell 1 - DH | Not Started | 48 |
| 101 | CHI05-PH2-FIT-BL-D5,3,3,5,6,1 | CHI05-02-01-DH-1040 | Install PDU's - COLO2 Cell 1 - DH | Not Started | 48 |
| 102 | CHI05-PH2-FIT-BL-D5,3,3,5,6,1 | CHI05-02-01-DH-1030 | Overhead MEP Installation (Below Ceiling) - COLO2 Cell 1 - DH | Not Started | 48 |
| 103 | CHI05-PH2-FIT-BL-D5,3,3,5,6,1 | CHI05-02-01-DH-1080 | Install Low Voltage Wiring and Fiber Optic - COLO2 Cell 1 - DH | Not Started | 78 |
| 104 | CHI05-PH2-FIT-BL-D5,3,3,5,6,1 | CHI05-02-01-DH-1035 | HAC Placing - COLO2 Cell 1 - DH | Not Started | 78 |
| 105 | CHI05-PH2-FIT-BL-D5,3,3,5,6,1 | CHI05-02-01-DH-1090 | Finishes and Signage - COLO2 Cell 1 - DH | Not Started | 123 |
| 106 | CHI05-PH2-FIT-BL-D5,3,3,5,6,4,1 | CHI05-02-01-L1-1140 | Interior - L1 UPS - COLO2 Cell 1 | Not Started | 87 |
| 107 | CHI05-PH2-FIT-BL-D5,3,3,5,6,4,1 | CHI05-02-01-L1-1150 | Interior - L1 MSB - COLO2 Cell 1 | Not Started | 93 |
| 108 | CHI05-PH2-FIT-BL-D5,3,3,5,6,4,1 | CHI05-02-01-L1-1160 | Interior - L1 PDUs - COLO2 Cell 1 | Not Started | 97 |
| 109 | CHI05-PH2-FIT-BL-D5,3,3,5,6,4,1 | CHI05-02-01-L1-1170 | Interior - L1 AHUs - COLO2 Cell 1 | Not Started | 105 |
| 110 | CHI05-PH2-FIT-BL-D5,3,3,5,6,4,1 | CHI05-02-01-L1-1180 | Interior - L1 ATSs - COLO2 Cell 1 | Not Started | 101 |
| 111 | CHI05-PH2-FIT-BL-D5,3,3,5,6,4,1 | CHI05-02-01-L1-1190 | Interior - L1 Busway - COLO2 Cell 1 | Not Started | 101 |
| 112 | CHI05-PH2-FIT-BL-D5,3,3,5,6,4,1 | CHI05-02-01-L1-1250 | Interior - L1 ADP - COLO2 Cell 1 | Not Started | 97 |
| 113 | CHI05-PH2-FIT-BL-D5,3,3,5,6,4,2 | CHI05-02-01-L2-1260 | Interior - L2 UPS - COLO2 Cell 1 | Not Started | 52 |
| 114 | CHI05-PH2-FIT-BL-D5,3,3,5,6,4,2 | CHI05-02-01-L2-1270 | Interior - L2 MSB - COLO2 Cell 1 | Not Started | 52 |
| 115 | CHI05-PH2-FIT-BL-D5,3,3,5,6,4,2 | CHI05-02-01-L2-1280 | Interior - L2 PDUs - COLO2 Cell 1 | Not Started | 52 |
| 116 | CHI05-PH2-FIT-BL-D5,3,3,5,6,4,2 | CHI05-02-01-L2-1290 | Interior - L2 AHUs - COLO2 Cell 1 | Not Started | 52 |
| 117 | CHI05-PH2-FIT-BL-D5,3,3,5,6,4,2 | CHI05-02-01-L2-1300 | Interior - L2 ATSs - COLO2 Cell 1 | Not Started | 52 |
| 118 | CHI05-PH2-FIT-BL-D5,3,3,5,6,4,2 | CHI05-02-01-L2-1310 | Interior - L2 Busway - COLO2 Cell 1 | Not Started | 52 |
| 119 | CHI05-PH2-FIT-BL-D5,3,3,5,6,4,2 | CHI05-02-01-L2-1370 | Interior - L2 ADP - COLO2 Cell 1 | Not Started | 52 |
| 120 | CHI05-PH2-FIT-BL-D5,3,3,5,6,4,3 | CHI05-02-01-L3-1380 | Interior - L3 UPS - COLO2 Cell 1 | Not Started | 37 |
| 121 | CHI05-PH2-FIT-BL-D5,3,3,5,6,4,3 | CHI05-02-01-L3-1390 | Interior - L3 MSB - COLO2 Cell 1 | Not Started | 37 |
| 122 | CHI05-PH2-FIT-BL-D5,3,3,5,6,4,3 | CHI05-02-01-L3-1400 | Interior - L3 PDUs - COLO2 Cell 1 | Not Started | 42 |
| 123 | CHI05-PH2-FIT-BL-D5,3,3,5,6,4,3 | CHI05-02-01-L3-1410 | Interior - L3 AHUs - COLO2 Cell 1 | Not Started | 37 |
| 124 | CHI05-PH2-FIT-BL-D5,3,3,5,6,4,3 | CHI05-02-01-L3-1420 | Interior - L3 ATSs - COLO2 Cell 1 | Not Started | 37 |
| 125 | CHI05-PH2-FIT-BL-D5,3,3,5,6,4,3 | CHI05-02-01-L3-1430 | Interior - L3 Busway - COLO2 Cell 1 | Not Started | 42 |
| 126 | CHI05-PH2-FIT-BL-D5,3,3,5,6,4,3 | CHI05-02-01-L3-1490 | Interior - L3 ADP - COLO2 Cell 1 | Not Started | 37 |
| 127 | CHI05-PH2-FIT-BL-D5,3,3,5,6,5 | CHI05-02-01-ER-1000 | Install Walls and Primer Paint - COLO2 Cell 1 - ER | Not Started | 46 |
| 128 | CHI05-PH2-FIT-BL-D5,3,3,5,6,5 | CHI05-02-01-ER-1020 | Sprinklers and Overhead MEP (Above Ceiling) - COLO2 Cell 1 - ER | Not Started | 46 |
| 129 | CHI05-PH2-FIT-BL-D5,3,3,5,6,5 | CHI05-02-01-ER-1010 | Install Upper Screens - COLO2 Cell 1 - ER | Not Started | 46 |
| 130 | CHI05-PH2-FIT-BL-D5,3,3,5,6,5 | CHI05-02-01-ER-1030 | Install Ceiling - COLO2 Cell 1 - ER | Not Started | 46 |
| 131 | CHI05-PH2-FIT-BL-D5,3,3,5,6,5 | CHI05-02-01-ER-1040 | Below Ceiling MEP Rough In - COLO2 Cell 1 - ER | Not Started | 40 |
| 132 | CHI05-PH2-FIT-BL-D5,3,3,5,6,5 | CHI05-02-01-ER-1050 | Installation of ADP & ATS - COLO2 Cell 1 - ER | Not Started | 94 |
| 133 | CHI05-PH2-FIT-BL-D5,3,3,5,6,5 | CHI05-02-01-ER-1070 | Installation of UPS Equipment - COLO2 Cell 1 - ER | Not Started | 55 |
| 134 | CHI05-PH2-FIT-BL-D5,3,3,5,6,5 | CHI05-02-01-ER-1060 | Connet to Cable tray and conduit equipment - COLO2 Cell 1 - ER | Not Started | 104 |
| 135 | CHI05-PH2-FIT-BL-D5,3,3,5,6,5 | CHI05-02-01-ER-1080 | Cable Pulling at Elec. Equipment - COLO2 Cell 1 - ER | Not Started | 98 |
| 136 | CHI05-PH2-FIT-BL-D5,3,3,5,6,5 | CHI05-02-01-ER-1090 | Door Frame Installation - COLO2 Cell 1 - ER | Not Started | 67 |
| 137 | CHI05-PH2-FIT-BL-D5,3,3,5,6,5 | CHI05-02-01-ER-1100 | Finishes and Signage - COLO2 Cell 1 - ER | Not Started | 125 |
| 138 | CHI05-PH2-FIT-BL-D5,3,3,5,6,5 | CHI05-02-01-ER-1055 | Installation of MSB - COLO2 Cell 1 - ER | Not Started | 94 |
| 139 | CHI05-PH2-FIT-BL-D5,3,3,5,5,1 | CHI05-02-04-L4-1000 | COLO2 Cx LEV4 - COLO2 | Not Started | 35 |
| 140 | CHI05-PH2-FIT-BL-D5,3,3,5,5,2 | CHI05-02-04-L5-1000 | COLO2 Cx LEV5 / IST - COLO2 | Not Started | 35 |

| entry | activity_code | activity_id | activity_name | activity_status | total_float |
| --- | --- | --- | --- | --- | --- |
| 141 | CHI05-PH2-FIT-BL-D5,3,3,5,1,2 | CHI05-02-02-MG-1110 | Install Dampers and actuators at Louvers - Upper level (RED) - COLO2 Cell 2 - MG | Not Started | 0 |
| 142 | CHI05-PH2-FIT-BL-D5,3,3,5,1,2 | CHI05-02-02-MG-1120 | Install Dampers and actuators at Louvers - Lower level (OA) - COLO2 Cell 2 - MG | Not Started | 0 |
| 143 | CHI05-PH2-FIT-BL-D5,3,3,5,1,2 | CHI05-02-02-MG-1130 | Overhead MEP Installation - COLO2 Cell 2 - MG | Not Started | 53 |
| 144 | CHI05-PH2-FIT-BL-D5,3,3,5,1,2 | CHI05-02-02-MG-1140 | Deliver AHU into Mech. Gallery - COLO2 Cell 2 - MG | Not Started | 53 |
| 145 | CHI05-PH2-FIT-BL-D5,3,3,5,1,2 | CHI05-02-02-MG-1150 | Install Walls and Primer Paint - COLO2 Cell 2 - MG | Not Started | 53 |
| 146 | CHI05-PH2-FIT-BL-D5,3,3,5,1,2 | CHI05-02-02-MG-1160 | Placing the AHU - COLO2 Cell 2 - MG | Not Started | 94 |
| 147 | CHI05-PH2-FIT-BL-D5,3,3,5,1,2 | CHI05-02-02-MG-1170 | Layout Ceiling and install Pencile Rod - COLO2 Cell 2 - MG | Not Started | 98 |
| 148 | CHI05-PH2-FIT-BL-D5,3,3,5,1,2 | CHI05-02-02-MG-1180 | Piping and Electrical Termination to AHUs - COLO2 Cell 2 - MG | Not Started | 94 |
| 149 | CHI05-PH2-FIT-BL-D5,3,3,5,1,2 | CHI05-02-02-MG-1190 | Pipe Testing - COLO2 Cell 2 - MG | Not Started | 98 |
| 150 | CHI05-PH2-FIT-BL-D5,3,3,5,1,2 | CHI05-02-02-MG-1200 | Install ceiling and Light Fittings - COLO2 Cell 2 - MG | Not Started | 98 |
| 151 | CHI05-PH2-FIT-BL-D5,3,3,5,1,2 | CHI05-02-02-MG-1210 | Trim out MEP - COLO2 Cell 2 - MG | Not Started | 104 |
| 152 | CHI05-PH2-FIT-BL-D5,3,3,5,1,2 | CHI05-02-02-MG-1155 | Post Wall Overhead MEP - COLO2 Cell 2 - MG | Not Started | 94 |
| 153 | CHI05-PH2-FIT-BL-D5,3,3,5,1,5 | CHI05-02-02-ER-1110 | Install Walls and Primer Paint - COLO2 Cell 2 - ER | Not Started | 46 |
| 154 | CHI05-PH2-FIT-BL-D5,3,3,5,1,5 | CHI05-02-02-ER-1120 | Sprinklers and Overhead MEP (Above Ceiling) - COLO2 Cell 2 - ER | Not Started | 46 |
| 155 | CHI05-PH2-FIT-BL-D5,3,3,5,1,5 | CHI05-02-02-ER-1130 | Install Upper Screens - COLO2 Cell 2 - ER | Not Started | 46 |
| 156 | CHI05-PH2-FIT-BL-D5,3,3,5,1,5 | CHI05-02-02-ER-1140 | Install Ceiling - COLO2 Cell 2 - ER | Not Started | 46 |
| 157 | CHI05-PH2-FIT-BL-D5,3,3,5,1,5 | CHI05-02-02-ER-1150 | Below Ceiling MEP Rough In - COLO2 Cell 2 - ER | Not Started | 40 |
| 158 | CHI05-PH2-FIT-BL-D5,3,3,5,1,5 | CHI05-02-02-ER-1160 | Installation of ADP & ATS - COLO2 Cell 2 - ER | Not Started | 99 |
| 159 | CHI05-PH2-FIT-BL-D5,3,3,5,1,5 | CHI05-02-02-ER-1170 | Installation of UPS Equipment - COLO2 Cell 2 - ER | Not Started | 55 |
| 160 | CHI05-PH2-FIT-BL-D5,3,3,5,1,5 | CHI05-02-02-ER-1180 | Connet to Cable tray and conduit equipment - COLO2 Cell 2 - ER | Not Started | 114 |
| 161 | CHI05-PH2-FIT-BL-D5,3,3,5,1,5 | CHI05-02-02-ER-1190 | Cable Pulling at Elec. Equipment - COLO2 Cell 2 - ER | Not Started | 98 |
| 162 | CHI05-PH2-FIT-BL-D5,3,3,5,1,5 | CHI05-02-02-ER-1200 | Door Frame Installation - COLO2 Cell 2 - ER | Not Started | 67 |
| 163 | CHI05-PH2-FIT-BL-D5,3,3,5,1,5 | CHI05-02-02-ER-1210 | Finishes and Signage - COLO2 Cell 2 - ER | Not Started | 118 |
| 164 | CHI05-PH2-FIT-BL-D5,3,3,5,1,5 | CHI05-02-02-ER-1165 | Installation of MSB - COLO2 Cell 2 - ER | Not Started | 94 |
| 165 | CHI05-PH2-FIT-BL-D5,3,3,5,1,1 | CHI05-02-02-DH-1100 | Termination at PDU & Busway - COLO2 Cell 2 - DH | Not Started | 42 |
| 166 | CHI05-PH2-FIT-BL-D5,3,3,5,1,1 | CHI05-02-02-DH-1110 | Overhead MEP and Hangers (Above Ceiling) - COLO2 Cell 2 - DH | Not Started | 71 |
| 167 | CHI05-PH2-FIT-BL-D5,3,3,5,1,1 | CHI05-02-02-DH-1120 | HAC install and Rise - COLO2 Cell 2 - DH | Not Started | 78 |
| 168 | CHI05-PH2-FIT-BL-D5,3,3,5,1,1 | CHI05-02-02-DH-1130 | Cable Pulling at PDU & Busway- COLO2 Cell 2 - DH | Not Started | 58 |
| 169 | CHI05-PH2-FIT-BL-D5,3,3,5,1,1 | CHI05-02-02-DH-1140 | Security Screen Installation - COLO2 Cell 2 - DH | Not Started | 53 |
| 170 | CHI05-PH2-FIT-BL-D5,3,3,5,1,1 | CHI05-02-02-DH-1150 | Ceiling Grid and Tile - COLO2 Cell 2 - DH | Not Started | 53 |
| 171 | CHI05-PH2-FIT-BL-D5,3,3,5,1,1 | CHI05-02-02-DH-1160 | Install PDU's - COLO2 Cell 2 - DH | Not Started | 53 |
| 172 | CHI05-PH2-FIT-BL-D5,3,3,5,1,1 | CHI05-02-02-DH-1170 | Overhead MEP Installation (Below Ceiling) - COLO2 Cell 2 - DH | Not Started | 53 |
| 173 | CHI05-PH2-FIT-BL-D5,3,3,5,1,1 | CHI05-02-02-DH-1180 | Install Low Voltage Wiring and Fiber Optic - COLO2 Cell 2 - DH | Not Started | 78 |
| 174 | CHI05-PH2-FIT-BL-D5,3,3,5,1,1 | CHI05-02-02-DH-1190 | HAC Placing - COLO2 Cell 2 - DH | Not Started | 78 |
| 175 | CHI05-PH2-FIT-BL-D5,3,3,5,1,1 | CHI05-02-02-DH-1200 | Finishes and Signage - COLO2 Cell 2 - DH | Not Started | 113 |
| 176 | CHI05-PH2-FIT-BL-D5,3,3,5,1,4,1 | CHI05-02-02-L1-1260 | Interior - L1 UPS - COLO2 Cell 2 | Not Started | 87 |
| 177 | CHI05-PH2-FIT-BL-D5,3,3,5,1,4,1 | CHI05-02-02-L1-1270 | Interior - L1 MSB - COLO2 Cell 2 | Not Started | 93 |
| 178 | CHI05-PH2-FIT-BL-D5,3,3,5,1,4,1 | CHI05-02-02-L1-1280 | Interior - L1 PDUs - COLO2 Cell 2 | Not Started | 97 |
| 179 | CHI05-PH2-FIT-BL-D5,3,3,5,1,4,1 | CHI05-02-02-L1-1290 | Interior - L1 AHUs - COLO2 Cell 2 | Not Started | 105 |
| 180 | CHI05-PH2-FIT-BL-D5,3,3,5,1,4,1 | CHI05-02-02-L1-1300 | Interior - L1 ATSs - COLO2 Cell 2 | Not Started | 101 |
| 181 | CHI05-PH2-FIT-BL-D5,3,3,5,1,4,1 | CHI05-02-02-L1-1310 | Interior - L1 Busway - COLO2 Cell 2 | Not Started | 101 |
| 182 | CHI05-PH2-FIT-BL-D5,3,3,5,1,4,1 | CHI05-02-02-L1-1370 | Interior - L1 ADP - COLO2 Cell 2 | Not Started | 97 |
| 183 | CHI05-PH2-FIT-BL-D5,3,3,5,1,4,2 | CHI05-02-02-L2-1380 | Interior - L2 UPS - COLO2 Cell 2 | Not Started | 52 |
| 184 | CHI05-PH2-FIT-BL-D5,3,3,5,1,4,2 | CHI05-02-02-L2-1390 | Interior - L2 MSB - COLO2 Cell 2 | Not Started | 52 |
| 185 | CHI05-PH2-FIT-BL-D5,3,3,5,1,4,2 | CHI05-02-02-L2-1400 | Interior - L2 PDUs - COLO2 Cell 2 | Not Started | 52 |
| 186 | CHI05-PH2-FIT-BL-D5,3,3,5,1,4,2 | CHI05-02-02-L2-1410 | Interior - L2 AHUs - COLO2 Cell 2 | Not Started | 52 |
| 187 | CHI05-PH2-FIT-BL-D5,3,3,5,1,4,2 | CHI05-02-02-L2-1420 | Interior - L2 ATSs - COLO2 Cell 2 | Not Started | 52 |
| 188 | CHI05-PH2-FIT-BL-D5,3,3,5,1,4,2 | CHI05-02-02-L2-1430 | Interior - L2 Busway - COLO2 Cell 2 | Not Started | 52 |
| 189 | CHI05-PH2-FIT-BL-D5,3,3,5,1,4,2 | CHI05-02-02-L2-1490 | Interior - L2 ADP - COLO2 Cell 2 | Not Started | 52 |
| 190 | CHI05-PH2-FIT-BL-D5,3,3,5,1,4,3 | CHI05-02-02-L3-1500 | Interior - L3 UPS - COLO2 Cell 2 | Not Started | 37 |
| 191 | CHI05-PH2-FIT-BL-D5,3,3,5,1,4,3 | CHI05-02-02-L3-1510 | Interior - L3 MSB - COLO2 Cell 2 | Not Started | 37 |
| 192 | CHI05-PH2-FIT-BL-D5,3,3,5,1,4,3 | CHI05-02-02-L3-1520 | Interior - L3 PDUs - COLO2 Cell 2 | Not Started | 37 |
| 193 | CHI05-PH2-FIT-BL-D5,3,3,5,1,4,3 | CHI05-02-02-L3-1530 | Interior - L3 AHUs - COLO2 Cell 2 | Not Started | 37 |
| 194 | CHI05-PH2-FIT-BL-D5,3,3,5,1,4,3 | CHI05-02-02-L3-1540 | Interior - L3 ATSs - COLO2 Cell 2 | Not Started | 42 |
| 195 | CHI05-PH2-FIT-BL-D5,3,3,5,1,4,3 | CHI05-02-02-L3-1550 | Interior - L3 Busway - COLO2 Cell 2 | Not Started | 37 |
| 196 | CHI05-PH2-FIT-BL-D5,3,3,5,1,4,3 | CHI05-02-02-L3-1610 | Interior - L3 ADP - COLO2 Cell 2 | Not Started | 42 |
| 197 | CHI05-PH2-FIT-BL-D5,3,3,5,3,2 | CHI05-02-03-MG-1220 | Install Dampers and actuators at Louvers - Upper level (RED) - COLO2 Cell 3 - MG | Not Started | 0 |
| 198 | CHI05-PH2-FIT-BL-D5,3,3,5,3,2 | CHI05-02-03-MG-1230 | Install Dampers and actuators at Louvers - Lower level (OA) - COLO2 Cell 3 - MG | Not Started | 0 |
| 199 | CHI05-PH2-FIT-BL-D5,3,3,5,3,2 | CHI05-02-03-MG-1240 | Overhead MEP Installation - COLO2 Cell 3 - MG | Not Started | 58 |
| 200 | CHI05-PH2-FIT-BL-D5,3,3,5,3,2 | CHI05-02-03-MG-1250 | Deliver AHU into Mech. Gallery - COLO2 Cell 3 - MG | Not Started | 58 |
| 201 | CHI05-PH2-FIT-BL-D5,3,3,5,3,2 | CHI05-02-03-MG-1260 | Install Walls and Primer Paint - COLO2 Cell 3 - MG | Not Started | 58 |
| 202 | CHI05-PH2-FIT-BL-D5,3,3,5,3,2 | CHI05-02-03-MG-1270 | Placing the AHU - COLO2 Cell 3 - MG | Not Started | 94 |
| 203 | CHI05-PH2-FIT-BL-D5,3,3,5,3,2 | CHI05-02-03-MG-1280 | Layout Ceiling and install Pencile Rod - COLO2 Cell 3 - MG | Not Started | 98 |
| 204 | CHI05-PH2-FIT-BL-D5,3,3,5,3,2 | CHI05-02-03-MG-1290 | Piping and Electrical Termination to AHUs - COLO2 Cell 3 - MG | Not Started | 94 |
| 205 | CHI05-PH2-FIT-BL-D5,3,3,5,3,2 | CHI05-02-03-MG-1300 | Pipe Testing - COLO2 Cell 3 - MG | Not Started | 96 |
| 206 | CHI05-PH2-FIT-BL-D5,3,3,5,3,2 | CHI05-02-03-MG-1310 | Install ceiling and Light Fittings - COLO2 Cell 3 - MG | Not Started | 96 |
| 207 | CHI05-PH2-FIT-BL-D5,3,3,5,3,2 | CHI05-02-03-MG-1320 | Trim out MEP - COLO2 Cell 3 - MG | Not Started | 99 |
| 208 | CHI05-PH2-FIT-BL-D5,3,3,5,3,2 | CHI05-02-03-MG-1265 | Post Wall Overhead MEP - COLO2 Cell 3 - MG | Not Started | 94 |
| 209 | CHI05-PH2-FIT-BL-D5,3,3,5,3,5 | CHI05-02-03-ER-1220 | Install Walls and Primer Paint - COLO2 Cell 3 - ER | Not Started | 46 |
| 210 | CHI05-PH2-FIT-BL-D5,3,3,5,3,5 | CHI05-02-03-ER-1230 | Sprinklers and Overhead MEP (Above Ceiling) - COLO2 Cell 3 - ER | Not Started | 46 |

| entry | activity_code | activity_id | activity_name | activity_status | total_float |
| --- | --- | --- | --- | --- | --- |
| 211 | CHI05-PH2-FIT-BL-D5,3,3,5,3,5 | CHI05-02-03-ER-1240 | Install Upper Screens - COLO2 Cell 3 - ER | Not Started | 46 |
| 212 | CHI05-PH2-FIT-BL-D5,3,3,5,3,5 | CHI05-02-03-ER-1250 | Install Ceiling - COLO2 Cell 3 - ER | Not Started | 46 |
| 213 | CHI05-PH2-FIT-BL-D5,3,3,5,3,5 | CHI05-02-03-ER-1260 | Below Ceiling MEP Rough In - COLO2 Cell 3 - ER | Not Started | 40 |
| 214 | CHI05-PH2-FIT-BL-D5,3,3,5,3,5 | CHI05-02-03-ER-1270 | Installation of ADP & ATS - COLO2 Cell 3 - ER | Not Started | 94 |
| 215 | CHI05-PH2-FIT-BL-D5,3,3,5,3,5 | CHI05-02-03-ER-1280 | Installation of UPS Equipment - COLO2 Cell 3 - ER | Not Started | 45 |
| 216 | CHI05-PH2-FIT-BL-D5,3,3,5,3,5 | CHI05-02-03-ER-1290 | Connet to Cable tray and conduit equipment - COLO2 Cell 3 - ER | Not Started | 119 |
| 217 | CHI05-PH2-FIT-BL-D5,3,3,5,3,5 | CHI05-02-03-ER-1300 | Cable Pulling at Elec. Equipment - COLO2 Cell 3 - ER | Not Started | 98 |
| 218 | CHI05-PH2-FIT-BL-D5,3,3,5,3,5 | CHI05-02-03-ER-1310 | Door Frame Installation - COLO2 Cell 3 - ER | Not Started | 62 |
| 219 | CHI05-PH2-FIT-BL-D5,3,3,5,3,5 | CHI05-02-03-ER-1320 | Finishes and Signage - COLO2 Cell 3 - ER | Not Started | 108 |
| 220 | CHI05-PH2-FIT-BL-D5,3,3,5,3,5 | CHI05-02-03-ER-1275 | Installation of MSB - COLO2 Cell 3 - ER | Not Started | 89 |
| 221 | CHI05-PH2-FIT-BL-D5,3,3,5,3,1 | CHI05-02-03-DH-1210 | Termination at PDU & Busway - COLO2 Cell 3 - DH | Not Started | 42 |
| 222 | CHI05-PH2-FIT-BL-D5,3,3,5,3,1 | CHI05-02-03-DH-1220 | Overhead MEP and Hangers (Above Ceiling) - COLO2 Cell 3 - DH | Not Started | 74 |
| 223 | CHI05-PH2-FIT-BL-D5,3,3,5,3,1 | CHI05-02-03-DH-1230 | HAC install and Rise - COLO2 Cell 3 - DH | Not Started | 78 |
| 224 | CHI05-PH2-FIT-BL-D5,3,3,5,3,1 | CHI05-02-03-DH-1240 | Cable Pulling at PDU & Busway- COLO2 Cell 3 - DH | Not Started | 63 |
| 225 | CHI05-PH2-FIT-BL-D5,3,3,5,3,1 | CHI05-02-03-DH-1250 | Security Screen Installation - COLO2 Cell 3 - DH | Not Started | 58 |
| 226 | CHI05-PH2-FIT-BL-D5,3,3,5,3,1 | CHI05-02-03-DH-1260 | Ceiling Grid and Tile - COLO2 Cell 3 - DH | Not Started | 58 |
| 227 | CHI05-PH2-FIT-BL-D5,3,3,5,3,1 | CHI05-02-03-DH-1270 | Install PDU's - COLO2 Cell 3 - DH | Not Started | 58 |
| 228 | CHI05-PH2-FIT-BL-D5,3,3,5,3,1 | CHI05-02-03-DH-1280 | Overhead MEP Installation (Below Ceiling) - COLO2 Cell 3 - DH | Not Started | 58 |
| 229 | CHI05-PH2-FIT-BL-D5,3,3,5,3,1 | CHI05-02-03-DH-1290 | Install Low Voltage Wiring and Fiber Optic - COLO2 Cell 3 - DH | Not Started | 78 |
| 230 | CHI05-PH2-FIT-BL-D5,3,3,5,3,1 | CHI05-02-03-DH-1300 | HAC Placing - COLO2 Cell 3 - DH | Not Started | 78 |
| 231 | CHI05-PH2-FIT-BL-D5,3,3,5,3,1 | CHI05-02-03-DH-1310 | Finishes and Signage - COLO2 Cell 3 - DH | Not Started | 103 |
| 232 | CHI05-PH2-FIT-BL-D5,3,3,5,3,4,1 | CHI05-02-03-L1-1380 | Interior - L1 UPS - COLO2 Cell 3 | Not Started | 87 |
| 233 | CHI05-PH2-FIT-BL-D5,3,3,5,3,4,1 | CHI05-02-03-L1-1390 | Interior - L1 MSB - COLO2 Cell 3 | Not Started | 93 |
| 234 | CHI05-PH2-FIT-BL-D5,3,3,5,3,4,1 | CHI05-02-03-L1-1400 | Interior - L1 PDUs - COLO2 Cell 3 | Not Started | 87 |
| 235 | CHI05-PH2-FIT-BL-D5,3,3,5,3,4,1 | CHI05-02-03-L1-1410 | Interior - L1 AHUs - COLO2 Cell 3 | Not Started | 95 |
| 236 | CHI05-PH2-FIT-BL-D5,3,3,5,3,4,1 | CHI05-02-03-L1-1420 | Interior - L1 ATSs - COLO2 Cell 3 | Not Started | 101 |
| 237 | CHI05-PH2-FIT-BL-D5,3,3,5,3,4,1 | CHI05-02-03-L1-1430 | Interior - L1 Busway - COLO2 Cell 3 | Not Started | 91 |
| 238 | CHI05-PH2-FIT-BL-D5,3,3,5,3,4,1 | CHI05-02-03-L1-1490 | Interior - L1 ADP - COLO2 Cell 3 | Not Started | 97 |
| 239 | CHI05-PH2-FIT-BL-D5,3,3,5,3,4,2 | CHI05-02-03-L2-1500 | Interior - L2 UPS - COLO2 Cell 3 | Not Started | 52 |
| 240 | CHI05-PH2-FIT-BL-D5,3,3,5,3,4,2 | CHI05-02-03-L2-1510 | Interior - L2 MSB - COLO2 Cell 3 | Not Started | 52 |
| 241 | CHI05-PH2-FIT-BL-D5,3,3,5,3,4,2 | CHI05-02-03-L2-1520 | Interior - L2 PDUs - COLO2 Cell 3 | Not Started | 52 |
| 242 | CHI05-PH2-FIT-BL-D5,3,3,5,3,4,2 | CHI05-02-03-L2-1530 | Interior - L2 AHUs - COLO2 Cell 3 | Not Started | 52 |
| 243 | CHI05-PH2-FIT-BL-D5,3,3,5,3,4,2 | CHI05-02-03-L2-1540 | Interior - L2 ATSs - COLO2 Cell 3 | Not Started | 52 |
| 244 | CHI05-PH2-FIT-BL-D5,3,3,5,3,4,2 | CHI05-02-03-L2-1550 | Interior - L2 Busway - COLO2 Cell 3 | Not Started | 52 |
| 245 | CHI05-PH2-FIT-BL-D5,3,3,5,3,4,2 | CHI05-02-03-L2-1610 | Interior - L2 ADP - COLO2 Cell 3 | Not Started | 52 |
| 246 | CHI05-PH2-FIT-BL-D5,3,3,5,3,4,3 | CHI05-02-03-L3-1620 | Interior - L3 UPS - COLO2 Cell 3 | Not Started | 37 |
| 247 | CHI05-PH2-FIT-BL-D5,3,3,5,3,4,3 | CHI05-02-03-L3-1630 | Interior - L3 MSB - COLO2 Cell 3 | Not Started | 37 |
| 248 | CHI05-PH2-FIT-BL-D5,3,3,5,3,4,3 | CHI05-02-03-L3-1640 | Interior - L3 PDUs - COLO2 Cell 3 | Not Started | 37 |
| 249 | CHI05-PH2-FIT-BL-D5,3,3,5,3,4,3 | CHI05-02-03-L3-1650 | Interior - L3 AHUs - COLO2 Cell 3 | Not Started | 37 |
| 250 | CHI05-PH2-FIT-BL-D5,3,3,5,3,4,3 | CHI05-02-03-L3-1660 | Interior - L3 ATSs - COLO2 Cell 3 | Not Started | 37 |
| 251 | CHI05-PH2-FIT-BL-D5,3,3,5,3,4,3 | CHI05-02-03-L3-1670 | Interior - L3 Busway - COLO2 Cell 3 | Not Started | 37 |
| 252 | CHI05-PH2-FIT-BL-D5,3,3,5,3,4,3 | CHI05-02-03-L3-1730 | Interior - L3 ADP - COLO2 Cell 3 | Not Started | 37 |
| 253 | CHI05-PH2-FIT-BL-D5,3,3,5,2,2 | CHI05-02-04-MG-1330 | Install Dampers and actuators at Louvers - Upper level (RED) - COLO2 Cell 4 - MG | Not Started | 0 |
| 254 | CHI05-PH2-FIT-BL-D5,3,3,5,2,2 | CHI05-02-04-MG-1340 | Install Dampers and actuators at Louvers - Lower level (OA) - COLO2 Cell 4 - MG | Not Started | 0 |
| 255 | CHI05-PH2-FIT-BL-D5,3,3,5,2,2 | CHI05-02-04-MG-1350 | Overhead MEP Installation - COLO2 Cell 4 - MG | Not Started | 63 |
| 256 | CHI05-PH2-FIT-BL-D5,3,3,5,2,2 | CHI05-02-04-MG-1360 | Deliver AHU into Mech. Gallery - COLO2 Cell 4 - MG | Not Started | 63 |
| 257 | CHI05-PH2-FIT-BL-D5,3,3,5,2,2 | CHI05-02-04-MG-1370 | Install Walls and Primer Paint - COLO2 Cell 4 - MG | Not Started | 63 |
| 258 | CHI05-PH2-FIT-BL-D5,3,3,5,2,2 | CHI05-02-04-MG-1380 | Placing the AHU - COLO2 Cell 4 - MG | Not Started | 94 |
| 259 | CHI05-PH2-FIT-BL-D5,3,3,5,2,2 | CHI05-02-04-MG-1390 | Layout Ceiling and install Pencile Rod - COLO2 Cell 4 - MG | Not Started | 98 |
| 260 | CHI05-PH2-FIT-BL-D5,3,3,5,2,2 | CHI05-02-04-MG-1400 | Piping and Electrical Termination to AHUs - COLO2 Cell 4 - MG | Not Started | 94 |
| 261 | CHI05-PH2-FIT-BL-D5,3,3,5,2,2 | CHI05-02-04-MG-1410 | Pipe Testing - COLO2 Cell 4 - MG | Not Started | 94 |
| 262 | CHI05-PH2-FIT-BL-D5,3,3,5,2,2 | CHI05-02-04-MG-1420 | Install ceiling and Light Fittings - COLO2 Cell 4 - MG | Not Started | 94 |
| 263 | CHI05-PH2-FIT-BL-D5,3,3,5,2,2 | CHI05-02-04-MG-1430 | Trim out MEP - COLO2 Cell 4 - MG | Not Started | 94 |
| 264 | CHI05-PH2-FIT-BL-D5,3,3,5,2,2 | CHI05-02-04-MG-1375 | Post Wall Overhead MEP - COLO2 Cell 4 - MG | Not Started | 94 |
| 265 | CHI05-PH2-FIT-BL-D5,3,3,5,2,5 | CHI05-02-04-ER-1330 | Install Walls and Primer Paint - COLO2 Cell 4 - ER | Not Started | 46 |
| 266 | CHI05-PH2-FIT-BL-D5,3,3,5,2,5 | CHI05-02-04-ER-1340 | Sprinklers and Overhead MEP (Above Ceiling) - COLO2 Cell 4 - ER | Not Started | 46 |
| 267 | CHI05-PH2-FIT-BL-D5,3,3,5,2,5 | CHI05-02-04-ER-1350 | Install Upper Screens - COLO2 Cell 4 - ER | Not Started | 46 |
| 268 | CHI05-PH2-FIT-BL-D5,3,3,5,2,5 | CHI05-02-04-ER-1360 | Install Ceiling - COLO2 Cell 4 - ER | Not Started | 46 |
| 269 | CHI05-PH2-FIT-BL-D5,3,3,5,2,5 | CHI05-02-04-ER-1370 | Below Ceiling MEP Rough In - COLO2 Cell 4 - ER | Not Started | 40 |
| 270 | CHI05-PH2-FIT-BL-D5,3,3,5,2,5 | CHI05-02-04-ER-1380 | Installation of ADP & ATS - COLO2 Cell 4 - ER | Not Started | 89 |
| 271 | CHI05-PH2-FIT-BL-D5,3,3,5,2,5 | CHI05-02-04-ER-1390 | Installation of UPS Equipment - COLO2 Cell 4 - ER | Not Started | 40 |
| 272 | CHI05-PH2-FIT-BL-D5,3,3,5,2,5 | CHI05-02-04-ER-1400 | Connet to Cable tray and conduit equipment - COLO2 Cell 4 - ER | Not Started | 124 |
| 273 | CHI05-PH2-FIT-BL-D5,3,3,5,2,5 | CHI05-02-04-ER-1410 | Cable Pulling at Elec. Equipment - COLO2 Cell 4 - ER | Not Started | 98 |
| 274 | CHI05-PH2-FIT-BL-D5,3,3,5,2,5 | CHI05-02-04-ER-1420 | Door Frame Installation - COLO2 Cell 4 - ER | Not Started | 52 |
| 275 | CHI05-PH2-FIT-BL-D5,3,3,5,2,5 | CHI05-02-04-ER-1430 | Finishes and Signage - COLO2 Cell 4 - ER | Not Started | 98 |
| 276 | CHI05-PH2-FIT-BL-D5,3,3,5,2,5 | CHI05-02-04-ER-1385 | Installation of MSB - COLO2 Cell 4 - ER | Not Started | 84 |
| 277 | CHI05-PH2-FIT-BL-D5,3,3,5,2,1 | CHI05-02-04-DH-1320 | Termination at PDU & Busway - COLO2 Cell 4 - DH | Not Started | 42 |
| 278 | CHI05-PH2-FIT-BL-D5,3,3,5,2,1 | CHI05-02-04-DH-1330 | Overhead MEP and Hangers (Above Ceiling) - COLO2 Cell 4 - DH | Not Started | 77 |
| 279 | CHI05-PH2-FIT-BL-D5,3,3,5,2,1 | CHI05-02-04-DH-1340 | HAC install and Rise - COLO2 Cell 4 - DH | Not Started | 78 |
| 280 | CHI05-PH2-FIT-BL-D5,3,3,5,2,1 | CHI05-02-04-DH-1350 | Cable Pulling at PDU & Busway- COLO2 Cell 4 - DH | Not Started | 68 |

| entry | activity_code | activity_id | activity_name | activity_status | total_float |
| --- | --- | --- | --- | --- | --- |
| 281 | CHI05-PH2-FIT-BL-D5,3,3,5,2,1 | CHI05-02-04-DH-1360 | Security Screen Installation - COLO2 Cell 4 - DH | Not Started | 63 |
| 282 | CHI05-PH2-FIT-BL-D5,3,3,5,2,1 | CHI05-02-04-DH-1370 | Ceiling Grid and Tile - COLO2 Cell 4 - DH | Not Started | 63 |
| 283 | CHI05-PH2-FIT-BL-D5,3,3,5,2,1 | CHI05-02-04-DH-1380 | Install PDU's - COLO2 Cell 4 - DH | Not Started | 63 |
| 284 | CHI05-PH2-FIT-BL-D5,3,3,5,2,1 | CHI05-02-04-DH-1390 | Overhead MEP Installation (Below Ceiling) - COLO2 Cell 4 - DH | Not Started | 63 |
| 285 | CHI05-PH2-FIT-BL-D5,3,3,5,2,1 | CHI05-02-04-DH-1400 | Install Low Voltage Wiring and Fiber Optic - COLO2 Cell 4 - DH | Not Started | 78 |
| 286 | CHI05-PH2-FIT-BL-D5,3,3,5,2,1 | CHI05-02-04-DH-1410 | HAC Placing - COLO2 Cell 4 - DH | Not Started | 78 |
| 287 | CHI05-PH2-FIT-BL-D5,3,3,5,2,1 | CHI05-02-04-DH-1420 | Finishes and Signage - COLO2 Cell 4 - DH | Not Started | 88 |
| 288 | CHI05-PH2-FIT-BL-D5,3,3,5,2,4,1 | CHI05-02-04-L1-1500 | Interior - L1 UPS - COLO2 Cell 4 | Not Started | 71 |
| 289 | CHI05-PH2-FIT-BL-D5,3,3,5,2,4,1 | CHI05-02-04-L1-1510 | Interior - L1 MSB - COLO2 Cell 4 | Not Started | 75 |
| 290 | CHI05-PH2-FIT-BL-D5,3,3,5,2,4,1 | CHI05-02-04-L1-1520 | Interior - L1 PDUs - COLO2 Cell 4 | Not Started | 77 |
| 291 | CHI05-PH2-FIT-BL-D5,3,3,5,2,4,1 | CHI05-02-04-L1-1530 | Interior - L1 AHUs - COLO2 Cell 4 | Not Started | 85 |
| 292 | CHI05-PH2-FIT-BL-D5,3,3,5,2,4,1 | CHI05-02-04-L1-1540 | Interior - L1 ATSs - COLO2 Cell 4 | Not Started | 83 |
| 293 | CHI05-PH2-FIT-BL-D5,3,3,5,2,4,1 | CHI05-02-04-L1-1550 | Interior - L1 Busway - COLO2 Cell 4 | Not Started | 81 |
| 294 | CHI05-PH2-FIT-BL-D5,3,3,5,2,4,1 | CHI05-02-04-L1-1610 | Interior - L1 ADP - COLO2 Cell 4 | Not Started | 79 |
| 295 | CHI05-PH2-FIT-BL-D5,3,3,5,2,4,2 | CHI05-02-04-L2-1620 | Interior - L2 UPS - COLO2 Cell 4 | Not Started | 50 |
| 296 | CHI05-PH2-FIT-BL-D5,3,3,5,2,4,2 | CHI05-02-04-L2-1630 | Interior - L2 MSB - COLO2 Cell 4 | Not Started | 50 |
| 297 | CHI05-PH2-FIT-BL-D5,3,3,5,2,4,2 | CHI05-02-04-L2-1640 | Interior - L2 PDUs - COLO2 Cell 4 | Not Started | 42 |
| 298 | CHI05-PH2-FIT-BL-D5,3,3,5,2,4,2 | CHI05-02-04-L2-1650 | Interior - L2 AHUs - COLO2 Cell 4 | Not Started | 42 |
| 299 | CHI05-PH2-FIT-BL-D5,3,3,5,2,4,2 | CHI05-02-04-L2-1660 | Interior - L2 ATSs - COLO2 Cell 4 | Not Started | 50 |
| 300 | CHI05-PH2-FIT-BL-D5,3,3,5,2,4,2 | CHI05-02-04-L2-1670 | Interior - L2 Busway - COLO2 Cell 4 | Not Started | 42 |
| 301 | CHI05-PH2-FIT-BL-D5,3,3,5,2,4,2 | CHI05-02-04-L2-1730 | Interior - L2 ADP - COLO2 Cell 4 | Not Started | 50 |
| 302 | CHI05-PH2-FIT-BL-D5,3,3,5,2,4,3 | CHI05-02-04-L3-1740 | Interior - L3 UPS - COLO2 Cell 4 | Not Started | 35 |
| 303 | CHI05-PH2-FIT-BL-D5,3,3,5,2,4,3 | CHI05-02-04-L3-1750 | Interior - L3 MSB - COLO2 Cell 4 | Not Started | 35 |
| 304 | CHI05-PH2-FIT-BL-D5,3,3,5,2,4,3 | CHI05-02-04-L3-1760 | Interior - L3 PDUs - COLO2 Cell 4 | Not Started | 40 |
| 305 | CHI05-PH2-FIT-BL-D5,3,3,5,2,4,3 | CHI05-02-04-L3-1770 | Interior - L3 AHUs - COLO2 Cell 4 | Not Started | 35 |
| 306 | CHI05-PH2-FIT-BL-D5,3,3,5,2,4,3 | CHI05-02-04-L3-1780 | Interior - L3 ATSs - COLO2 Cell 4 | Not Started | 35 |
| 307 | CHI05-PH2-FIT-BL-D5,3,3,5,2,4,3 | CHI05-02-04-L3-1790 | Interior - L3 Busway - COLO2 Cell 4 | Not Started | 35 |
| 308 | CHI05-PH2-FIT-BL-D5,3,3,5,2,4,3 | CHI05-02-04-L3-1850 | Interior - L3 ADP - COLO2 Cell 4 | Not Started | 35 |
| 309 | CHI05-PH2-FIT-BL-D5,3,3,4,1 | CHI05-YARD-2000 | Set the Generator - Colo 2 - North | Not Started | 65 |
| 310 | CHI05-PH2-FIT-BL-D5,3,3,4,1 | CHI05-YARD-2040 | Install MEP raceway conduit and piping - Colo 2 - North | Not Started | 116 |
| 311 | CHI05-PH2-FIT-BL-D5,3,3,4,1 | CHI05-YARD-2140 | Wire pulling and termination for MSB - Colo 2 - North | Not Started | 98 |
| 312 | CHI05-PH2-FIT-BL-D5,3,3,4,1 | CHI05-YARD-2360 | Install screen wall - Colo 2 - North | Not Started | 140 |
| 313 | CHI05-PH2-FIT-BL-D5,3,3,4,1 | CHI05-YARD-2030 | Install Generator - Colo 2 - North | Not Started | 82 |
| 314 | CHI05-PH2-FIT-BL-D5,3,3,4,1 | CHI05-YARD-2210 | Installation of Mech. Piping and testing - Colo 2 - North | Not Started | 140 |
| 315 | CHI05-PH2-FIT-BL-D5,3,3,4,1 | CHI05-YARD-2560 | Set the MV Gear - Colo 2 - North | Not Started | 63 |
| 316 | CHI05-PH2-FIT-BL-D5,3,3,4,1 | CHI05-YARD-2570 | Install MV Gear - Colo 2 - North | Not Started | 90 |
| 317 | CHI05-PH2-FIT-BL-D5,3,3,4,2 | CHI05-YARD-2120 | Set the Generator - Colo 2 - South | Not Started | 65 |
| 318 | CHI05-PH2-FIT-BL-D5,3,3,4,2 | CHI05-YARD-2300 | Install MEP raceway conduit and piping - Colo 2 - South | Not Started | 131 |
| 319 | CHI05-PH2-FIT-BL-D5,3,3,4,2 | CHI05-YARD-2350 | Wire pulling and termination for MSB - Colo 2 - South | Not Started | 98 |
| 320 | CHI05-PH2-FIT-BL-D5,3,3,4,2 | CHI05-YARD-2450 | Install screen wall - Colo 2 - South | Not Started | 125 |
| 321 | CHI05-PH2-FIT-BL-D5,3,3,4,2 | CHI05-YARD-2130 | Install Generator - Colo 2 - South | Not Started | 82 |
| 322 | CHI05-PH2-FIT-BL-D5,3,3,4,2 | CHI05-YARD-2390 | Installation of Mech. Piping and testing - Colo 2 - South | Not Started | 125 |
| 323 | CHI05-PH2-FIT-BL-D5,3,3,4,2 | CHI05-YARD-2500 | Set the MV Gear - Colo 2 - South | Not Started | 63 |
| 324 | CHI05-PH2-FIT-BL-D5,3,3,4,2 | CHI05-YARD-2510 | Install MV Gear - Colo 2 - South | Not Started | 105 |
| 325 | CHI05-PH2-FIT-BL-D5,3,3,4,4 | CHI05-YARD-2010 | Set the MV Gear - Colo 5 - West | Not Started | 63 |
| 326 | CHI05-PH2-FIT-BL-D5,3,3,4,4 | CHI05-YARD-2050 | Install MEP raceway conduit and piping - Colo 5 - West | Not Started | 68 |
| 327 | CHI05-PH2-FIT-BL-D5,3,3,4,4 | CHI05-YARD-2150 | Wire pulling and termination for MSB - Colo 5 - West | Not Started | 51 |
| 328 | CHI05-PH2-FIT-BL-D5,3,3,4,4 | CHI05-YARD-2250 | Install screen wall - Colo 5 - West | Not Started | 126 |
| 329 | CHI05-PH2-FIT-BL-D5,3,3,4,4 | CHI05-YARD-2020 | Install MV Gear - Colo 5 - West | Not Started | 63 |
| 330 | CHI05-PH2-FIT-BL-D5,3,3,4,4 | CHI05-YARD-2200 | Installation of Mech. Piping and testing - Colo 5 - West | Not Started | 126 |
| 331 | CHI05-PH2-FIT-BL-D5,3,3,4,4 | CHI05-YARD-2620 | Set the Generator - Colo 5 - West | Not Started | 65 |
| 332 | CHI05-PH2-FIT-BL-D5,3,3,4,4 | CHI05-YARD-2630 | Install Generator - Colo 5 - West | Not Started | 51 |
| 333 | CHI05-PH2-FIT-BL-D5,3,3,4,5 | CHI05-YARD-2060 | Set the Generator - Colo 3 - North | Not Started | 65 |
| 334 | CHI05-PH2-FIT-BL-D5,3,3,4,5 | CHI05-YARD-2160 | Install MEP raceway conduit and piping - Colo 3 - North | Not Started | 111 |
| 335 | CHI05-PH2-FIT-BL-D5,3,3,4,5 | CHI05-YARD-2260 | Wire pulling and termination for MSB - Colo 3 - North | Not Started | 94 |
| 336 | CHI05-PH2-FIT-BL-D5,3,3,4,5 | CHI05-YARD-2400 | Install screen wall - Colo 3 - North | Not Started | 136 |
| 337 | CHI05-PH2-FIT-BL-D5,3,3,4,5 | CHI05-YARD-2090 | Install Generator - Colo 3 - North | Not Started | 71 |
| 338 | CHI05-PH2-FIT-BL-D5,3,3,4,5 | CHI05-YARD-2290 | Installation of Mech. Piping and testing - Colo 3 - North | Not Started | 136 |
| 339 | CHI05-PH2-FIT-BL-D5,3,3,4,5 | CHI05-YARD-2580 | Set the MV Gear - Colo 3 - North | Not Started | 63 |
| 340 | CHI05-PH2-FIT-BL-D5,3,3,4,5 | CHI05-YARD-2590 | Install MV Gear - Colo 3 - North | Not Started | 78 |
| 341 | CHI05-PH2-FIT-BL-D5,3,3,4,6 | CHI05-YARD-2100 | Set the MV Gear - Colo 4 - North | Not Started | 63 |
| 342 | CHI05-PH2-FIT-BL-D5,3,3,4,6 | CHI05-YARD-2240 | Install MEP raceway conduit and piping - Colo 4 - North | Not Started | 69 |
| 343 | CHI05-PH2-FIT-BL-D5,3,3,4,6 | CHI05-YARD-2310 | Wire pulling and termination for MSB - Colo 4 - North | Not Started | 47 |
| 344 | CHI05-PH2-FIT-BL-D5,3,3,4,6 | CHI05-YARD-2430 | Install screen wall - Colo 4 - North | Not Started | 126 |
| 345 | CHI05-PH2-FIT-BL-D5,3,3,4,6 | CHI05-YARD-2110 | Install MV Gear - Colo 4 - North | Not Started | 64 |
| 346 | CHI05-PH2-FIT-BL-D5,3,3,4,6 | CHI05-YARD-2330 | Installation of Mech. Piping and testing - Colo 4 - North | Not Started | 126 |
| 347 | CHI05-PH2-FIT-BL-D5,3,3,4,6 | CHI05-YARD-2600 | Set the Generator - Colo 4 - North | Not Started | 65 |
| 348 | CHI05-PH2-FIT-BL-D5,3,3,4,6 | CHI05-YARD-2610 | Install Generator - Colo 4 - North | Not Started | 47 |
| 349 | CHI05-PH2-FIT-BL-D5,3,3,4,7 | CHI05-YARD-2170 | Set the MV Gear - Colo 3 - South | Not Started | 63 |
| 350 | CHI05-PH2-FIT-BL-D5,3,3,4,7 | CHI05-YARD-2340 | Install MEP raceway conduit and piping - Colo 3 - South | Not Started | 126 |

| entry | activity_code | activity_id | activity_name | activity_status | total_float |
| --- | --- | --- | --- | --- | --- |
| 351 | CHI05-PH2-FIT-BL-D5,3,3,4,7 | CHI05-YARD-2380 | Wire pulling and termination for MSB - Colo 3 - South | Not Started | 94 |
| 352 | CHI05-PH2-FIT-BL-D5,3,3,4,7 | CHI05-YARD-2460 | Install screen wall - Colo 3 - South | Not Started | 136 |
| 353 | CHI05-PH2-FIT-BL-D5,3,3,4,7 | CHI05-YARD-2190 | Install MV Gear - Colo 3 - South | Not Started | 93 |
| 354 | CHI05-PH2-FIT-BL-D5,3,3,4,7 | CHI05-YARD-2410 | Installation of Mech. Piping and testing - Colo 3 - South | Not Started | 136 |
| 355 | CHI05-PH2-FIT-BL-D5,3,3,4,7 | CHI05-YARD-2520 | Set the Generator - Colo 3 - South | Not Started | 65 |
| 356 | CHI05-PH2-FIT-BL-D5,3,3,4,7 | CHI05-YARD-2530 | Install Generator - Colo 3 - South | Not Started | 71 |
| 357 | CHI05-PH2-FIT-BL-D5,3,3,4,8 | CHI05-YARD-2220 | Set the MV Gear - Colo 4 - South | Not Started | 63 |
| 358 | CHI05-PH2-FIT-BL-D5,3,3,4,8 | CHI05-YARD-2370 | Install MEP raceway conduit and piping - Colo 4 - South | Not Started | 84 |
| 359 | CHI05-PH2-FIT-BL-D5,3,3,4,8 | CHI05-YARD-2420 | Wire pulling and termination for MSB - Colo 4 - South | Not Started | 47 |
| 360 | CHI05-PH2-FIT-BL-D5,3,3,4,8 | CHI05-YARD-2470 | Install screen wall - Colo 4 - South | Not Started | 126 |
| 361 | CHI05-PH2-FIT-BL-D5,3,3,4,8 | CHI05-YARD-2230 | Install MV Gear - Colo 4 - South | Not Started | 79 |
| 362 | CHI05-PH2-FIT-BL-D5,3,3,4,8 | CHI05-YARD-2440 | Installation of Mech. Piping and testing - Colo 4 - South | Not Started | 126 |
| 363 | CHI05-PH2-FIT-BL-D5,3,3,4,8 | CHI05-YARD-2540 | Set the Generator - Colo 4 - South | Not Started | 65 |
| 364 | CHI05-PH2-FIT-BL-D5,3,3,4,8 | CHI05-YARD-2550 | Install Generator - Colo 4 - South | Not Started | 47 |
| 365 | CHI05-PH2-FIT-BL-D5,3,3,4,9 | CHI05-YARD-2070 | Set the MV Gear - Colo 5 - East | Not Started | 65 |
| 366 | CHI05-PH2-FIT-BL-D5,3,3,4,9 | CHI05-YARD-2180 | Install MEP raceway conduit and piping - Colo 5 - East | Not Started | 105 |
| 367 | CHI05-PH2-FIT-BL-D5,3,3,4,9 | CHI05-YARD-2270 | Wire pulling and termination for MSB - Colo 5 - East | Not Started | 51 |
| 368 | CHI05-PH2-FIT-BL-D5,3,3,4,9 | CHI05-YARD-2320 | Install screen wall - Colo 5 - East | Not Started | 126 |
| 369 | CHI05-PH2-FIT-BL-D5,3,3,4,9 | CHI05-YARD-2080 | Install MV Gear - Colo 5 - East | Not Started | 94 |
| 370 | CHI05-PH2-FIT-BL-D5,3,3,4,9 | CHI05-YARD-2280 | Installation of Mech. Piping and testing - Colo 5 - Eest | Not Started | 126 |
| 371 | CHI05-PH2-FIT-BL-D5,3,3,4,9 | CHI05-YARD-2480 | Set the Generator - Colo 5 - East | Not Started | 67 |
| 372 | CHI05-PH2-FIT-BL-D5,3,3,4,9 | CHI05-YARD-2490 | Install Generator - Colo 5 - East | Not Started | 51 |
| 373 | CHI05-PH2-FIT-BL-D5,3,3,1,6,2 | CHI05-03-01-MG-1110 | Install Dampers and actuators at Louvers - Upper level (RED) - COLO3 Cell 1 - MG | Not Started | 0 |
| 374 | CHI05-PH2-FIT-BL-D5,3,3,1,6,2 | CHI05-03-01-MG-1120 | Install Dampers and actuators at Louvers - Lower level (OA) - COLO3 Cell 1 - MG | Not Started | 17 |
| 375 | CHI05-PH2-FIT-BL-D5,3,3,1,6,2 | CHI05-03-01-MG-1130 | Overhead MEP Installation - COLO3 Cell 1 - MG | Not Started | 17 |
| 376 | CHI05-PH2-FIT-BL-D5,3,3,1,6,2 | CHI05-03-01-MG-1140 | Deliver AHU into Mech. Gallery - COLO3 Cell 1 - MG | Not Started | 17 |
| 377 | CHI05-PH2-FIT-BL-D5,3,3,1,6,2 | CHI05-03-01-MG-1150 | Install Walls and Primer Paint - COLO3 Cell 1 - MG | Not Started | 17 |
| 378 | CHI05-PH2-FIT-BL-D5,3,3,1,6,2 | CHI05-03-01-MG-1160 | Placing the AHU - COLO3 Cell 1 - MG | Not Started | 72 |
| 379 | CHI05-PH2-FIT-BL-D5,3,3,1,6,2 | CHI05-03-01-MG-1170 | Layout Ceiling and install Pencile Rod - COLO3 Cell 1 - MG | Not Started | 76 |
| 380 | CHI05-PH2-FIT-BL-D5,3,3,1,6,2 | CHI05-03-01-MG-1180 | Piping and Electrical Termination to AHUs - COLO3 Cell 1 - MG | Not Started | 72 |
| 381 | CHI05-PH2-FIT-BL-D5,3,3,1,6,2 | CHI05-03-01-MG-1190 | Pipe Testing - COLO3 Cell 1 - MG | Not Started | 78 |
| 382 | CHI05-PH2-FIT-BL-D5,3,3,1,6,2 | CHI05-03-01-MG-1200 | Install ceiling and Light Fittings - COLO3 Cell 1 - MG | Not Started | 78 |
| 383 | CHI05-PH2-FIT-BL-D5,3,3,1,6,2 | CHI05-03-01-MG-1210 | Trim out MEP - COLO3 Cell 1 - MG | Not Started | 87 |
| 384 | CHI05-PH2-FIT-BL-D5,3,3,1,6,2 | CHI05-03-01-MG-1155 | Post Wall Overhead MEP - COLO3 Cell 1 - MG | Not Started | 72 |
| 385 | CHI05-PH2-FIT-BL-D5,3,3,1,6,5 | CHI05-03-01-ER-1110 | Install Walls and Primer Paint - COLO3 Cell 1 - ER | Not Started | 0 |
| 386 | CHI05-PH2-FIT-BL-D5,3,3,1,6,5 | CHI05-03-01-ER-1120 | Sprinklers and Overhead MEP (Above Ceiling) - COLO3 Cell 1 - ER | Not Started | 29 |
| 387 | CHI05-PH2-FIT-BL-D5,3,3,1,6,5 | CHI05-03-01-ER-1130 | Install Upper Screens - COLO3 Cell 1 - ER | Not Started | 29 |
| 388 | CHI05-PH2-FIT-BL-D5,3,3,1,6,5 | CHI05-03-01-ER-1140 | Install Ceiling - COLO3 Cell 1 - ER | Not Started | 29 |
| 389 | CHI05-PH2-FIT-BL-D5,3,3,1,6,5 | CHI05-03-01-ER-1150 | Below Ceiling MEP Rough In - COLO3 Cell 1 - ER | Not Started | 27 |
| 390 | CHI05-PH2-FIT-BL-D5,3,3,1,6,5 | CHI05-03-01-ER-1160 | Installation of ADP & ATS - COLO3 Cell 1 - ER | Not Started | 78 |
| 391 | CHI05-PH2-FIT-BL-D5,3,3,1,6,5 | CHI05-03-01-ER-1170 | Installation of UPS Equipment - COLO3 Cell 1 - ER | Not Started | 40 |
| 392 | CHI05-PH2-FIT-BL-D5,3,3,1,6,5 | CHI05-03-01-ER-1180 | Connet to Cable tray and conduit equipment - COLO3 Cell 1 - ER | Not Started | 82 |
| 393 | CHI05-PH2-FIT-BL-D5,3,3,1,6,5 | CHI05-03-01-ER-1190 | Cable Pulling at Elec. Equipment - COLO3 Cell 1 - ER | Not Started | 82 |
| 394 | CHI05-PH2-FIT-BL-D5,3,3,1,6,5 | CHI05-03-01-ER-1200 | Door Frame Installation - COLO3 Cell 1 - ER | Not Started | 40 |
| 395 | CHI05-PH2-FIT-BL-D5,3,3,1,6,5 | CHI05-03-01-ER-1210 | Finishes and Signage - COLO3 Cell 1 - ER | Not Started | 105 |
| 396 | CHI05-PH2-FIT-BL-D5,3,3,1,6,5 | CHI05-03-01-ER-1155 | Installation of MSB - COLO3 Cell 1 - ER | Not Started | 77 |
| 397 | CHI05-PH2-FIT-BL-D5,3,3,1,6,1 | CHI05-03-01-DH-1100 | Cable Pulling at PDU & Busway - COLO3 Cell 1 - DH | Not Started | 17 |
| 398 | CHI05-PH2-FIT-BL-D5,3,3,1,6,1 | CHI05-03-01-DH-1110 | Overhead MEP and Hangers (Above Ceiling) - COLO3 Cell 1 - DH | Not Started | 37 |
| 399 | CHI05-PH2-FIT-BL-D5,3,3,1,6,1 | CHI05-03-01-DH-1120 | HAC install and Rise - COLO3 Cell 1 - DH | Not Started | 56 |
| 400 | CHI05-PH2-FIT-BL-D5,3,3,1,6,1 | CHI05-03-01-DH-1130 | Termination at PDU & Busway- COLO3 Cell 1 - DH | Not Started | 22 |
| 401 | CHI05-PH2-FIT-BL-D5,3,3,1,6,1 | CHI05-03-01-DH-1140 | Security Screen Installation - COLO3 Cell 1 - DH | Not Started | 17 |
| 402 | CHI05-PH2-FIT-BL-D5,3,3,1,6,1 | CHI05-03-01-DH-1150 | Ceiling Grid and Tile - COLO3 Cell 1 - DH | Not Started | 17 |
| 403 | CHI05-PH2-FIT-BL-D5,3,3,1,6,1 | CHI05-03-01-DH-1160 | Install PDU's - COLO3 Cell 1 - DH | Not Started | 17 |
| 404 | CHI05-PH2-FIT-BL-D5,3,3,1,6,1 | CHI05-03-01-DH-1170 | Overhead MEP Installation (Below Ceiling) - COLO3 Cell 1 - DH | Not Started | 17 |
| 405 | CHI05-PH2-FIT-BL-D5,3,3,1,6,1 | CHI05-03-01-DH-1180 | Install Low Voltage Wiring and Fiber Optic - COLO3 Cell 1 - DH | Not Started | 56 |
| 406 | CHI05-PH2-FIT-BL-D5,3,3,1,6,1 | CHI05-03-01-DH-1190 | HAC Placing - COLO3 Cell 1 - DH | Not Started | 56 |
| 407 | CHI05-PH2-FIT-BL-D5,3,3,1,6,1 | CHI05-03-01-DH-1200 | Finishes and Signage - COLO3 Cell 1 - DH | Not Started | 102 |
| 408 | CHI05-PH2-FIT-BL-D5,3,3,1,6,4,1 | CHI05-03-01-L1-1260 | Interior - L1 UPS - COLO3 Cell 1 | Not Started | 58 |
| 409 | CHI05-PH2-FIT-BL-D5,3,3,1,6,4,1 | CHI05-03-01-L1-1270 | Interior - L1 MSB - COLO3 Cell 1 | Not Started | 70 |
| 410 | CHI05-PH2-FIT-BL-D5,3,3,1,6,4,1 | CHI05-03-01-L1-1280 | Interior - L1 PDUs - COLO3 Cell 1 | Not Started | 74 |
| 411 | CHI05-PH2-FIT-BL-D5,3,3,1,6,4,1 | CHI05-03-01-L1-1290 | Interior - L1 AHUs - COLO3 Cell 1 | Not Started | 87 |
| 412 | CHI05-PH2-FIT-BL-D5,3,3,1,6,4,1 | CHI05-03-01-L1-1300 | Interior - L1 ATSs - COLO3 Cell 1 | Not Started | 83 |
| 413 | CHI05-PH2-FIT-BL-D5,3,3,1,6,4,1 | CHI05-03-01-L1-1310 | Interior - L1 Busway - COLO3 Cell 1 | Not Started | 83 |
| 414 | CHI05-PH2-FIT-BL-D5,3,3,1,6,4,1 | CHI05-03-01-L1-1370 | Interior - L1 ADP - COLO3 Cell 1 | Not Started | 79 |
| 415 | CHI05-PH2-FIT-BL-D5,3,3,1,6,4,2 | CHI05-03-01-L2-1380 | Interior - L2 UPS - COLO3 Cell 1 | Not Started | 50 |
| 416 | CHI05-PH2-FIT-BL-D5,3,3,1,6,4,2 | CHI05-03-01-L2-1390 | Interior - L2 MSB - COLO3 Cell 1 | Not Started | 50 |
| 417 | CHI05-PH2-FIT-BL-D5,3,3,1,6,4,2 | CHI05-03-01-L2-1400 | Interior - L2 PDUs - COLO3 Cell 1 | Not Started | 50 |
| 418 | CHI05-PH2-FIT-BL-D5,3,3,1,6,4,2 | CHI05-03-01-L2-1410 | Interior - L2 AHUs - COLO3 Cell 1 | Not Started | 55 |
| 419 | CHI05-PH2-FIT-BL-D5,3,3,1,6,4,2 | CHI05-03-01-L2-1420 | Interior - L2 ATSs - COLO3 Cell 1 | Not Started | 55 |
| 420 | CHI05-PH2-FIT-BL-D5,3,3,1,6,4,2 | CHI05-03-01-L2-1430 | Interior - L2 Busway - COLO3 Cell 1 | Not Started | 55 |

| entry | activity_code | activity_id | activity_name | activity_status | total_float |
| --- | --- | --- | --- | --- | --- |
| 421 | CHI05-PH2-FIT-BL-D5,3,3,1,6,4,2 | CHI05-03-01-L2-1490 | Interior - L2 ADP - COLO3 Cell 1 | Not Started | 55 |
| 422 | CHI05-PH2-FIT-BL-D5,3,3,1,6,4,3 | CHI05-03-01-L3-1500 | Interior - L3 UPS - COLO3 Cell 1 | Not Started | 34 |
| 423 | CHI05-PH2-FIT-BL-D5,3,3,1,6,4,3 | CHI05-03-01-L3-1510 | Interior - L3 MSB - COLO3 Cell 1 | Not Started | 34 |
| 424 | CHI05-PH2-FIT-BL-D5,3,3,1,6,4,3 | CHI05-03-01-L3-1520 | Interior - L3 PDUs - COLO3 Cell 1 | Not Started | 34 |
| 425 | CHI05-PH2-FIT-BL-D5,3,3,1,6,4,3 | CHI05-03-01-L3-1530 | Interior - L3 AHUs - COLO3 Cell 1 | Not Started | 34 |
| 426 | CHI05-PH2-FIT-BL-D5,3,3,1,6,4,3 | CHI05-03-01-L3-1540 | Interior - L3 ATSs - COLO3 Cell 1 | Not Started | 34 |
| 427 | CHI05-PH2-FIT-BL-D5,3,3,1,6,4,3 | CHI05-03-01-L3-1550 | Interior - L3 Busway - COLO3 Cell 1 | Not Started | 34 |
| 428 | CHI05-PH2-FIT-BL-D5,3,3,1,6,4,3 | CHI05-03-01-L3-1610 | Interior - L3 ADP - COLO3 Cell 1 | Not Started | 34 |
| 429 | CHI05-PH2-FIT-BL-D5,3,3,1,1,2 | CHI05-03-02-MG-1220 | Install Dampers and actuators at Louvers - Upper level (RED) - COLO3 Cell 2 - MG | Not Started | 4 |
| 430 | CHI05-PH2-FIT-BL-D5,3,3,1,1,2 | CHI05-03-02-MG-1230 | Install Dampers and actuators at Louvers - Lower level (OA) - COLO3 Cell 2 - MG | Not Started | 27 |
| 431 | CHI05-PH2-FIT-BL-D5,3,3,1,1,2 | CHI05-03-02-MG-1240 | Overhead MEP Installation - COLO3 Cell 2 - MG | Not Started | 22 |
| 432 | CHI05-PH2-FIT-BL-D5,3,3,1,1,2 | CHI05-03-02-MG-1250 | Deliver AHU into Mech. Gallery - COLO3 Cell 2 - MG | Not Started | 22 |
| 433 | CHI05-PH2-FIT-BL-D5,3,3,1,1,2 | CHI05-03-02-MG-1260 | Install Walls and Primer Paint - COLO3 Cell 2 - MG | Not Started | 22 |
| 434 | CHI05-PH2-FIT-BL-D5,3,3,1,1,2 | CHI05-03-02-MG-1270 | Placing the AHU - COLO3 Cell 2 - MG | Not Started | 72 |
| 435 | CHI05-PH2-FIT-BL-D5,3,3,1,1,2 | CHI05-03-02-MG-1280 | Layout Ceiling and install Pencile Rod - COLO3 Cell 2 - MG | Not Started | 76 |
| 436 | CHI05-PH2-FIT-BL-D5,3,3,1,1,2 | CHI05-03-02-MG-1290 | Piping and Electrical Termination to AHUs - COLO3 Cell 2 - MG | Not Started | 72 |
| 437 | CHI05-PH2-FIT-BL-D5,3,3,1,1,2 | CHI05-03-02-MG-1300 | Pipe Testing - COLO3 Cell 2 - MG | Not Started | 76 |
| 438 | CHI05-PH2-FIT-BL-D5,3,3,1,1,2 | CHI05-03-02-MG-1310 | Install ceiling and Light Fittings - COLO3 Cell 2 - MG | Not Started | 76 |
| 439 | CHI05-PH2-FIT-BL-D5,3,3,1,1,2 | CHI05-03-02-MG-1320 | Trim out MEP - COLO3 Cell 2 - MG | Not Started | 82 |
| 440 | CHI05-PH2-FIT-BL-D5,3,3,1,1,2 | CHI05-03-02-MG-1265 | Post Wall Overhead MEP - COLO3 Cell 2 - MG | Not Started | 72 |
| 441 | CHI05-PH2-FIT-BL-D5,3,3,1,1,5 | CHI05-03-02-ER-1220 | Install Walls and Primer Paint - COLO3 Cell 2 - ER | Not Started | 0 |
| 442 | CHI05-PH2-FIT-BL-D5,3,3,1,1,5 | CHI05-03-02-ER-1230 | Sprinklers and Overhead MEP (Above Ceiling) - COLO3 Cell 2 - ER | Not Started | 29 |
| 443 | CHI05-PH2-FIT-BL-D5,3,3,1,1,5 | CHI05-03-02-ER-1240 | Install Upper Screens - COLO3 Cell 2 - ER | Not Started | 29 |
| 444 | CHI05-PH2-FIT-BL-D5,3,3,1,1,5 | CHI05-03-02-ER-1250 | Install Ceiling - COLO3 Cell 2 - ER | Not Started | 29 |
| 445 | CHI05-PH2-FIT-BL-D5,3,3,1,1,5 | CHI05-03-02-ER-1260 | Below Ceiling MEP Rough In - COLO3 Cell 2 - ER | Not Started | 27 |
| 446 | CHI05-PH2-FIT-BL-D5,3,3,1,1,5 | CHI05-03-02-ER-1270 | Installation of ADP & ATS - COLO3 Cell 2 - ER | Not Started | 78 |
| 447 | CHI05-PH2-FIT-BL-D5,3,3,1,1,5 | CHI05-03-02-ER-1280 | Installation of UPS Equipment - COLO3 Cell 2 - ER | Not Started | 37 |
| 448 | CHI05-PH2-FIT-BL-D5,3,3,1,1,5 | CHI05-03-02-ER-1290 | Connet to Cable tray and conduit equipment - COLO3 Cell 2 - ER | Not Started | 92 |
| 449 | CHI05-PH2-FIT-BL-D5,3,3,1,1,5 | CHI05-03-02-ER-1300 | Cable Pulling at Elec. Equipment - COLO3 Cell 2 - ER | Not Started | 82 |
| 450 | CHI05-PH2-FIT-BL-D5,3,3,1,1,5 | CHI05-03-02-ER-1310 | Door Frame Installation - COLO3 Cell 2 - ER | Not Started | 47 |
| 451 | CHI05-PH2-FIT-BL-D5,3,3,1,1,5 | CHI05-03-02-ER-1320 | Finishes and Signage - COLO3 Cell 2 - ER | Not Started | 102 |
| 452 | CHI05-PH2-FIT-BL-D5,3,3,1,1,5 | CHI05-03-02-ER-1265 | Installation of MSB - COLO3 Cell 2 - ER | Not Started | 72 |
| 453 | CHI05-PH2-FIT-BL-D5,3,3,1,1,1 | CHI05-03-02-DH-1210 | Termination at PDU & Busway - COLO3 Cell 2 - DH | Not Started | 17 |
| 454 | CHI05-PH2-FIT-BL-D5,3,3,1,1,1 | CHI05-03-02-DH-1220 | Overhead MEP and Hangers (Above Ceiling) - COLO3 Cell 2 - DH | Not Started | 40 |
| 455 | CHI05-PH2-FIT-BL-D5,3,3,1,1,1 | CHI05-03-02-DH-1230 | HAC install and Rise - COLO3 Cell 2 - DH | Not Started | 56 |
| 456 | CHI05-PH2-FIT-BL-D5,3,3,1,1,1 | CHI05-03-02-DH-1240 | Cable Pulling at PDU & Busway- COLO3 Cell 2 - DH | Not Started | 27 |
| 457 | CHI05-PH2-FIT-BL-D5,3,3,1,1,1 | CHI05-03-02-DH-1250 | Security Screen Installation - COLO3 Cell 2 - DH | Not Started | 22 |
| 458 | CHI05-PH2-FIT-BL-D5,3,3,1,1,1 | CHI05-03-02-DH-1260 | Ceiling Grid and Tile - COLO3 Cell 2 - DH | Not Started | 22 |
| 459 | CHI05-PH2-FIT-BL-D5,3,3,1,1,1 | CHI05-03-02-DH-1270 | Install PDU's - COLO3 Cell 2 - DH | Not Started | 22 |
| 460 | CHI05-PH2-FIT-BL-D5,3,3,1,1,1 | CHI05-03-02-DH-1280 | Overhead MEP Installation (Below Ceiling) - COLO3 Cell 2 - DH | Not Started | 22 |
| 461 | CHI05-PH2-FIT-BL-D5,3,3,1,1,1 | CHI05-03-02-DH-1290 | Install Low Voltage Wiring and Fiber Optic - COLO3 Cell 2 - DH | Not Started | 56 |
| 462 | CHI05-PH2-FIT-BL-D5,3,3,1,1,1 | CHI05-03-02-DH-1300 | HAC Placing - COLO3 Cell 2 - DH | Not Started | 56 |
| 463 | CHI05-PH2-FIT-BL-D5,3,3,1,1,1 | CHI05-03-02-DH-1310 | Finishes and Signage - COLO3 Cell 2 - DH | Not Started | 97 |
| 464 | CHI05-PH2-FIT-BL-D5,3,3,1,1,4,1 | CHI05-03-02-L1-1380 | Interior - L1 UPS - COLO3 Cell 2 | Not Started | 58 |
| 465 | CHI05-PH2-FIT-BL-D5,3,3,1,1,4,1 | CHI05-03-02-L1-1390 | Interior - L1 MSB - COLO3 Cell 2 | Not Started | 69 |
| 466 | CHI05-PH2-FIT-BL-D5,3,3,1,1,4,1 | CHI05-03-02-L1-1400 | Interior - L1 PDUs - COLO3 Cell 2 | Not Started | 73 |
| 467 | CHI05-PH2-FIT-BL-D5,3,3,1,1,4,1 | CHI05-03-02-L1-1410 | Interior - L1 AHUs - COLO3 Cell 2 | Not Started | 86 |
| 468 | CHI05-PH2-FIT-BL-D5,3,3,1,1,4,1 | CHI05-03-02-L1-1420 | Interior - L1 ATSs - COLO3 Cell 2 | Not Started | 82 |
| 469 | CHI05-PH2-FIT-BL-D5,3,3,1,1,4,1 | CHI05-03-02-L1-1430 | Interior - L1 Busway - COLO3 Cell 2 | Not Started | 82 |
| 470 | CHI05-PH2-FIT-BL-D5,3,3,1,1,4,1 | CHI05-03-02-L1-1490 | Interior - L1 ADP - COLO3 Cell 2 | Not Started | 78 |
| 471 | CHI05-PH2-FIT-BL-D5,3,3,1,1,4,2 | CHI05-03-02-L2-1500 | Interior - L2 UPS - COLO3 Cell 2 | Not Started | 50 |
| 472 | CHI05-PH2-FIT-BL-D5,3,3,1,1,4,2 | CHI05-03-02-L2-1510 | Interior - L2 MSB - COLO3 Cell 2 | Not Started | 50 |
| 473 | CHI05-PH2-FIT-BL-D5,3,3,1,1,4,2 | CHI05-03-02-L2-1520 | Interior - L2 PDUs - COLO3 Cell 2 | Not Started | 50 |
| 474 | CHI05-PH2-FIT-BL-D5,3,3,1,1,4,2 | CHI05-03-02-L2-1530 | Interior - L2 AHUs - COLO3 Cell 2 | Not Started | 55 |
| 475 | CHI05-PH2-FIT-BL-D5,3,3,1,1,4,2 | CHI05-03-02-L2-1540 | Interior - L2 ATSs - COLO3 Cell 2 | Not Started | 55 |
| 476 | CHI05-PH2-FIT-BL-D5,3,3,1,1,4,2 | CHI05-03-02-L2-1550 | Interior - L2 Busway - COLO3 Cell 2 | Not Started | 55 |
| 477 | CHI05-PH2-FIT-BL-D5,3,3,1,1,4,2 | CHI05-03-02-L2-1610 | Interior - L2 ADP - COLO3 Cell 2 | Not Started | 55 |
| 478 | CHI05-PH2-FIT-BL-D5,3,3,1,1,4,3 | CHI05-03-02-L3-1620 | Interior - L3 UPS - COLO3 Cell 2 | Not Started | 34 |
| 479 | CHI05-PH2-FIT-BL-D5,3,3,1,1,4,3 | CHI05-03-02-L3-1630 | Interior - L3 MSB - COLO3 Cell 2 | Not Started | 34 |
| 480 | CHI05-PH2-FIT-BL-D5,3,3,1,1,4,3 | CHI05-03-02-L3-1640 | Interior - L3 PDUs - COLO3 Cell 2 | Not Started | 34 |
| 481 | CHI05-PH2-FIT-BL-D5,3,3,1,1,4,3 | CHI05-03-02-L3-1650 | Interior - L3 AHUs - COLO3 Cell 2 | Not Started | 34 |
| 482 | CHI05-PH2-FIT-BL-D5,3,3,1,1,4,3 | CHI05-03-02-L3-1660 | Interior - L3 ATSs - COLO3 Cell 2 | Not Started | 34 |
| 483 | CHI05-PH2-FIT-BL-D5,3,3,1,1,4,3 | CHI05-03-02-L3-1670 | Interior - L3 Busway - COLO3 Cell 2 | Not Started | 34 |
| 484 | CHI05-PH2-FIT-BL-D5,3,3,1,1,4,3 | CHI05-03-02-L3-1730 | Interior - L3 ADP - COLO3 Cell 2 | Not Started | 34 |
| 485 | CHI05-PH2-FIT-BL-D5,3,3,1,3,2 | CHI05-03-03-MG-1330 | Install Dampers and actuators at Louvers - Upper level (RED) - COLO3 Cell 3 - MG | Not Started | 4 |
| 486 | CHI05-PH2-FIT-BL-D5,3,3,1,3,2 | CHI05-03-03-MG-1340 | Install Dampers and actuators at Louvers - Lower level (OA) - COLO3 Cell 3 - MG | Not Started | 37 |
| 487 | CHI05-PH2-FIT-BL-D5,3,3,1,3,2 | CHI05-03-03-MG-1350 | Overhead MEP Installation - COLO3 Cell 3 - MG | Not Started | 27 |
| 488 | CHI05-PH2-FIT-BL-D5,3,3,1,3,2 | CHI05-03-03-MG-1360 | Deliver AHU into Mech. Gallery - COLO3 Cell 3 - MG | Not Started | 27 |
| 489 | CHI05-PH2-FIT-BL-D5,3,3,1,3,2 | CHI05-03-03-MG-1370 | Install Walls and Primer Paint - COLO3 Cell 3 - MG | Not Started | 27 |
| 490 | CHI05-PH2-FIT-BL-D5,3,3,1,3,2 | CHI05-03-03-MG-1380 | Placing the AHU - COLO3 Cell 3 - MG | Not Started | 72 |

| entry | activity_code | activity_id | activity_name | activity_status | total_float |
| --- | --- | --- | --- | --- | --- |
| 491 | CHI05-PH2-FIT-BL-D5,3,3,1,3,2 | CHI05-03-03-MG-1390 | Layout Ceiling and install Pencile Rod - COLO3 Cell 3 - MG | Not Started | 76 |
| 492 | CHI05-PH2-FIT-BL-D5,3,3,1,3,2 | CHI05-03-03-MG-1400 | Piping and Electrical Termination to AHUs - COLO3 Cell 3 - MG | Not Started | 72 |
| 493 | CHI05-PH2-FIT-BL-D5,3,3,1,3,2 | CHI05-03-03-MG-1410 | Pipe Testing - COLO3 Cell 3 - MG | Not Started | 74 |
| 494 | CHI05-PH2-FIT-BL-D5,3,3,1,3,2 | CHI05-03-03-MG-1420 | Install ceiling and Light Fittings - COLO3 Cell 3 - MG | Not Started | 74 |
| 495 | CHI05-PH2-FIT-BL-D5,3,3,1,3,2 | CHI05-03-03-MG-1430 | Trim out MEP - COLO3 Cell 3 - MG | Not Started | 77 |
| 496 | CHI05-PH2-FIT-BL-D5,3,3,1,3,2 | CHI05-03-03-MG-1375 | Post Wall Overhead MEP - COLO3 Cell 3 - MG | Not Started | 72 |
| 497 | CHI05-PH2-FIT-BL-D5,3,3,1,3,5 | CHI05-03-03-ER-1330 | Install Walls and Primer Paint - COLO3 Cell 3 - ER | Not Started | 0 |
| 498 | CHI05-PH2-FIT-BL-D5,3,3,1,3,5 | CHI05-03-03-ER-1340 | Sprinklers and Overhead MEP (Above Ceiling) - COLO3 Cell 3 - ER | Not Started | 29 |
| 499 | CHI05-PH2-FIT-BL-D5,3,3,1,3,5 | CHI05-03-03-ER-1350 | Install Upper Screens - COLO3 Cell 3 - ER | Not Started | 29 |
| 500 | CHI05-PH2-FIT-BL-D5,3,3,1,3,5 | CHI05-03-03-ER-1360 | Install Ceiling - COLO3 Cell 3 - ER | Not Started | 29 |
| 501 | CHI05-PH2-FIT-BL-D5,3,3,1,3,5 | CHI05-03-03-ER-1370 | Below Ceiling MEP Rough In - COLO3 Cell 3 - ER | Not Started | 27 |
| 502 | CHI05-PH2-FIT-BL-D5,3,3,1,3,5 | CHI05-03-03-ER-1380 | Installation of ADP & ATS - COLO3 Cell 3 - ER | Not Started | 77 |
| 503 | CHI05-PH2-FIT-BL-D5,3,3,1,3,5 | CHI05-03-03-ER-1390 | Installation of UPS Equipment - COLO3 Cell 3 - ER | Not Started | 32 |
| 504 | CHI05-PH2-FIT-BL-D5,3,3,1,3,5 | CHI05-03-03-ER-1400 | Connet to Cable tray and conduit equipment - COLO3 Cell 3 - ER | Not Started | 101 |
| 505 | CHI05-PH2-FIT-BL-D5,3,3,1,3,5 | CHI05-03-03-ER-1410 | Cable Pulling at Elec. Equipment - COLO3 Cell 3 - ER | Not Started | 82 |
| 506 | CHI05-PH2-FIT-BL-D5,3,3,1,3,5 | CHI05-03-03-ER-1420 | Door Frame Installation - COLO3 Cell 3 - ER | Not Started | 37 |
| 507 | CHI05-PH2-FIT-BL-D5,3,3,1,3,5 | CHI05-03-03-ER-1430 | Finishes and Signage - COLO3 Cell 3 - ER | Not Started | 92 |
| 508 | CHI05-PH2-FIT-BL-D5,3,3,1,3,5 | CHI05-03-03-ER-1385 | Installation of MSB - COLO3 Cell 3 - ER | Not Started | 67 |
| 509 | CHI05-PH2-FIT-BL-D5,3,3,1,3,1 | CHI05-03-03-DH-1320 | Termination at PDU & Busway - COLO3 Cell 3 - DH | Not Started | 17 |
| 510 | CHI05-PH2-FIT-BL-D5,3,3,1,3,1 | CHI05-03-03-DH-1330 | Overhead MEP and Hangers (Above Ceiling) - COLO3 Cell 3 - DH | Not Started | 43 |
| 511 | CHI05-PH2-FIT-BL-D5,3,3,1,3,1 | CHI05-03-03-DH-1340 | HAC install and Rise - COLO3 Cell 3 - DH | Not Started | 56 |
| 512 | CHI05-PH2-FIT-BL-D5,3,3,1,3,1 | CHI05-03-03-DH-1350 | Cable Pulling at PDU & Busway- COLO3 Cell 3 - DH | Not Started | 32 |
| 513 | CHI05-PH2-FIT-BL-D5,3,3,1,3,1 | CHI05-03-03-DH-1360 | Security Screen Installation - COLO3 Cell 3 - DH | Not Started | 27 |
| 514 | CHI05-PH2-FIT-BL-D5,3,3,1,3,1 | CHI05-03-03-DH-1370 | Ceiling Grid and Tile - COLO3 Cell 3 - DH | Not Started | 27 |
| 515 | CHI05-PH2-FIT-BL-D5,3,3,1,3,1 | CHI05-03-03-DH-1380 | Install PDU's - COLO3 Cell 3 - DH | Not Started | 27 |
| 516 | CHI05-PH2-FIT-BL-D5,3,3,1,3,1 | CHI05-03-03-DH-1390 | Overhead MEP Installation (Below Ceiling) - COLO3 Cell 3 - DH | Not Started | 27 |
| 517 | CHI05-PH2-FIT-BL-D5,3,3,1,3,1 | CHI05-03-03-DH-1400 | Install Low Voltage Wiring and Fiber Optic - COLO3 Cell 3 - DH | Not Started | 56 |
| 518 | CHI05-PH2-FIT-BL-D5,3,3,1,3,1 | CHI05-03-03-DH-1410 | HAC Placing - COLO3 Cell 3 - DH | Not Started | 56 |
| 519 | CHI05-PH2-FIT-BL-D5,3,3,1,3,1 | CHI05-03-03-DH-1420 | Finishes and Signage - COLO3 Cell 3 - DH | Not Started | 87 |
| 520 | CHI05-PH2-FIT-BL-D5,3,3,1,3,4,1 | CHI05-03-03-L1-1500 | Interior - L1 UPS - COLO3 Cell 3 | Not Started | 58 |
| 521 | CHI05-PH2-FIT-BL-D5,3,3,1,3,4,1 | CHI05-03-03-L1-1510 | Interior - L1 MSB - COLO3 Cell 3 | Not Started | 87 |
| 522 | CHI05-PH2-FIT-BL-D5,3,3,1,3,4,1 | CHI05-03-03-L1-1520 | Interior - L1 PDUs - COLO3 Cell 3 | Not Started | 78 |
| 523 | CHI05-PH2-FIT-BL-D5,3,3,1,3,4,1 | CHI05-03-03-L1-1530 | Interior - L1 AHUs - COLO3 Cell 3 | Not Started | 78 |
| 524 | CHI05-PH2-FIT-BL-D5,3,3,1,3,4,1 | CHI05-03-03-L1-1540 | Interior - L1 ATSs - COLO3 Cell 3 | Not Started | 87 |
| 525 | CHI05-PH2-FIT-BL-D5,3,3,1,3,4,1 | CHI05-03-03-L1-1550 | Interior - L1 Busway - COLO3 Cell 3 | Not Started | 78 |
| 526 | CHI05-PH2-FIT-BL-D5,3,3,1,3,4,1 | CHI05-03-03-L1-1610 | Interior - L1 ADP - COLO3 Cell 3 | Not Started | 87 |
| 527 | CHI05-PH2-FIT-BL-D5,3,3,1,3,4,2 | CHI05-03-03-L2-1620 | Interior - L2 UPS - COLO3 Cell 3 | Not Started | 52 |
| 528 | CHI05-PH2-FIT-BL-D5,3,3,1,3,4,2 | CHI05-03-03-L2-1630 | Interior - L2 MSB - COLO3 Cell 3 | Not Started | 52 |
| 529 | CHI05-PH2-FIT-BL-D5,3,3,1,3,4,2 | CHI05-03-03-L2-1640 | Interior - L2 PDUs - COLO3 Cell 3 | Not Started | 41 |
| 530 | CHI05-PH2-FIT-BL-D5,3,3,1,3,4,2 | CHI05-03-03-L2-1650 | Interior - L2 AHUs - COLO3 Cell 3 | Not Started | 41 |
| 531 | CHI05-PH2-FIT-BL-D5,3,3,1,3,4,2 | CHI05-03-03-L2-1660 | Interior - L2 ATSs - COLO3 Cell 3 | Not Started | 52 |
| 532 | CHI05-PH2-FIT-BL-D5,3,3,1,3,4,2 | CHI05-03-03-L2-1670 | Interior - L2 Busway - COLO3 Cell 3 | Not Started | 41 |
| 533 | CHI05-PH2-FIT-BL-D5,3,3,1,3,4,2 | CHI05-03-03-L2-1730 | Interior - L2 ADP - COLO3 Cell 3 | Not Started | 52 |
| 534 | CHI05-PH2-FIT-BL-D5,3,3,1,3,4,3 | CHI05-03-03-L3-1740 | Interior - L3 UPS - COLO3 Cell 3 | Not Started | 36 |
| 535 | CHI05-PH2-FIT-BL-D5,3,3,1,3,4,3 | CHI05-03-03-L3-1750 | Interior - L3 MSB - COLO3 Cell 3 | Not Started | 36 |
| 536 | CHI05-PH2-FIT-BL-D5,3,3,1,3,4,3 | CHI05-03-03-L3-1760 | Interior - L3 PDUs - COLO3 Cell 3 | Not Started | 36 |
| 537 | CHI05-PH2-FIT-BL-D5,3,3,1,3,4,3 | CHI05-03-03-L3-1770 | Interior - L3 AHUs - COLO3 Cell 3 | Not Started | 36 |
| 538 | CHI05-PH2-FIT-BL-D5,3,3,1,3,4,3 | CHI05-03-03-L3-1780 | Interior - L3 ATSs - COLO3 Cell 3 | Not Started | 36 |
| 539 | CHI05-PH2-FIT-BL-D5,3,3,1,3,4,3 | CHI05-03-03-L3-1790 | Interior - L3 Busway - COLO3 Cell 3 | Not Started | 36 |
| 540 | CHI05-PH2-FIT-BL-D5,3,3,1,3,4,3 | CHI05-03-03-L3-1850 | Interior - L3 ADP - COLO3 Cell 3 | Not Started | 36 |
| 541 | CHI05-PH2-FIT-BL-D5,3,3,1,2,2 | CHI05-03-04-MG-1440 | Install Dampers and actuators at Louvers - Upper level (RED) - COLO3 Cell 4 - MG | Not Started | 4 |
| 542 | CHI05-PH2-FIT-BL-D5,3,3,1,2,2 | CHI05-03-04-MG-1450 | Install Dampers and actuators at Louvers - Lower level (OA) - COLO3 Cell 4 - MG | Not Started | 47 |
| 543 | CHI05-PH2-FIT-BL-D5,3,3,1,2,2 | CHI05-03-04-MG-1460 | Overhead MEP Installation - COLO3 Cell 4 - MG | Not Started | 32 |
| 544 | CHI05-PH2-FIT-BL-D5,3,3,1,2,2 | CHI05-03-04-MG-1470 | Deliver AHU into Mech. Gallery - COLO3 Cell 4 - MG | Not Started | 32 |
| 545 | CHI05-PH2-FIT-BL-D5,3,3,1,2,2 | CHI05-03-04-MG-1480 | Install Walls and Primer Paint - COLO3 Cell 4 - MG | Not Started | 32 |
| 546 | CHI05-PH2-FIT-BL-D5,3,3,1,2,2 | CHI05-03-04-MG-1490 | Placing the AHU - COLO3 Cell 4 - MG | Not Started | 72 |
| 547 | CHI05-PH2-FIT-BL-D5,3,3,1,2,2 | CHI05-03-04-MG-1500 | Layout Ceiling and install Pencile Rod - COLO3 Cell 4 - MG | Not Started | 76 |
| 548 | CHI05-PH2-FIT-BL-D5,3,3,1,2,2 | CHI05-03-04-MG-1510 | Piping and Electrical Termination to AHUs - COLO3 Cell 4 - MG | Not Started | 72 |
| 549 | CHI05-PH2-FIT-BL-D5,3,3,1,2,2 | CHI05-03-04-MG-1520 | Pipe Testing - COLO3 Cell 4 - MG | Not Started | 72 |
| 550 | CHI05-PH2-FIT-BL-D5,3,3,1,2,2 | CHI05-03-04-MG-1530 | Install ceiling and Light Fittings - COLO3 Cell 4 - MG | Not Started | 72 |
| 551 | CHI05-PH2-FIT-BL-D5,3,3,1,2,2 | CHI05-03-04-MG-1540 | Trim out MEP - COLO3 Cell 4 - MG | Not Started | 72 |
| 552 | CHI05-PH2-FIT-BL-D5,3,3,1,2,2 | CHI05-03-04-MG-1485 | Post Wall Overhead MEP - COLO3 Cell 4 - MG | Not Started | 72 |
| 553 | CHI05-PH2-FIT-BL-D5,3,3,1,2,5 | CHI05-03-04-ER-1440 | Install Walls and Primer Paint - COLO3 Cell 4 - ER | Not Started | 0 |
| 554 | CHI05-PH2-FIT-BL-D5,3,3,1,2,5 | CHI05-03-04-ER-1450 | Sprinklers and Overhead MEP (Above Ceiling) - COLO3 Cell 4 - ER | Not Started | 29 |
| 555 | CHI05-PH2-FIT-BL-D5,3,3,1,2,5 | CHI05-03-04-ER-1460 | Install Upper Screens - COLO3 Cell 4 - ER | Not Started | 29 |
| 556 | CHI05-PH2-FIT-BL-D5,3,3,1,2,5 | CHI05-03-04-ER-1470 | Install Ceiling - COLO3 Cell 4 - ER | Not Started | 29 |
| 557 | CHI05-PH2-FIT-BL-D5,3,3,1,2,5 | CHI05-03-04-ER-1480 | Below Ceiling MEP Rough In - COLO3 Cell 4 - ER | Not Started | 27 |
| 558 | CHI05-PH2-FIT-BL-D5,3,3,1,2,5 | CHI05-03-04-ER-1490 | Installation of ADP & ATS - COLO3 Cell 4 - ER | Not Started | 69 |
| 559 | CHI05-PH2-FIT-BL-D5,3,3,1,2,5 | CHI05-03-04-ER-1500 | Installation of UPS Equipment - COLO3 Cell 4 - ER | Not Started | 27 |
| 560 | CHI05-PH2-FIT-BL-D5,3,3,1,2,5 | CHI05-03-04-ER-1510 | Connet to Cable tray and conduit equipment - COLO3 Cell 4 - ER | Not Started | 106 |

| entry | activity_code | activity_id | activity_name | activity_status | total_float |
| --- | --- | --- | --- | --- | --- |
| 561 | CHI05-PH2-FIT-BL-D5,3,3,1,2,5 | CHI05-03-04-ER-1520 | Cable Pulling at Elec. Equipment - COLO3 Cell 4 - ER | Not Started | 82 |
| 562 | CHI05-PH2-FIT-BL-D5,3,3,1,2,5 | CHI05-03-04-ER-1530 | Door Frame Installation - COLO3 Cell 4 - ER | Not Started | 27 |
| 563 | CHI05-PH2-FIT-BL-D5,3,3,1,2,5 | CHI05-03-04-ER-1540 | Finishes and Signage - COLO3 Cell 4 - ER | Not Started | 82 |
| 564 | CHI05-PH2-FIT-BL-D5,3,3,1,2,5 | CHI05-03-04-ER-1495 | Installation of MSB - COLO3 Cell 4 - ER | Not Started | 59 |
| 565 | CHI05-PH2-FIT-BL-D5,3,3,1,2,1 | CHI05-03-04-DH-1430 | Termination at PDU & Busway - COLO3 Cell 4 - DH | Not Started | 17 |
| 566 | CHI05-PH2-FIT-BL-D5,3,3,1,2,1 | CHI05-03-04-DH-1440 | Overhead MEP and Hangers (Above Ceiling) - COLO3 Cell 4 - DH | Not Started | 46 |
| 567 | CHI05-PH2-FIT-BL-D5,3,3,1,2,1 | CHI05-03-04-DH-1450 | HAC install and Rise - COLO3 Cell 4 - DH | Not Started | 56 |
| 568 | CHI05-PH2-FIT-BL-D5,3,3,1,2,1 | CHI05-03-04-DH-1460 | Cable Pulling at PDU & Busway- COLO3 Cell 4 - DH | Not Started | 37 |
| 569 | CHI05-PH2-FIT-BL-D5,3,3,1,2,1 | CHI05-03-04-DH-1470 | Security Screen Installation - COLO3 Cell 4 - DH | Not Started | 32 |
| 570 | CHI05-PH2-FIT-BL-D5,3,3,1,2,1 | CHI05-03-04-DH-1480 | Ceiling Grid and Tile - COLO3 Cell 4 - DH | Not Started | 32 |
| 571 | CHI05-PH2-FIT-BL-D5,3,3,1,2,1 | CHI05-03-04-DH-1490 | Install PDU's - COLO3 Cell 4 - DH | Not Started | 32 |
| 572 | CHI05-PH2-FIT-BL-D5,3,3,1,2,1 | CHI05-03-04-DH-1500 | Overhead MEP Installation (Below Ceiling) - COLO3 Cell 4 - DH | Not Started | 32 |
| 573 | CHI05-PH2-FIT-BL-D5,3,3,1,2,1 | CHI05-03-04-DH-1510 | Install Low Voltage Wiring and Fiber Optic - COLO3 Cell 4 - DH | Not Started | 56 |
| 574 | CHI05-PH2-FIT-BL-D5,3,3,1,2,1 | CHI05-03-04-DH-1520 | HAC Placing - COLO3 Cell 4 - DH | Not Started | 56 |
| 575 | CHI05-PH2-FIT-BL-D5,3,3,1,2,1 | CHI05-03-04-DH-1530 | Finishes and Signage - COLO3 Cell 4 - DH | Not Started | 77 |
| 576 | CHI05-PH2-FIT-BL-D5,3,3,1,2,4,1 | CHI05-03-04-L1-1620 | Interior - L1 UPS - COLO3 Cell 4 | Not Started | 52 |
| 577 | CHI05-PH2-FIT-BL-D5,3,3,1,2,4,1 | CHI05-03-04-L1-1630 | Interior - L1 MSB - COLO3 Cell 4 | Not Started | 55 |
| 578 | CHI05-PH2-FIT-BL-D5,3,3,1,2,4,1 | CHI05-03-04-L1-1640 | Interior - L1 PDUs - COLO3 Cell 4 | Not Started | 46 |
| 579 | CHI05-PH2-FIT-BL-D5,3,3,1,2,4,1 | CHI05-03-04-L1-1650 | Interior - L1 AHUs - COLO3 Cell 4 | Not Started | 63 |
| 580 | CHI05-PH2-FIT-BL-D5,3,3,1,2,4,1 | CHI05-03-04-L1-1660 | Interior - L1 ATSs - COLO3 Cell 4 | Not Started | 68 |
| 581 | CHI05-PH2-FIT-BL-D5,3,3,1,2,4,1 | CHI05-03-04-L1-1670 | Interior - L1 Busway - COLO3 Cell 4 | Not Started | 59 |
| 582 | CHI05-PH2-FIT-BL-D5,3,3,1,2,4,1 | CHI05-03-04-L1-1730 | Interior - L1 ADP - COLO3 Cell 4 | Not Started | 64 |
| 583 | CHI05-PH2-FIT-BL-D5,3,3,1,2,4,2 | CHI05-03-04-L2-1740 | Interior - L2 UPS - COLO3 Cell 4 | Not Started | 43 |
| 584 | CHI05-PH2-FIT-BL-D5,3,3,1,2,4,2 | CHI05-03-04-L2-1750 | Interior - L2 MSB - COLO3 Cell 4 | Not Started | 43 |
| 585 | CHI05-PH2-FIT-BL-D5,3,3,1,2,4,2 | CHI05-03-04-L2-1760 | Interior - L2 PDUs - COLO3 Cell 4 | Not Started | 17 |
| 586 | CHI05-PH2-FIT-BL-D5,3,3,1,2,4,2 | CHI05-03-04-L2-1770 | Interior - L2 AHUs - COLO3 Cell 4 | Not Started | 26 |
| 587 | CHI05-PH2-FIT-BL-D5,3,3,1,2,4,2 | CHI05-03-04-L2-1780 | Interior - L2 ATSs - COLO3 Cell 4 | Not Started | 48 |
| 588 | CHI05-PH2-FIT-BL-D5,3,3,1,2,4,2 | CHI05-03-04-L2-1790 | Interior - L2 Busway - COLO3 Cell 4 | Not Started | 26 |
| 589 | CHI05-PH2-FIT-BL-D5,3,3,1,2,4,2 | CHI05-03-04-L2-1850 | Interior - L2 ADP - COLO3 Cell 4 | Not Started | 48 |
| 590 | CHI05-PH2-FIT-BL-D5,3,3,1,2,4,3 | CHI05-03-04-L3-1860 | Interior - L3 UPS - COLO3 Cell 4 | Not Started | 27 |
| 591 | CHI05-PH2-FIT-BL-D5,3,3,1,2,4,3 | CHI05-03-04-L3-1870 | Interior - L3 MSB - COLO3 Cell 4 | Not Started | 27 |
| 592 | CHI05-PH2-FIT-BL-D5,3,3,1,2,4,3 | CHI05-03-04-L3-1880 | Interior - L3 PDUs - COLO3 Cell 4 | Not Started | 17 |
| 593 | CHI05-PH2-FIT-BL-D5,3,3,1,2,4,3 | CHI05-03-04-L3-1890 | Interior - L3 AHUs - COLO3 Cell 4 | Not Started | 17 |
| 594 | CHI05-PH2-FIT-BL-D5,3,3,1,2,4,3 | CHI05-03-04-L3-1900 | Interior - L3 ATSs - COLO3 Cell 4 | Not Started | 17 |
| 595 | CHI05-PH2-FIT-BL-D5,3,3,1,2,4,3 | CHI05-03-04-L3-1910 | Interior - L3 Busway - COLO3 Cell 4 | Not Started | 17 |
| 596 | CHI05-PH2-FIT-BL-D5,3,3,1,2,4,3 | CHI05-03-04-L3-1970 | Interior - L3 ADP - COLO3 Cell 4 | Not Started | 17 |
| 597 | CHI05-PH2-FIT-BL-D5,3,3,1,5,1 | CHI05-03-04-L4-1000 | Cx LEV4 - COLO3 | Not Started | 17 |
| 598 | CHI05-PH2-FIT-BL-D5,3,3,1,5,2 | CHI05-03-04-L5-1000 | Cx LEV5 / IST - COLO3 | Not Started | 17 |
| 599 | CHI05-PH2-FIT-BL-D5,3,3,2,6,2 | CHI05-04-01-MG-1220 | Install Dampers and actuators at Louvers - Upper level (RED) - COLO4 Cell 1 - MG | Not Started | 4 |
| 600 | CHI05-PH2-FIT-BL-D5,3,3,2,6,2 | CHI05-04-01-MG-1230 | Install Dampers and actuators at Louvers - Lower level (OA) - COLO4 Cell 1 - MG | Not Started | 4 |
| 601 | CHI05-PH2-FIT-BL-D5,3,3,2,6,2 | CHI05-04-01-MG-1240 | Overhead MEP Installation - COLO4 Cell 1 - MG | Not Started | 4 |
| 602 | CHI05-PH2-FIT-BL-D5,3,3,2,6,2 | CHI05-04-01-MG-1250 | Deliver AHU into Mech. Gallery - COLO4 Cell 1 - MG | Not Started | 4 |
| 603 | CHI05-PH2-FIT-BL-D5,3,3,2,6,2 | CHI05-04-01-MG-1260 | Install Walls and Primer Paint - COLO4 Cell 1 - MG | Not Started | 4 |
| 604 | CHI05-PH2-FIT-BL-D5,3,3,2,6,2 | CHI05-04-01-MG-1270 | Placing the AHU - COLO4 Cell 1 - MG | Not Started | 58 |
| 605 | CHI05-PH2-FIT-BL-D5,3,3,2,6,2 | CHI05-04-01-MG-1280 | Layout Ceiling and install Pencile Rod - COLO4 Cell 1 - MG | Not Started | 62 |
| 606 | CHI05-PH2-FIT-BL-D5,3,3,2,6,2 | CHI05-04-01-MG-1290 | Piping and Electrical Termination to AHUs - COLO4 Cell 1 - MG | Not Started | 58 |
| 607 | CHI05-PH2-FIT-BL-D5,3,3,2,6,2 | CHI05-04-01-MG-1300 | Pipe Testing - COLO4 Cell 1 - MG | Not Started | 64 |
| 608 | CHI05-PH2-FIT-BL-D5,3,3,2,6,2 | CHI05-04-01-MG-1310 | Install ceiling and Light Fittings - COLO4 Cell 1 - MG | Not Started | 64 |
| 609 | CHI05-PH2-FIT-BL-D5,3,3,2,6,2 | CHI05-04-01-MG-1320 | Trim out MEP - COLO4 Cell 1 - MG | Not Started | 73 |
| 610 | CHI05-PH2-FIT-BL-D5,3,3,2,6,2 | CHI05-04-01-MG-1265 | Post Wall Overhead MEP - COLO4 Cell 1 - MG | Not Started | 58 |
| 611 | CHI05-PH2-FIT-BL-D5,3,3,2,6,5 | CHI05-04-01-ER-1220 | Install Walls and Primer Paint - COLO4 Cell 1 - ER | Not Started | 0 |
| 612 | CHI05-PH2-FIT-BL-D5,3,3,2,6,5 | CHI05-04-01-ER-1230 | Sprinklers and Overhead MEP (Above Ceiling) - COLO4 Cell 1 - ER | Not Started | 2 |
| 613 | CHI05-PH2-FIT-BL-D5,3,3,2,6,5 | CHI05-04-01-ER-1240 | Install Upper Screens - COLO4 Cell 1 - ER | Not Started | 2 |
| 614 | CHI05-PH2-FIT-BL-D5,3,3,2,6,5 | CHI05-04-01-ER-1250 | Install Ceiling - COLO4 Cell 1 - ER | Not Started | 2 |
| 615 | CHI05-PH2-FIT-BL-D5,3,3,2,6,5 | CHI05-04-01-ER-1260 | Below Ceiling MEP Rough In - COLO4 Cell 1 - ER | Not Started | 2 |
| 616 | CHI05-PH2-FIT-BL-D5,3,3,2,6,5 | CHI05-04-01-ER-1270 | Installation of ADP & ATS - COLO4 Cell 1 - ER | Not Started | 36 |
| 617 | CHI05-PH2-FIT-BL-D5,3,3,2,6,5 | CHI05-04-01-ER-1280 | Installation of UPS Equipment - COLO4 Cell 1 - ER | Not Started | 17 |
| 618 | CHI05-PH2-FIT-BL-D5,3,3,2,6,5 | CHI05-04-01-ER-1290 | Connet to Cable tray and conduit equipment - COLO4 Cell 1 - ER | Not Started | 57 |
| 619 | CHI05-PH2-FIT-BL-D5,3,3,2,6,5 | CHI05-04-01-ER-1300 | Cable Pulling at Elec. Equipment - COLO4 Cell 1 - ER | Not Started | 57 |
| 620 | CHI05-PH2-FIT-BL-D5,3,3,2,6,5 | CHI05-04-01-ER-1310 | Door Frame Installation - COLO4 Cell 1 - ER | Not Started | 32 |
| 621 | CHI05-PH2-FIT-BL-D5,3,3,2,6,5 | CHI05-04-01-ER-1320 | Finishes and Signage - COLO4 Cell 1 - ER | Not Started | 85 |
| 622 | CHI05-PH2-FIT-BL-D5,3,3,2,6,5 | CHI05-04-01-ER-1285 | Installation of MSB - COLO4 Cell 1 - ER | Not Started | 36 |
| 623 | CHI05-PH2-FIT-BL-D5,3,3,2,6,1 | CHI05-04-01-DH-1210 | Cable Pulling at PDU & Busway - COLO4 Cell 1 - DH | Not Started | 2 |
| 624 | CHI05-PH2-FIT-BL-D5,3,3,2,6,1 | CHI05-04-01-DH-1220 | Overhead MEP and Hangers (Above Ceiling) - COLO4 Cell 1 - DH | Not Started | 3 |
| 625 | CHI05-PH2-FIT-BL-D5,3,3,2,6,1 | CHI05-04-01-DH-1230 | HAC install and Rise - COLO4 Cell 1 - DH | Not Started | 40 |
| 626 | CHI05-PH2-FIT-BL-D5,3,3,2,6,1 | CHI05-04-01-DH-1240 | Termination at PDU & Busway- COLO4 Cell 1 - DH | Not Started | 7 |
| 627 | CHI05-PH2-FIT-BL-D5,3,3,2,6,1 | CHI05-04-01-DH-1250 | Security Screen Installation - COLO4 Cell 1 - DH | Not Started | 2 |
| 628 | CHI05-PH2-FIT-BL-D5,3,3,2,6,1 | CHI05-04-01-DH-1260 | Ceiling Grid and Tile - COLO4 Cell 1 - DH | Not Started | 2 |
| 629 | CHI05-PH2-FIT-BL-D5,3,3,2,6,1 | CHI05-04-01-DH-1270 | Install PDU's - COLO4 Cell 1 - DH | Not Started | 2 |
| 630 | CHI05-PH2-FIT-BL-D5,3,3,2,6,1 | CHI05-04-01-DH-1280 | Overhead MEP Installation (Below Ceiling) - COLO4 Cell 1 - DH | Not Started | 2 |

| entry | activity_code | activity_id | activity_name | activity_status | total_float |
| --- | --- | --- | --- | --- | --- |
| 631 | CHI05-PH2-FIT-BL-D5,3,3,2,6,1 | CHI05-04-01-DH-1290 | Install Low Voltage Wiring and Fiber Optic - COLO4 Cell 1 - DH | Not Started | 40 |
| 632 | CHI05-PH2-FIT-BL-D5,3,3,2,6,1 | CHI05-04-01-DH-1300 | HAC Placing - COLO4 Cell 1 - DH | Not Started | 40 |
| 633 | CHI05-PH2-FIT-BL-D5,3,3,2,6,1 | CHI05-04-01-DH-1310 | Finishes and Signage - COLO4 Cell 1 - DH | Not Started | 81 |
| 634 | CHI05-PH2-FIT-BL-D5,3,3,2,6,4,1 | CHI05-04-01-L1-1380 | Interior - L1 UPS - COLO4 Cell 1 | Not Started | 46 |
| 635 | CHI05-PH2-FIT-BL-D5,3,3,2,6,4,1 | CHI05-04-01-L1-1390 | Interior - L1 MSB - COLO4 Cell 1 | Not Started | 63 |
| 636 | CHI05-PH2-FIT-BL-D5,3,3,2,6,4,1 | CHI05-04-01-L1-1400 | Interior - L1 PDUs - COLO4 Cell 1 | Not Started | 67 |
| 637 | CHI05-PH2-FIT-BL-D5,3,3,2,6,4,1 | CHI05-04-01-L1-1410 | Interior - L1 AHUs - COLO4 Cell 1 | Not Started | 75 |
| 638 | CHI05-PH2-FIT-BL-D5,3,3,2,6,4,1 | CHI05-04-01-L1-1420 | Interior - L1 ATSs - COLO4 Cell 1 | Not Started | 71 |
| 639 | CHI05-PH2-FIT-BL-D5,3,3,2,6,4,1 | CHI05-04-01-L1-1430 | Interior - L1 Busway - COLO4 Cell 1 | Not Started | 71 |
| 640 | CHI05-PH2-FIT-BL-D5,3,3,2,6,4,1 | CHI05-04-01-L1-1490 | Interior - L1 ADP - COLO4 Cell 1 | Not Started | 67 |
| 641 | CHI05-PH2-FIT-BL-D5,3,3,2,6,4,2 | CHI05-04-01-L2-1500 | Interior - L2 UPS - COLO4 Cell 1 | Not Started | 57 |
| 642 | CHI05-PH2-FIT-BL-D5,3,3,2,6,4,2 | CHI05-04-01-L2-1510 | Interior - L2 MSB - COLO4 Cell 1 | Not Started | 57 |
| 643 | CHI05-PH2-FIT-BL-D5,3,3,2,6,4,2 | CHI05-04-01-L2-1520 | Interior - L2 PDUs - COLO4 Cell 1 | Not Started | 55 |
| 644 | CHI05-PH2-FIT-BL-D5,3,3,2,6,4,2 | CHI05-04-01-L2-1530 | Interior - L2 AHUs - COLO4 Cell 1 | Not Started | 55 |
| 645 | CHI05-PH2-FIT-BL-D5,3,3,2,6,4,2 | CHI05-04-01-L2-1540 | Interior - L2 ATSs - COLO4 Cell 1 | Not Started | 57 |
| 646 | CHI05-PH2-FIT-BL-D5,3,3,2,6,4,2 | CHI05-04-01-L2-1550 | Interior - L2 Busway - COLO4 Cell 1 | Not Started | 55 |
| 647 | CHI05-PH2-FIT-BL-D5,3,3,2,6,4,2 | CHI05-04-01-L2-1610 | Interior - L2 ADP - COLO4 Cell 1 | Not Started | 57 |
| 648 | CHI05-PH2-FIT-BL-D5,3,3,2,6,4,3 | CHI05-04-01-L3-1620 | Interior - L3 UPS - COLO4 Cell 1 | Not Started | 8 |
| 649 | CHI05-PH2-FIT-BL-D5,3,3,2,6,4,3 | CHI05-04-01-L3-1630 | Interior - L3 MSB - COLO4 Cell 1 | Not Started | 8 |
| 650 | CHI05-PH2-FIT-BL-D5,3,3,2,6,4,3 | CHI05-04-01-L3-1640 | Interior - L3 PDUs - COLO4 Cell 1 | Not Started | 8 |
| 651 | CHI05-PH2-FIT-BL-D5,3,3,2,6,4,3 | CHI05-04-01-L3-1650 | Interior - L3 AHUs - COLO4 Cell 1 | Not Started | 8 |
| 652 | CHI05-PH2-FIT-BL-D5,3,3,2,6,4,3 | CHI05-04-01-L3-1660 | Interior - L3 ATSs - COLO4 Cell 1 | Not Started | 8 |
| 653 | CHI05-PH2-FIT-BL-D5,3,3,2,6,4,3 | CHI05-04-01-L3-1670 | Interior - L3 Busway - COLO4 Cell 1 | Not Started | 8 |
| 654 | CHI05-PH2-FIT-BL-D5,3,3,2,6,4,3 | CHI05-04-01-L3-1730 | Interior - L3 ADP - COLO4 Cell 1 | Not Started | 8 |
| 655 | CHI05-PH2-FIT-BL-D5,3,3,2,1,2 | CHI05-04-02-MG-1330 | Install Dampers and actuators at Louvers - Upper level (RED) - COLO4 Cell 2 - MG | Not Started | 13 |
| 656 | CHI05-PH2-FIT-BL-D5,3,3,2,1,2 | CHI05-04-02-MG-1340 | Install Dampers and actuators at Louvers - Lower level (OA) - COLO4 Cell 2 - MG | Not Started | 13 |
| 657 | CHI05-PH2-FIT-BL-D5,3,3,2,1,2 | CHI05-04-02-MG-1350 | Overhead MEP Installation - COLO4 Cell 2 - MG | Not Started | 9 |
| 658 | CHI05-PH2-FIT-BL-D5,3,3,2,1,2 | CHI05-04-02-MG-1360 | Deliver AHU into Mech. Gallery - COLO4 Cell 2 - MG | Not Started | 9 |
| 659 | CHI05-PH2-FIT-BL-D5,3,3,2,1,2 | CHI05-04-02-MG-1370 | Install Walls and Primer Paint - COLO4 Cell 2 - MG | Not Started | 9 |
| 660 | CHI05-PH2-FIT-BL-D5,3,3,2,1,2 | CHI05-04-02-MG-1380 | Placing the AHU - COLO4 Cell 2 - MG | Not Started | 56 |
| 661 | CHI05-PH2-FIT-BL-D5,3,3,2,1,2 | CHI05-04-02-MG-1390 | Layout Ceiling and install Pencile Rod - COLO4 Cell 2 - MG | Not Started | 60 |
| 662 | CHI05-PH2-FIT-BL-D5,3,3,2,1,2 | CHI05-04-02-MG-1400 | Piping and Electrical Termination to AHUs - COLO4 Cell 2 - MG | Not Started | 58 |
| 663 | CHI05-PH2-FIT-BL-D5,3,3,2,1,2 | CHI05-04-02-MG-1410 | Pipe Testing - COLO4 Cell 2 - MG | Not Started | 62 |
| 664 | CHI05-PH2-FIT-BL-D5,3,3,2,1,2 | CHI05-04-02-MG-1420 | Install ceiling and Light Fittings - COLO4 Cell 2 - MG | Not Started | 62 |
| 665 | CHI05-PH2-FIT-BL-D5,3,3,2,1,2 | CHI05-04-02-MG-1430 | Trim out MEP - COLO4 Cell 2 - MG | Not Started | 68 |
| 666 | CHI05-PH2-FIT-BL-D5,3,3,2,1,2 | CHI05-04-02-MG-1375 | Post Wall Overhead MEP - COLO4 Cell 2 - MG | Not Started | 56 |
| 667 | CHI05-PH2-FIT-BL-D5,3,3,2,1,5 | CHI05-04-02-ER-1330 | Install Walls and Primer Paint - COLO4 Cell 2 - ER | Not Started | 0 |
| 668 | CHI05-PH2-FIT-BL-D5,3,3,2,1,5 | CHI05-04-02-ER-1340 | Sprinklers and Overhead MEP (Above Ceiling) - COLO4 Cell 2 - ER | Not Started | 0 |
| 669 | CHI05-PH2-FIT-BL-D5,3,3,2,1,5 | CHI05-04-02-ER-1350 | Install Upper Screens - COLO4 Cell 2 - ER | Not Started | 0 |
| 670 | CHI05-PH2-FIT-BL-D5,3,3,2,1,5 | CHI05-04-02-ER-1360 | Install Ceiling - COLO4 Cell 2 - ER | Not Started | 0 |
| 671 | CHI05-PH2-FIT-BL-D5,3,3,2,1,5 | CHI05-04-02-ER-1370 | Below Ceiling MEP Rough In - COLO4 Cell 2 - ER | Not Started | 0 |
| 672 | CHI05-PH2-FIT-BL-D5,3,3,2,1,5 | CHI05-04-02-ER-1380 | Installation of ADP & ATS - COLO4 Cell 2 - ER | Not Started | 29 |
| 673 | CHI05-PH2-FIT-BL-D5,3,3,2,1,5 | CHI05-04-02-ER-1390 | Installation of UPS Equipment - COLO4 Cell 2 - ER | Not Started | 10 |
| 674 | CHI05-PH2-FIT-BL-D5,3,3,2,1,5 | CHI05-04-02-ER-1400 | Connet to Cable tray and conduit equipment - COLO4 Cell 2 - ER | Not Started | 60 |
| 675 | CHI05-PH2-FIT-BL-D5,3,3,2,1,5 | CHI05-04-02-ER-1410 | Cable Pulling at Elec. Equipment - COLO4 Cell 2 - ER | Not Started | 57 |
| 676 | CHI05-PH2-FIT-BL-D5,3,3,2,1,5 | CHI05-04-02-ER-1420 | Door Frame Installation - COLO4 Cell 2 - ER | Not Started | 48 |
| 677 | CHI05-PH2-FIT-BL-D5,3,3,2,1,5 | CHI05-04-02-ER-1430 | Finishes and Signage - COLO4 Cell 2 - ER | Not Started | 75 |
| 678 | CHI05-PH2-FIT-BL-D5,3,3,2,1,5 | CHI05-04-02-ER-1385 | Installation of MSB - COLO4 Cell 2 - ER | Not Started | 29 |
| 679 | CHI05-PH2-FIT-BL-D5,3,3,2,1,1 | CHI05-04-02-DH-1320 | Termination at PDU & Busway - COLO4 Cell 2 - DH | Not Started | 2 |
| 680 | CHI05-PH2-FIT-BL-D5,3,3,2,1,1 | CHI05-04-02-DH-1330 | Overhead MEP and Hangers (Above Ceiling) - COLO4 Cell 2 - DH | Not Started | 6 |
| 681 | CHI05-PH2-FIT-BL-D5,3,3,2,1,1 | CHI05-04-02-DH-1340 | HAC install and Rise - COLO4 Cell 2 - DH | Not Started | 38 |
| 682 | CHI05-PH2-FIT-BL-D5,3,3,2,1,1 | CHI05-04-02-DH-1350 | Cable Pulling at PDU & Busway- COLO4 Cell 2 - DH | Not Started | 10 |
| 683 | CHI05-PH2-FIT-BL-D5,3,3,2,1,1 | CHI05-04-02-DH-1360 | Security Screen Installation - COLO4 Cell 2 - DH | Not Started | 5 |
| 684 | CHI05-PH2-FIT-BL-D5,3,3,2,1,1 | CHI05-04-02-DH-1370 | Ceiling Grid and Tile - COLO4 Cell 2 - DH | Not Started | 5 |
| 685 | CHI05-PH2-FIT-BL-D5,3,3,2,1,1 | CHI05-04-02-DH-1380 | Install PDU's - COLO4 Cell 2 - DH | Not Started | 5 |
| 686 | CHI05-PH2-FIT-BL-D5,3,3,2,1,1 | CHI05-04-02-DH-1390 | Overhead MEP Installation (Below Ceiling) - COLO4 Cell 2 - DH | Not Started | 5 |
| 687 | CHI05-PH2-FIT-BL-D5,3,3,2,1,1 | CHI05-04-02-DH-1400 | Install Low Voltage Wiring and Fiber Optic - COLO4 Cell 2 - DH | Not Started | 38 |
| 688 | CHI05-PH2-FIT-BL-D5,3,3,2,1,1 | CHI05-04-02-DH-1410 | HAC Placing - COLO4 Cell 2 - DH | Not Started | 35 |
| 689 | CHI05-PH2-FIT-BL-D5,3,3,2,1,1 | CHI05-04-02-DH-1420 | Finishes and Signage - COLO4 Cell 2 - DH | Not Started | 74 |
| 690 | CHI05-PH2-FIT-BL-D5,3,3,2,1,4,1 | CHI05-04-02-L1-1500 | Interior - L1 UPS - COLO4 Cell 2 | Not Started | 35 |
| 691 | CHI05-PH2-FIT-BL-D5,3,3,2,1,4,1 | CHI05-04-02-L1-1510 | Interior - L1 MSB - COLO4 Cell 2 | Not Started | 45 |
| 692 | CHI05-PH2-FIT-BL-D5,3,3,2,1,4,1 | CHI05-04-02-L1-1520 | Interior - L1 PDUs - COLO4 Cell 2 | Not Started | 55 |
| 693 | CHI05-PH2-FIT-BL-D5,3,3,2,1,4,1 | CHI05-04-02-L1-1530 | Interior - L1 AHUs - COLO4 Cell 2 | Not Started | 63 |
| 694 | CHI05-PH2-FIT-BL-D5,3,3,2,1,4,1 | CHI05-04-02-L1-1540 | Interior - L1 ATSs - COLO4 Cell 2 | Not Started | 59 |
| 695 | CHI05-PH2-FIT-BL-D5,3,3,2,1,4,1 | CHI05-04-02-L1-1550 | Interior - L1 Busway - COLO4 Cell 2 | Not Started | 59 |
| 696 | CHI05-PH2-FIT-BL-D5,3,3,2,1,4,1 | CHI05-04-02-L1-1610 | Interior - L1 ADP - COLO4 Cell 2 | Not Started | 45 |
| 697 | CHI05-PH2-FIT-BL-D5,3,3,2,1,4,2 | CHI05-04-02-L2-1620 | Interior - L2 UPS - COLO4 Cell 2 | Not Started | 45 |
| 698 | CHI05-PH2-FIT-BL-D5,3,3,2,1,4,2 | CHI05-04-02-L2-1630 | Interior - L2 MSB - COLO4 Cell 2 | Not Started | 45 |
| 699 | CHI05-PH2-FIT-BL-D5,3,3,2,1,4,2 | CHI05-04-02-L2-1640 | Interior - L2 PDUs - COLO4 Cell 2 | Not Started | 40 |
| 700 | CHI05-PH2-FIT-BL-D5,3,3,2,1,4,2 | CHI05-04-02-L2-1650 | Interior - L2 AHUs - COLO4 Cell 2 | Not Started | 40 |

| entry | activity_code | activity_id | activity_name | activity_status | total_float |
| --- | --- | --- | --- | --- | --- |
| 701 | CHI05-PH2-FIT-BL-D5,3,3,2,1,4,2 | CHI05-04-02-L2-1660 | Interior - L2 ATSs - COLO4 Cell 2 | Not Started | 45 |
| 702 | CHI05-PH2-FIT-BL-D5,3,3,2,1,4,2 | CHI05-04-02-L2-1670 | Interior - L2 Busway - COLO4 Cell 2 | Not Started | 40 |
| 703 | CHI05-PH2-FIT-BL-D5,3,3,2,1,4,2 | CHI05-04-02-L2-1730 | Interior - L2 ADP - COLO4 Cell 2 | Not Started | 45 |
| 704 | CHI05-PH2-FIT-BL-D5,3,3,2,1,4,3 | CHI05-04-02-L3-1740 | Interior - L3 UPS - COLO4 Cell 2 | Not Started | 48 |
| 705 | CHI05-PH2-FIT-BL-D5,3,3,2,1,4,3 | CHI05-04-02-L3-1750 | Interior - L3 MSB - COLO4 Cell 2 | Not Started | 13 |
| 706 | CHI05-PH2-FIT-BL-D5,3,3,2,1,4,3 | CHI05-04-02-L3-1760 | Interior - L3 PDUs - COLO4 Cell 2 | Not Started | 18 |
| 707 | CHI05-PH2-FIT-BL-D5,3,3,2,1,4,3 | CHI05-04-02-L3-1770 | Interior - L3 AHUs - COLO4 Cell 2 | Not Started | 13 |
| 708 | CHI05-PH2-FIT-BL-D5,3,3,2,1,4,3 | CHI05-04-02-L3-1780 | Interior - L3 ATSs - COLO4 Cell 2 | Not Started | 13 |
| 709 | CHI05-PH2-FIT-BL-D5,3,3,2,1,4,3 | CHI05-04-02-L3-1790 | Interior - L3 Busway - COLO4 Cell 2 | Not Started | 13 |
| 710 | CHI05-PH2-FIT-BL-D5,3,3,2,1,4,3 | CHI05-04-02-L3-1850 | Interior - L3 ADP - COLO4 Cell 2 | Not Started | 13 |
| 711 | CHI05-PH2-FIT-BL-D5,3,3,2,3,2 | CHI05-04-03-MG-1440 | Install Dampers and actuators at Louvers - Upper level (RED) - COLO4 Cell 3 - MG | Not Started | 23 |
| 712 | CHI05-PH2-FIT-BL-D5,3,3,2,3,2 | CHI05-04-03-MG-1450 | Install Dampers and actuators at Louvers - Lower level (OA) - COLO4 Cell 3 - MG | Not Started | 23 |
| 713 | CHI05-PH2-FIT-BL-D5,3,3,2,3,2 | CHI05-04-03-MG-1460 | Overhead MEP Installation - COLO4 Cell 3 - MG | Not Started | 14 |
| 714 | CHI05-PH2-FIT-BL-D5,3,3,2,3,2 | CHI05-04-03-MG-1470 | Deliver AHU into Mech. Gallery - COLO4 Cell 3 - MG | Not Started | 14 |
| 715 | CHI05-PH2-FIT-BL-D5,3,3,2,3,2 | CHI05-04-03-MG-1480 | Install Walls and Primer Paint - COLO4 Cell 3 - MG | Not Started | 14 |
| 716 | CHI05-PH2-FIT-BL-D5,3,3,2,3,2 | CHI05-04-03-MG-1490 | Placing the AHU - COLO4 Cell 3 - MG | Not Started | 49 |
| 717 | CHI05-PH2-FIT-BL-D5,3,3,2,3,2 | CHI05-04-03-MG-1500 | Layout Ceiling and install Pencile Rod - COLO4 Cell 3 - MG | Not Started | 53 |
| 718 | CHI05-PH2-FIT-BL-D5,3,3,2,3,2 | CHI05-04-03-MG-1510 | Piping and Electrical Termination to AHUs - COLO4 Cell 3 - MG | Not Started | 58 |
| 719 | CHI05-PH2-FIT-BL-D5,3,3,2,3,2 | CHI05-04-03-MG-1520 | Pipe Testing - COLO4 Cell 3 - MG | Not Started | 60 |
| 720 | CHI05-PH2-FIT-BL-D5,3,3,2,3,2 | CHI05-04-03-MG-1530 | Install ceiling and Light Fittings - COLO4 Cell 3 - MG | Not Started | 60 |
| 721 | CHI05-PH2-FIT-BL-D5,3,3,2,3,2 | CHI05-04-03-MG-1540 | Trim out MEP - COLO4 Cell 3 - MG | Not Started | 63 |
| 722 | CHI05-PH2-FIT-BL-D5,3,3,2,3,2 | CHI05-04-03-MG-1485 | Post Wall Overhead MEP - COLO4 Cell 3 - MG | Not Started | 49 |
| 723 | CHI05-PH2-FIT-BL-D5,3,3,2,3,5 | CHI05-04-03-ER-1440 | Install Walls and Primer Paint - COLO4 Cell 3 - ER | Not Started | 0 |
| 724 | CHI05-PH2-FIT-BL-D5,3,3,2,3,5 | CHI05-04-03-ER-1450 | Sprinklers and Overhead MEP (Above Ceiling) - COLO4 Cell 3 - ER | Not Started | 0 |
| 725 | CHI05-PH2-FIT-BL-D5,3,3,2,3,5 | CHI05-04-03-ER-1460 | Install Upper Screens - COLO4 Cell 3 - ER | Not Started | 0 |
| 726 | CHI05-PH2-FIT-BL-D5,3,3,2,3,5 | CHI05-04-03-ER-1470 | Install Ceiling - COLO4 Cell 3 - ER | Not Started | 0 |
| 727 | CHI05-PH2-FIT-BL-D5,3,3,2,3,5 | CHI05-04-03-ER-1480 | Below Ceiling MEP Rough In - COLO4 Cell 3 - ER | Not Started | 0 |
| 728 | CHI05-PH2-FIT-BL-D5,3,3,2,3,5 | CHI05-04-03-ER-1490 | Installation of ADP & ATS - COLO4 Cell 3 - ER | Not Started | 24 |
| 729 | CHI05-PH2-FIT-BL-D5,3,3,2,3,5 | CHI05-04-03-ER-1500 | Installation of UPS Equipment - COLO4 Cell 3 - ER | Not Started | 5 |
| 730 | CHI05-PH2-FIT-BL-D5,3,3,2,3,5 | CHI05-04-03-ER-1510 | Connet to Cable tray and conduit equipment - COLO4 Cell 3 - ER | Not Started | 65 |
| 731 | CHI05-PH2-FIT-BL-D5,3,3,2,3,5 | CHI05-04-03-ER-1520 | Cable Pulling at Elec. Equipment - COLO4 Cell 3 - ER | Not Started | 57 |
| 732 | CHI05-PH2-FIT-BL-D5,3,3,2,3,5 | CHI05-04-03-ER-1530 | Door Frame Installation - COLO4 Cell 3 - ER | Not Started | 10 |
| 733 | CHI05-PH2-FIT-BL-D5,3,3,2,3,5 | CHI05-04-03-ER-1540 | Finishes and Signage - COLO4 Cell 3 - ER | Not Started | 65 |
| 734 | CHI05-PH2-FIT-BL-D5,3,3,2,3,5 | CHI05-04-03-ER-1495 | Installation of MSB - COLO4 Cell 3 - ER | Not Started | 24 |
| 735 | CHI05-PH2-FIT-BL-D5,3,3,2,3,1 | CHI05-04-03-DH-1430 | Termination at PDU & Busway - COLO4 Cell 3 - DH | Not Started | 2 |
| 736 | CHI05-PH2-FIT-BL-D5,3,3,2,3,1 | CHI05-04-03-DH-1440 | Overhead MEP and Hangers (Above Ceiling) - COLO4 Cell 3 - DH | Not Started | 9 |
| 737 | CHI05-PH2-FIT-BL-D5,3,3,2,3,1 | CHI05-04-03-DH-1450 | HAC install and Rise - COLO4 Cell 3 - DH | Not Started | 37 |
| 738 | CHI05-PH2-FIT-BL-D5,3,3,2,3,1 | CHI05-04-03-DH-1460 | Cable Pulling at PDU & Busway- COLO4 Cell 3 - DH | Not Started | 14 |
| 739 | CHI05-PH2-FIT-BL-D5,3,3,2,3,1 | CHI05-04-03-DH-1470 | Security Screen Installation - COLO4 Cell 3 - DH | Not Started | 10 |
| 740 | CHI05-PH2-FIT-BL-D5,3,3,2,3,1 | CHI05-04-03-DH-1480 | Ceiling Grid and Tile - COLO4 Cell 3 - DH | Not Started | 9 |
| 741 | CHI05-PH2-FIT-BL-D5,3,3,2,3,1 | CHI05-04-03-DH-1490 | Install PDU's - COLO4 Cell 3 - DH | Not Started | 9 |
| 742 | CHI05-PH2-FIT-BL-D5,3,3,2,3,1 | CHI05-04-03-DH-1500 | Overhead MEP Installation (Below Ceiling) - COLO4 Cell 3 - DH | Not Started | 9 |
| 743 | CHI05-PH2-FIT-BL-D5,3,3,2,3,1 | CHI05-04-03-DH-1510 | Install Low Voltage Wiring and Fiber Optic - COLO4 Cell 3 - DH | Not Started | 37 |
| 744 | CHI05-PH2-FIT-BL-D5,3,3,2,3,1 | CHI05-04-03-DH-1520 | HAC Placing - COLO4 Cell 3 - DH | Not Started | 29 |
| 745 | CHI05-PH2-FIT-BL-D5,3,3,2,3,1 | CHI05-04-03-DH-1530 | Finishes and Signage - COLO4 Cell 3 - DH | Not Started | 66 |
| 746 | CHI05-PH2-FIT-BL-D5,3,3,2,3,4,1 | CHI05-04-03-L1-1620 | Interior - L1 UPS - COLO4 Cell 3 | Not Started | 26 |
| 747 | CHI05-PH2-FIT-BL-D5,3,3,2,3,4,1 | CHI05-04-03-L1-1630 | Interior - L1 MSB - COLO4 Cell 3 | Not Started | 33 |
| 748 | CHI05-PH2-FIT-BL-D5,3,3,2,3,4,1 | CHI05-04-03-L1-1640 | Interior - L1 PDUs - COLO4 Cell 3 | Not Started | 33 |
| 749 | CHI05-PH2-FIT-BL-D5,3,3,2,3,4,1 | CHI05-04-03-L1-1650 | Interior - L1 AHUs - COLO4 Cell 3 | Not Started | 33 |
| 750 | CHI05-PH2-FIT-BL-D5,3,3,2,3,4,1 | CHI05-04-03-L1-1660 | Interior - L1 ATSs - COLO4 Cell 3 | Not Started | 33 |
| 751 | CHI05-PH2-FIT-BL-D5,3,3,2,3,4,1 | CHI05-04-03-L1-1670 | Interior - L1 Busway - COLO4 Cell 3 | Not Started | 33 |
| 752 | CHI05-PH2-FIT-BL-D5,3,3,2,3,4,1 | CHI05-04-03-L1-1730 | Interior - L1 ADP - COLO4 Cell 3 | Not Started | 33 |
| 753 | CHI05-PH2-FIT-BL-D5,3,3,2,3,4,2 | CHI05-04-03-L2-1740 | Interior - L2 UPS - COLO4 Cell 3 | Not Started | 33 |
| 754 | CHI05-PH2-FIT-BL-D5,3,3,2,3,4,2 | CHI05-04-03-L2-1750 | Interior - L2 MSB - COLO4 Cell 3 | Not Started | 33 |
| 755 | CHI05-PH2-FIT-BL-D5,3,3,2,3,4,2 | CHI05-04-03-L2-1760 | Interior - L2 PDUs - COLO4 Cell 3 | Not Started | 25 |
| 756 | CHI05-PH2-FIT-BL-D5,3,3,2,3,4,2 | CHI05-04-03-L2-1770 | Interior - L2 AHUs - COLO4 Cell 3 | Not Started | 25 |
| 757 | CHI05-PH2-FIT-BL-D5,3,3,2,3,4,2 | CHI05-04-03-L2-1780 | Interior - L2 ATSs - COLO4 Cell 3 | Not Started | 33 |
| 758 | CHI05-PH2-FIT-BL-D5,3,3,2,3,4,2 | CHI05-04-03-L2-1790 | Interior - L2 Busway - COLO4 Cell 3 | Not Started | 25 |
| 759 | CHI05-PH2-FIT-BL-D5,3,3,2,3,4,2 | CHI05-04-03-L2-1850 | Interior - L2 ADP - COLO4 Cell 3 | Not Started | 33 |
| 760 | CHI05-PH2-FIT-BL-D5,3,3,2,3,4,3 | CHI05-04-03-L3-1860 | Interior - L3 UPS - COLO4 Cell 3 | Not Started | 38 |
| 761 | CHI05-PH2-FIT-BL-D5,3,3,2,3,4,3 | CHI05-04-03-L3-1870 | Interior - L3 MSB - COLO4 Cell 3 | Not Started | 13 |
| 762 | CHI05-PH2-FIT-BL-D5,3,3,2,3,4,3 | CHI05-04-03-L3-1880 | Interior - L3 PDUs - COLO4 Cell 3 | Not Started | 18 |
| 763 | CHI05-PH2-FIT-BL-D5,3,3,2,3,4,3 | CHI05-04-03-L3-1890 | Interior - L3 AHUs - COLO4 Cell 3 | Not Started | 13 |
| 764 | CHI05-PH2-FIT-BL-D5,3,3,2,3,4,3 | CHI05-04-03-L3-1900 | Interior - L3 ATSs - COLO4 Cell 3 | Not Started | 13 |
| 765 | CHI05-PH2-FIT-BL-D5,3,3,2,3,4,3 | CHI05-04-03-L3-1910 | Interior - L3 Busway - COLO4 Cell 3 | Not Started | 13 |
| 766 | CHI05-PH2-FIT-BL-D5,3,3,2,3,4,3 | CHI05-04-03-L3-1970 | Interior - L3 ADP - COLO4 Cell 3 | Not Started | 13 |
| 767 | CHI05-PH2-FIT-BL-D5,3,3,2,2,2 | CHI05-04-04-MG-1550 | Install Dampers and actuators at Louvers - Upper level (RED) - COLO4 Cell 4 - MG | Not Started | 33 |
| 768 | CHI05-PH2-FIT-BL-D5,3,3,2,2,2 | CHI05-04-04-MG-1560 | Install Dampers and actuators at Louvers - Lower level (OA) - COLO4 Cell 4 - MG | Not Started | 33 |
| 769 | CHI05-PH2-FIT-BL-D5,3,3,2,2,2 | CHI05-04-04-MG-1570 | Overhead MEP Installation - COLO4 Cell 4 - MG | Not Started | 19 |
| 770 | CHI05-PH2-FIT-BL-D5,3,3,2,2,2 | CHI05-04-04-MG-1580 | Deliver AHU into Mech. Gallery - COLO4 Cell 4 - MG | Not Started | 19 |

| entry | activity_code | activity_id | activity_name | activity_status | total_float |
| --- | --- | --- | --- | --- | --- |
| 771 | CHI05-PH2-FIT-BL-D5,3,3,2,2,2 | CHI05-04-04-MG-1590 | Install Walls and Primer Paint - COLO4 Cell 4 - MG | Not Started | 19 |
| 772 | CHI05-PH2-FIT-BL-D5,3,3,2,2,2 | CHI05-04-04-MG-1600 | Placing the AHU - COLO4 Cell 4 - MG | Not Started | 41 |
| 773 | CHI05-PH2-FIT-BL-D5,3,3,2,2,2 | CHI05-04-04-MG-1610 | Layout Ceiling and install Pencile Rod - COLO4 Cell 4 - MG | Not Started | 45 |
| 774 | CHI05-PH2-FIT-BL-D5,3,3,2,2,2 | CHI05-04-04-MG-1620 | Piping and Electrical Termination to AHUs - COLO4 Cell 4 - MG | Not Started | 58 |
| 775 | CHI05-PH2-FIT-BL-D5,3,3,2,2,2 | CHI05-04-04-MG-1630 | Pipe Testing - COLO4 Cell 4 - MG | Not Started | 58 |
| 776 | CHI05-PH2-FIT-BL-D5,3,3,2,2,2 | CHI05-04-04-MG-1640 | Install ceiling and Light Fittings - COLO4 Cell 4 - MG | Not Started | 58 |
| 777 | CHI05-PH2-FIT-BL-D5,3,3,2,2,2 | CHI05-04-04-MG-1650 | Trim out MEP - COLO4 Cell 4 - MG | Not Started | 58 |
| 778 | CHI05-PH2-FIT-BL-D5,3,3,2,2,2 | CHI05-04-04-MG-1595 | Post Wall Overhead MEP - COLO4 Cell 4 - MG | Not Started | 41 |
| 779 | CHI05-PH2-FIT-BL-D5,3,3,2,2,5 | CHI05-04-04-ER-1550 | Install Walls and Primer Paint - COLO4 Cell 4 - ER | Not Started | 0 |
| 780 | CHI05-PH2-FIT-BL-D5,3,3,2,2,5 | CHI05-04-04-ER-1560 | Sprinklers and Overhead MEP (Above Ceiling) - COLO4 Cell 4 - ER | Not Started | 0 |
| 781 | CHI05-PH2-FIT-BL-D5,3,3,2,2,5 | CHI05-04-04-ER-1570 | Install Upper Screens - COLO4 Cell 4 - ER | Not Started | 0 |
| 782 | CHI05-PH2-FIT-BL-D5,3,3,2,2,5 | CHI05-04-04-ER-1580 | Install Ceiling - COLO4 Cell 4 - ER | Not Started | 0 |
| 783 | CHI05-PH2-FIT-BL-D5,3,3,2,2,5 | CHI05-04-04-ER-1590 | Below Ceiling MEP Rough In - COLO4 Cell 4 - ER | Not Started | 0 |
| 784 | CHI05-PH2-FIT-BL-D5,3,3,2,2,5 | CHI05-04-04-ER-1600 | Installation of ADP & ATS - COLO4 Cell 4 - ER | Not Started | 23 |
| 785 | CHI05-PH2-FIT-BL-D5,3,3,2,2,5 | CHI05-04-04-ER-1610 | Installation of UPS Equipment - COLO4 Cell 4 - ER | Not Started | 0 |
| 786 | CHI05-PH2-FIT-BL-D5,3,3,2,2,5 | CHI05-04-04-ER-1620 | Connet to Cable tray and conduit equipment - COLO4 Cell 4 - ER | Not Started | 74 |
| 787 | CHI05-PH2-FIT-BL-D5,3,3,2,2,5 | CHI05-04-04-ER-1630 | Cable Pulling at Elec. Equipment - COLO4 Cell 4 - ER | Not Started | 57 |
| 788 | CHI05-PH2-FIT-BL-D5,3,3,2,2,5 | CHI05-04-04-ER-1640 | Door Frame Installation - COLO4 Cell 4 - ER | Not Started | 0 |
| 789 | CHI05-PH2-FIT-BL-D5,3,3,2,2,5 | CHI05-04-04-ER-1650 | Finishes and Signage - COLO4 Cell 4 - ER | Not Started | 57 |
| 790 | CHI05-PH2-FIT-BL-D5,3,3,2,2,5 | CHI05-04-04-ER-1625 | Installation of MSB - COLO4 Cell 4 - ER | Not Started | 21 |
| 791 | CHI05-PH2-FIT-BL-D5,3,3,2,2,1 | CHI05-04-04-DH-1635 | Closing Construction Access Door - COLO4 Cell 4 - DH | Not Started | 40 |
| 792 | CHI05-PH2-FIT-BL-D5,3,3,2,2,1 | CHI05-04-04-DH-1540 | Termination at PDU & Busway - COLO4 Cell 4 - DH | Not Started | 2 |
| 793 | CHI05-PH2-FIT-BL-D5,3,3,2,2,1 | CHI05-04-04-DH-1550 | Overhead MEP and Hangers (Above Ceiling) - COLO4 Cell 4 - DH | Not Started | 12 |
| 794 | CHI05-PH2-FIT-BL-D5,3,3,2,2,1 | CHI05-04-04-DH-1560 | HAC install and Rise - COLO4 Cell 4 - DH | Not Started | 35 |
| 795 | CHI05-PH2-FIT-BL-D5,3,3,2,2,1 | CHI05-04-04-DH-1570 | Cable Pulling at PDU & Busway- COLO4 Cell 4 - DH | Not Started | 17 |
| 796 | CHI05-PH2-FIT-BL-D5,3,3,2,2,1 | CHI05-04-04-DH-1580 | Security Screen Installation - COLO4 Cell 4 - DH | Not Started | 15 |
| 797 | CHI05-PH2-FIT-BL-D5,3,3,2,2,1 | CHI05-04-04-DH-1590 | Ceiling Grid and Tile - COLO4 Cell 4 - DH | Not Started | 12 |
| 798 | CHI05-PH2-FIT-BL-D5,3,3,2,2,1 | CHI05-04-04-DH-1600 | Install PDU's - COLO4 Cell 4 - DH | Not Started | 12 |
| 799 | CHI05-PH2-FIT-BL-D5,3,3,2,2,1 | CHI05-04-04-DH-1610 | Overhead MEP Installation (Below Ceiling) - COLO4 Cell 4 - DH | Not Started | 12 |
| 800 | CHI05-PH2-FIT-BL-D5,3,3,2,2,1 | CHI05-04-04-DH-1620 | Install Low Voltage Wiring and Fiber Optic - COLO4 Cell 4 - DH | Not Started | 35 |
| 801 | CHI05-PH2-FIT-BL-D5,3,3,2,2,1 | CHI05-04-04-DH-1630 | HAC Placing - COLO4 Cell 4 - DH | Not Started | 22 |
| 802 | CHI05-PH2-FIT-BL-D5,3,3,2,2,1 | CHI05-04-04-DH-1640 | Finishes and Signage - COLO4 Cell 4 - DH | Not Started | 56 |
| 803 | CHI05-PH2-FIT-BL-D5,3,3,2,2,4,1 | CHI05-04-04-L1-1740 | Interior - L1 UPS - COLO4 Cell 4 | Not Started | 16 |
| 804 | CHI05-PH2-FIT-BL-D5,3,3,2,2,4,1 | CHI05-04-04-L1-1750 | Interior - L1 MSB - COLO4 Cell 4 | Not Started | 16 |
| 805 | CHI05-PH2-FIT-BL-D5,3,3,2,2,4,1 | CHI05-04-04-L1-1760 | Interior - L1 PDUs - COLO4 Cell 4 | Not Started | 14 |
| 806 | CHI05-PH2-FIT-BL-D5,3,3,2,2,4,1 | CHI05-04-04-L1-1770 | Interior - L1 AHUs - COLO4 Cell 4 | Not Started | 14 |
| 807 | CHI05-PH2-FIT-BL-D5,3,3,2,2,4,1 | CHI05-04-04-L1-1780 | Interior - L1 ATSs - COLO4 Cell 4 | Not Started | 17 |
| 808 | CHI05-PH2-FIT-BL-D5,3,3,2,2,4,1 | CHI05-04-04-L1-1790 | Interior - L1 Busway - COLO4 Cell 4 | Not Started | 14 |
| 809 | CHI05-PH2-FIT-BL-D5,3,3,2,2,4,1 | CHI05-04-04-L1-1850 | Interior - L1 ADP - COLO4 Cell 4 | Not Started | 17 |
| 810 | CHI05-PH2-FIT-BL-D5,3,3,2,2,4,2 | CHI05-04-04-L2-1860 | Interior - L2 UPS - COLO4 Cell 4 | Not Started | 14 |
| 811 | CHI05-PH2-FIT-BL-D5,3,3,2,2,4,2 | CHI05-04-04-L2-1870 | Interior - L2 MSB - COLO4 Cell 4 | Not Started | 14 |
| 812 | CHI05-PH2-FIT-BL-D5,3,3,2,2,4,2 | CHI05-04-04-L2-1880 | Interior - L2 PDUs - COLO4 Cell 4 | Not Started | 2 |
| 813 | CHI05-PH2-FIT-BL-D5,3,3,2,2,4,2 | CHI05-04-04-L2-1890 | Interior - L2 AHUs - COLO4 Cell 4 | Not Started | 10 |
| 814 | CHI05-PH2-FIT-BL-D5,3,3,2,2,4,2 | CHI05-04-04-L2-1900 | Interior - L2 ATSs - COLO4 Cell 4 | Not Started | 19 |
| 815 | CHI05-PH2-FIT-BL-D5,3,3,2,2,4,2 | CHI05-04-04-L2-1910 | Interior - L2 Busway - COLO4 Cell 4 | Not Started | 10 |
| 816 | CHI05-PH2-FIT-BL-D5,3,3,2,2,4,2 | CHI05-04-04-L2-1970 | Interior - L2 ADP - COLO4 Cell 4 | Not Started | 19 |
| 817 | CHI05-PH2-FIT-BL-D5,3,3,2,2,4,3 | CHI05-04-04-L3-1980 | Interior - L3 UPS - COLO4 Cell 4 | Not Started | 0 |
| 818 | CHI05-PH2-FIT-BL-D5,3,3,2,2,4,3 | CHI05-04-04-L3-1990 | Interior - L3 MSB - COLO4 Cell 4 | Not Started | 0 |
| 819 | CHI05-PH2-FIT-BL-D5,3,3,2,2,4,3 | CHI05-04-04-L3-2000 | Interior - L3 PDUs - COLO4 Cell 4 | Not Started | 0 |
| 820 | CHI05-PH2-FIT-BL-D5,3,3,2,2,4,3 | CHI05-04-04-L3-2010 | Interior - L3 AHUs - COLO4 Cell 4 | Not Started | 0 |
| 821 | CHI05-PH2-FIT-BL-D5,3,3,2,2,4,3 | CHI05-04-04-L3-2020 | Interior - L3 ATSs - COLO4 Cell 4 | Not Started | 0 |
| 822 | CHI05-PH2-FIT-BL-D5,3,3,2,2,4,3 | CHI05-04-04-L3-2030 | Interior - L3 Busway - COLO4 Cell 4 | Not Started | 0 |
| 823 | CHI05-PH2-FIT-BL-D5,3,3,2,2,4,3 | CHI05-04-04-L3-2090 | Interior - L3 ADP - COLO4 Cell 4 | Not Started | 0 |
| 824 | CHI05-PH2-FIT-BL-D5,3,3,2,5,1 | CHI05-04-04-L4-1000 | Cx LEV4 - COLO4 | Not Started | 0 |
| 825 | CHI05-PH2-FIT-BL-D5,3,3,2,5,2 | CHI05-04-04-L5-1000 | Cx LEV5 / IST - COLO4 | Not Started | 0 |
| 826 | CHI05-PH2-FIT-BL-D5,3,3,3,6,2 | CHI05-05-01-MG-1330 | Install Dampers and actuators at Louvers - Upper level (RED) - COLO5 Cell 1 - MG | Not Started | 0 |
| 827 | CHI05-PH2-FIT-BL-D5,3,3,3,6,2 | CHI05-05-01-MG-1340 | Install Dampers and actuators at Louvers - Lower level (OA) - COLO5 Cell 1 - MG | Not Started | 53 |
| 828 | CHI05-PH2-FIT-BL-D5,3,3,3,6,2 | CHI05-05-01-MG-1350 | Overhead MEP Installation - COLO5 Cell 1 - MG | Not Started | 53 |
| 829 | CHI05-PH2-FIT-BL-D5,3,3,3,6,2 | CHI05-05-01-MG-1360 | Deliver AHU into Mech. Gallery - COLO5 Cell 1 - MG | Not Started | 39 |
| 830 | CHI05-PH2-FIT-BL-D5,3,3,3,6,2 | CHI05-05-01-MG-1370 | Install Walls and Primer Paint - COLO5 Cell 1 - MG | Not Started | 39 |
| 831 | CHI05-PH2-FIT-BL-D5,3,3,3,6,2 | CHI05-05-01-MG-1380 | Placing the AHU - COLO5 Cell 1 - MG | Not Started | 77 |
| 832 | CHI05-PH2-FIT-BL-D5,3,3,3,6,2 | CHI05-05-01-MG-1390 | Layout Ceiling and install Pencile Rod - COLO5 Cell 1 - MG | Not Started | 81 |
| 833 | CHI05-PH2-FIT-BL-D5,3,3,3,6,2 | CHI05-05-01-MG-1400 | Piping and Electrical Termination to AHUs - COLO5 Cell 1 - MG | Not Started | 77 |
| 834 | CHI05-PH2-FIT-BL-D5,3,3,3,6,2 | CHI05-05-01-MG-1410 | Pipe Testing - COLO5 Cell 1 - MG | Not Started | 83 |
| 835 | CHI05-PH2-FIT-BL-D5,3,3,3,6,2 | CHI05-05-01-MG-1420 | Install ceiling and Light Fittings - COLO5 Cell 1 - MG | Not Started | 83 |
| 836 | CHI05-PH2-FIT-BL-D5,3,3,3,6,2 | CHI05-05-01-MG-1430 | Trim out MEP - COLO5 Cell 1 - MG | Not Started | 87 |
| 837 | CHI05-PH2-FIT-BL-D5,3,3,3,6,2 | CHI05-05-01-MG-1375 | Post Wall Overhead MEP - COLO5 Cell 1 - MG | Not Started | 77 |
| 838 | CHI05-PH2-FIT-BL-D5,3,3,3,6,2 | CHI05-05-01-MG-1425 | Install Damper in Ceiling (RAD) - COLO 5 Cell 1 - MG | Not Started | 87 |
| 839 | CHI05-PH2-FIT-BL-D5,3,3,3,6,5 | CHI05-05-01-ER-1330 | Install Walls and Primer Paint - COLO5 Cell 1 - ER | Not Started | 58 |
| 840 | CHI05-PH2-FIT-BL-D5,3,3,3,6,5 | CHI05-05-01-ER-1340 | Sprinklers and Overhead MEP (Above Ceiling) - COLO5 Cell 1 - ER | Not Started | 58 |

| entry | activity_code | activity_id | activity_name | activity_status | total_float |
| --- | --- | --- | --- | --- | --- |
| 841 | CHI05-PH2-FIT-BL-D5,3,3,3,6,5 | CHI05-05-01-ER-1350 | Install Upper Screens - COLO5 Cell 1 - ER | Not Started | 58 |
| 842 | CHI05-PH2-FIT-BL-D5,3,3,3,6,5 | CHI05-05-01-ER-1360 | Install Ceiling - COLO5 Cell 1 - ER | Not Started | 58 |
| 843 | CHI05-PH2-FIT-BL-D5,3,3,3,6,5 | CHI05-05-01-ER-1370 | Below Ceiling MEP Rough In - COLO5 Cell 1 - ER | Not Started | 58 |
| 844 | CHI05-PH2-FIT-BL-D5,3,3,3,6,5 | CHI05-05-01-ER-1380 | Installation of ADP & ATS - COLO5 Cell 1 - ER | Not Started | 87 |
| 845 | CHI05-PH2-FIT-BL-D5,3,3,3,6,5 | CHI05-05-01-ER-1390 | Installation of UPS Equipment - COLO5 Cell 1 - ER | Not Started | 73 |
| 846 | CHI05-PH2-FIT-BL-D5,3,3,3,6,5 | CHI05-05-01-ER-1400 | Connet to Cable tray and conduit equipment - COLO5 Cell 1 - ER | Not Started | 94 |
| 847 | CHI05-PH2-FIT-BL-D5,3,3,3,6,5 | CHI05-05-01-ER-1410 | Cable Pulling at Elec. Equipment - COLO5 Cell 1 - ER | Not Started | 94 |
| 848 | CHI05-PH2-FIT-BL-D5,3,3,3,6,5 | CHI05-05-01-ER-1420 | Door Frame Installation - COLO5 Cell 1 - ER | Not Started | 88 |
| 849 | CHI05-PH2-FIT-BL-D5,3,3,3,6,5 | CHI05-05-01-ER-1430 | Finishes and Signage - COLO5 Cell 1 - ER | Not Started | 109 |
| 850 | CHI05-PH2-FIT-BL-D5,3,3,3,6,5 | CHI05-05-01-ER-1385 | Installation of MSB - COLO5 Cell 1 - ER | Not Started | 81 |
| 851 | CHI05-PH2-FIT-BL-D5,3,3,3,6,1 | CHI05-05-01-DH-1320 | Cable Pulling at PDU & Busway - COLO5 Cell 1 - DH | Not Started | 44 |
| 852 | CHI05-PH2-FIT-BL-D5,3,3,3,6,1 | CHI05-05-01-DH-1330 | Overhead MEP and Hangers (Above Ceiling) - COLO5 Cell 1 - DH | Not Started | 63 |
| 853 | CHI05-PH2-FIT-BL-D5,3,3,3,6,1 | CHI05-05-01-DH-1340 | HAC install and Rise - COLO5 Cell 1 - DH | Not Started | 74 |
| 854 | CHI05-PH2-FIT-BL-D5,3,3,3,6,1 | CHI05-05-01-DH-1350 | Termination at PDU & Busway- COLO5 Cell 1 - DH | Not Started | 49 |
| 855 | CHI05-PH2-FIT-BL-D5,3,3,3,6,1 | CHI05-05-01-DH-1360 | Security Screen Installation - COLO5 Cell 1 - DH | Not Started | 44 |
| 856 | CHI05-PH2-FIT-BL-D5,3,3,3,6,1 | CHI05-05-01-DH-1370 | Ceiling Grid and Tile - COLO5 Cell 1 - DH | Not Started | 44 |
| 857 | CHI05-PH2-FIT-BL-D5,3,3,3,6,1 | CHI05-05-01-DH-1380 | Install PDU's - COLO5 Cell 1 - DH | Not Started | 44 |
| 858 | CHI05-PH2-FIT-BL-D5,3,3,3,6,1 | CHI05-05-01-DH-1390 | Overhead MEP Installation (Below Ceiling) - COLO5 Cell 1 - DH | Not Started | 44 |
| 859 | CHI05-PH2-FIT-BL-D5,3,3,3,6,1 | CHI05-05-01-DH-1400 | Install Low Voltage Wiring and Fiber Optic - COLO5 Cell 1 - DH | Not Started | 74 |
| 860 | CHI05-PH2-FIT-BL-D5,3,3,3,6,1 | CHI05-05-01-DH-1410 | HAC Placing - COLO5 Cell 1 - DH | Not Started | 74 |
| 861 | CHI05-PH2-FIT-BL-D5,3,3,3,6,1 | CHI05-05-01-DH-1420 | Finishes and Signage - COLO5 Cell 1 - DH | Not Started | 105 |
| 862 | CHI05-PH2-FIT-BL-D5,3,3,3,6,4,1 | CHI05-05-01-L1-1500 | Interior - L1 UPS - COLO5 Cell 1 | Not Started | 103 |
| 863 | CHI05-PH2-FIT-BL-D5,3,3,3,6,4,1 | CHI05-05-01-L1-1510 | Interior - L1 MSB - COLO5 Cell 1 | Not Started | 106 |
| 864 | CHI05-PH2-FIT-BL-D5,3,3,3,6,4,1 | CHI05-05-01-L1-1520 | Interior - L1 PDUs - COLO5 Cell 1 | Not Started | 103 |
| 865 | CHI05-PH2-FIT-BL-D5,3,3,3,6,4,1 | CHI05-05-01-L1-1530 | Interior - L1 AHUs - COLO5 Cell 1 | Not Started | 108 |
| 866 | CHI05-PH2-FIT-BL-D5,3,3,3,6,4,1 | CHI05-05-01-L1-1540 | Interior - L1 ATSs - COLO5 Cell 1 | Not Started | 114 |
| 867 | CHI05-PH2-FIT-BL-D5,3,3,3,6,4,1 | CHI05-05-01-L1-1550 | Interior - L1 Busway - COLO5 Cell 1 | Not Started | 107 |
| 868 | CHI05-PH2-FIT-BL-D5,3,3,3,6,4,1 | CHI05-05-01-L1-1610 | Interior - L1 ADP - COLO5 Cell 1 | Not Started | 110 |
| 869 | CHI05-PH2-FIT-BL-D5,3,3,3,6,4,2 | CHI05-05-01-L2-1620 | Interior - L2 UPS - COLO5 Cell 1 | Not Started | 52 |
| 870 | CHI05-PH2-FIT-BL-D5,3,3,3,6,4,2 | CHI05-05-01-L2-1630 | Interior - L2 MSB - COLO5 Cell 1 | Not Started | 52 |
| 871 | CHI05-PH2-FIT-BL-D5,3,3,3,6,4,2 | CHI05-05-01-L2-1640 | Interior - L2 PDUs - COLO5 Cell 1 | Not Started | 52 |
| 872 | CHI05-PH2-FIT-BL-D5,3,3,3,6,4,2 | CHI05-05-01-L2-1650 | Interior - L2 AHUs - COLO5 Cell 1 | Not Started | 52 |
| 873 | CHI05-PH2-FIT-BL-D5,3,3,3,6,4,2 | CHI05-05-01-L2-1660 | Interior - L2 ATSs - COLO5 Cell 1 | Not Started | 52 |
| 874 | CHI05-PH2-FIT-BL-D5,3,3,3,6,4,2 | CHI05-05-01-L2-1670 | Interior - L2 Busway - COLO5 Cell 1 | Not Started | 52 |
| 875 | CHI05-PH2-FIT-BL-D5,3,3,3,6,4,2 | CHI05-05-01-L2-1730 | Interior - L2 ADP - COLO5 Cell 1 | Not Started | 52 |
| 876 | CHI05-PH2-FIT-BL-D5,3,3,3,6,4,3 | CHI05-05-01-L3-1740 | Interior - L3 UPS - COLO5 Cell 1 | Not Started | 37 |
| 877 | CHI05-PH2-FIT-BL-D5,3,3,3,6,4,3 | CHI05-05-01-L3-1750 | Interior - L3 MSB - COLO5 Cell 1 | Not Started | 37 |
| 878 | CHI05-PH2-FIT-BL-D5,3,3,3,6,4,3 | CHI05-05-01-L3-1760 | Interior - L3 PDUs - COLO5 Cell 1 | Not Started | 37 |
| 879 | CHI05-PH2-FIT-BL-D5,3,3,3,6,4,3 | CHI05-05-01-L3-1770 | Interior - L3 AHUs - COLO5 Cell 1 | Not Started | 37 |
| 880 | CHI05-PH2-FIT-BL-D5,3,3,3,6,4,3 | CHI05-05-01-L3-1780 | Interior - L3 ATSs - COLO5 Cell 1 | Not Started | 37 |
| 881 | CHI05-PH2-FIT-BL-D5,3,3,3,6,4,3 | CHI05-05-01-L3-1790 | Interior - L3 Busway - COLO5 Cell 1 | Not Started | 37 |
| 882 | CHI05-PH2-FIT-BL-D5,3,3,3,6,4,3 | CHI05-05-01-L3-1850 | Interior - L3 ADP - COLO5 Cell 1 | Not Started | 37 |
| 883 | CHI05-PH2-FIT-BL-D5,3,3,3,1,2 | CHI05-05-02-MG-1440 | Install Dampers and actuators at Louvers - Upper level (RED) - COLO5 Cell 2 - MG | Not Started | 58 |
| 884 | CHI05-PH2-FIT-BL-D5,3,3,3,1,2 | CHI05-05-02-MG-1450 | Install Dampers and actuators at Louvers - Lower level (OA) - COLO5 Cell 2 - MG | Not Started | 58 |
| 885 | CHI05-PH2-FIT-BL-D5,3,3,3,1,2 | CHI05-05-02-MG-1460 | Overhead MEP Installation - COLO5 Cell 2 - MG | Not Started | 53 |
| 886 | CHI05-PH2-FIT-BL-D5,3,3,3,1,2 | CHI05-05-02-MG-1470 | Deliver AHU into Mech. Gallery - COLO5 Cell 2 - MG | Not Started | 47 |
| 887 | CHI05-PH2-FIT-BL-D5,3,3,3,1,2 | CHI05-05-02-MG-1480 | Install Walls and Primer Paint - COLO5 Cell 2 - MG | Not Started | 39 |
| 888 | CHI05-PH2-FIT-BL-D5,3,3,3,1,2 | CHI02-05-02-MG-1490 | Placing the AHU - COLO5 Cell 2 - MG | Not Started | 80 |
| 889 | CHI05-PH2-FIT-BL-D5,3,3,3,1,2 | CHI02-05-02-MG-1500 | Layout Ceiling and install Pencile Rod - COLO5 Cell 2 - MG | Not Started | 84 |
| 890 | CHI05-PH2-FIT-BL-D5,3,3,3,1,2 | CHI02-05-02-MG-1510 | Piping and Electrical Termination to AHUs - COLO5 Cell 2 - MG | Not Started | 77 |
| 891 | CHI05-PH2-FIT-BL-D5,3,3,3,1,2 | CHI05-05-02-MG-1520 | Pipe Testing - COLO5 Cell 2 - MG | Not Started | 81 |
| 892 | CHI05-PH2-FIT-BL-D5,3,3,3,1,2 | CHI05-05-02-MG-1530 | Install ceiling and Light Fittings - COLO5 Cell 2 - MG | Not Started | 81 |
| 893 | CHI05-PH2-FIT-BL-D5,3,3,3,1,2 | CHI05-05-02-MG-1540 | Trim out MEP - COLO5 Cell 2 - MG | Not Started | 87 |
| 894 | CHI05-PH2-FIT-BL-D5,3,3,3,1,2 | CHI05-05-02-MG-1485 | Post Wall Overhead MEP - COLO5 Cell 2 - MG | Not Started | 80 |
| 895 | CHI05-PH2-FIT-BL-D5,3,3,3,1,5 | CHI05-05-02-ER-1440 | Install Walls and Primer Paint - COLO5 Cell 2 - ER | Not Started | 61 |
| 896 | CHI05-PH2-FIT-BL-D5,3,3,3,1,5 | CHI05-05-02-ER-1450 | Sprinklers and Overhead MEP (Above Ceiling) - COLO5 Cell 2 - ER | Not Started | 58 |
| 897 | CHI05-PH2-FIT-BL-D5,3,3,3,1,5 | CHI02-05-02-ER-1460 | Install Upper Screens - COLO5 Cell 2 - ER | Not Started | 61 |
| 898 | CHI05-PH2-FIT-BL-D5,3,3,3,1,5 | CHI05-05-02-ER-1470 | Install Ceiling - COLO5 Cell 2 - ER | Not Started | 58 |
| 899 | CHI05-PH2-FIT-BL-D5,3,3,3,1,5 | CHI05-05-02-ER-1480 | Below Ceiling MEP Rough In - COLO5 Cell 2 - ER | Not Started | 58 |
| 900 | CHI05-PH2-FIT-BL-D5,3,3,3,1,5 | CHI05-05-02-ER-1490 | Installation of ADP & ATS - COLO5 Cell 2 - ER | Not Started | 87 |
| 901 | CHI05-PH2-FIT-BL-D5,3,3,3,1,5 | CHI05-05-02-ER-1500 | Installation of UPS Equipment - COLO5 Cell 2 - ER | Not Started | 68 |
| 902 | CHI05-PH2-FIT-BL-D5,3,3,3,1,5 | CHI05-05-02-ER-1510 | Connet to Cable tray and conduit equipment - COLO5 Cell 2 - ER | Not Started | 104 |
| 903 | CHI05-PH2-FIT-BL-D5,3,3,3,1,5 | CHI05-05-02-ER-1520 | Cable Pulling at Elec. Equipment - COLO5 Cell 2 - ER | Not Started | 94 |
| 904 | CHI05-PH2-FIT-BL-D5,3,3,3,1,5 | CHI05-05-02-ER-1530 | Door Frame Installation - COLO5 Cell 2 - ER | Not Started | 67 |
| 905 | CHI05-PH2-FIT-BL-D5,3,3,3,1,5 | CHI05-05-02-ER-1540 | Finishes and Signage - COLO5 Cell 2 - ER | Not Started | 104 |
| 906 | CHI05-PH2-FIT-BL-D5,3,3,3,1,5 | CHI05-05-02-ER-1495 | Installation of MSB - COLO5 Cell 2 - ER | Not Started | 81 |
| 907 | CHI05-PH2-FIT-BL-D5,3,3,3,1,1 | CHI05-05-02-DH-1430 | Cable Pulling at PDU & Busway - COLO5 Cell 2 - DH | Not Started | 39 |
| 908 | CHI05-PH2-FIT-BL-D5,3,3,3,1,1 | CHI05-05-02-DH-1440 | Overhead MEP and Hangers (Above Ceiling) - COLO5 Cell 2 - DH | Not Started | 66 |
| 909 | CHI05-PH2-FIT-BL-D5,3,3,3,1,1 | CHI05-05-02-DH-1450 | HAC install and Rise - COLO5 Cell 2 - DH | Not Started | 64 |
| 910 | CHI05-PH2-FIT-BL-D5,3,3,3,1,1 | CHI05-05-02-DH-1460 | Termination at PDU & Busway- COLO5 Cell 2 - DH | Not Started | 85 |

| entry | activity_code | activity_id | activity_name | activity_status | total_float |
| --- | --- | --- | --- | --- | --- |
| 911 | CHI05-PH2-FIT-BL-D5,3,3,3,1,1 | CHI05-05-02-DH-1470 | Security Screen Installation - COLO5 Cell 2 - DH | Not Started | 39 |
| 912 | CHI05-PH2-FIT-BL-D5,3,3,3,1,1 | CHI05-05-02-DH-1480 | Ceiling Grid and Tile - COLO5 Cell 2 - DH | Not Started | 39 |
| 913 | CHI05-PH2-FIT-BL-D5,3,3,3,1,1 | CHI05-05-02-DH-1490 | Install PDU's - COLO5 Cell 2 - DH | Not Started | 39 |
| 914 | CHI05-PH2-FIT-BL-D5,3,3,3,1,1 | CHI05-05-02-DH-1500 | Overhead MEP Installation (Below Ceiling) - COLO5 Cell 2 - DH | Not Started | 39 |
| 915 | CHI05-PH2-FIT-BL-D5,3,3,3,1,1 | CHI05-05-02-DH-1510 | Install Low Voltage Wiring and Fiber Optic - COLO5 Cell 2 - DH | Not Started | 64 |
| 916 | CHI05-PH2-FIT-BL-D5,3,3,3,1,1 | CHI05-05-02-DH-1520 | HAC Placing - COLO5 Cell 2 - DH | Not Started | 64 |
| 917 | CHI05-PH2-FIT-BL-D5,3,3,3,1,1 | CHI05-05-02-DH-1530 | Finishes and Signage - COLO5 Cell 2 - DH | Not Started | 85 |
| 918 | CHI05-PH2-FIT-BL-D5,3,3,3,1,4,1 | CHI05-05-02-L1-1620 | Interior - L1 UPS - COLO5 Cell 2 | Not Started | 93 |
| 919 | CHI05-PH2-FIT-BL-D5,3,3,3,1,4,1 | CHI05-05-02-L1-1630 | Interior - L1 MSB - COLO5 Cell 2 | Not Started | 101 |
| 920 | CHI05-PH2-FIT-BL-D5,3,3,3,1,4,1 | CHI05-05-02-L1-1640 | Interior - L1 PDUs - COLO5 Cell 2 | Not Started | 83 |
| 921 | CHI05-PH2-FIT-BL-D5,3,3,3,1,4,1 | CHI05-05-02-L1-1650 | Interior - L1 AHUs - COLO5 Cell 2 | Not Started | 91 |
| 922 | CHI05-PH2-FIT-BL-D5,3,3,3,1,4,1 | CHI05-05-02-L1-1660 | Interior - L1 ATSs - COLO5 Cell 2 | Not Started | 109 |
| 923 | CHI05-PH2-FIT-BL-D5,3,3,3,1,4,1 | CHI05-05-02-L1-1670 | Interior - L1 Busway - COLO5 Cell 2 | Not Started | 87 |
| 924 | CHI05-PH2-FIT-BL-D5,3,3,3,1,4,1 | CHI05-05-02-L1-1730 | Interior - L1 ADP - COLO5 Cell 2 | Not Started | 105 |
| 925 | CHI05-PH2-FIT-BL-D5,3,3,3,1,4,2 | CHI05-05-02-L2-1740 | Interior - L2 UPS - COLO5 Cell 2 | Not Started | 52 |
| 926 | CHI05-PH2-FIT-BL-D5,3,3,3,1,4,2 | CHI05-05-02-L2-1750 | Interior - L2 MSB - COLO5 Cell 2 | Not Started | 52 |
| 927 | CHI05-PH2-FIT-BL-D5,3,3,3,1,4,2 | CHI05-05-02-L2-1760 | Interior - L2 PDUs - COLO5 Cell 2 | Not Started | 52 |
| 928 | CHI05-PH2-FIT-BL-D5,3,3,3,1,4,2 | CHI05-05-02-L2-1770 | Interior - L2 AHUs - COLO5 Cell 2 | Not Started | 52 |
| 929 | CHI05-PH2-FIT-BL-D5,3,3,3,1,4,2 | CHI05-05-02-L2-1780 | Interior - L2 ATSs - COLO5 Cell 2 | Not Started | 52 |
| 930 | CHI05-PH2-FIT-BL-D5,3,3,3,1,4,2 | CHI05-05-02-L2-1790 | Interior - L2 Busway - COLO5 Cell 2 | Not Started | 52 |
| 931 | CHI05-PH2-FIT-BL-D5,3,3,3,1,4,2 | CHI05-05-02-L2-1850 | Interior - L2 ADP - COLO5 Cell 2 | Not Started | 52 |
| 932 | CHI05-PH2-FIT-BL-D5,3,3,3,1,4,3 | CHI05-05-02-L3-1860 | Interior - L3 UPS - COLO5 Cell 2 | Not Started | 37 |
| 933 | CHI05-PH2-FIT-BL-D5,3,3,3,1,4,3 | CHI05-05-02-L3-1870 | Interior - L3 MSB - COLO5 Cell 2 | Not Started | 37 |
| 934 | CHI05-PH2-FIT-BL-D5,3,3,3,1,4,3 | CHI05-05-02-L3-1880 | Interior - L3 PDUs - COLO5 Cell 2 | Not Started | 37 |
| 935 | CHI05-PH2-FIT-BL-D5,3,3,3,1,4,3 | CHI05-05-02-L3-1890 | Interior - L3 AHUs - COLO5 Cell 2 | Not Started | 37 |
| 936 | CHI05-PH2-FIT-BL-D5,3,3,3,1,4,3 | CHI05-05-02-L3-1900 | Interior - L3 ATSs - COLO5 Cell 2 | Not Started | 37 |
| 937 | CHI05-PH2-FIT-BL-D5,3,3,3,1,4,3 | CHI05-05-02-L3-1910 | Interior - L3 Busway - COLO5 Cell 2 | Not Started | 37 |
| 938 | CHI05-PH2-FIT-BL-D5,3,3,3,1,4,3 | CHI05-05-02-L3-1970 | Interior - L3 ADP - COLO5 Cell 2 | Not Started | 37 |
| 939 | CHI05-PH2-FIT-BL-D5,3,3,3,3,2 | CHI05-05-03-MG-1550 | Install Dampers and actuators at Louvers - Upper level (RED) - COLO5 Cell 3 - MG | Not Started | 68 |
| 940 | CHI05-PH2-FIT-BL-D5,3,3,3,3,2 | CHI05-05-03-MG-1560 | Install Dampers and actuators at Louvers - Lower level (OA) - COLO5 Cell 3 - MG | Not Started | 68 |
| 941 | CHI05-PH2-FIT-BL-D5,3,3,3,3,2 | CHI05-05-03-MG-1570 | Overhead MEP Installation - COLO5 Cell 3 - MG | Not Started | 58 |
| 942 | CHI05-PH2-FIT-BL-D5,3,3,3,3,2 | CHI05-05-03-MG-1580 | Deliver AHU into Mech. Gallery - COLO5 Cell 3 - MG | Not Started | 58 |
| 943 | CHI05-PH2-FIT-BL-D5,3,3,3,3,2 | CHI05-05-03-MG-1590 | Install Walls and Primer Paint - COLO5 Cell 3 - MG | Not Started | 44 |
| 944 | CHI05-PH2-FIT-BL-D5,3,3,3,3,2 | CHI05-05-03-MG-1600 | Placing the AHU - COLO5 Cell 3 - MG | Not Started | 77 |
| 945 | CHI05-PH2-FIT-BL-D5,3,3,3,3,2 | CHI05-05-03-MG-1610 | Layout Ceiling and install Pencile Rod - COLO5 Cell 3 - MG | Not Started | 81 |
| 946 | CHI05-PH2-FIT-BL-D5,3,3,3,3,2 | CHI05-05-03-MG-1620 | Piping and Electrical Termination to AHUs - COLO5 Cell 3 - MG | Not Started | 77 |
| 947 | CHI05-PH2-FIT-BL-D5,3,3,3,3,2 | CHI05-05-03-MG-1630 | Pipe Testing - COLO5 Cell 3 - MG | Not Started | 79 |
| 948 | CHI05-PH2-FIT-BL-D5,3,3,3,3,2 | CHI05-05-03-MG-1640 | Install ceiling and Light Fittings - COLO5 Cell 3 - MG | Not Started | 79 |
| 949 | CHI05-PH2-FIT-BL-D5,3,3,3,3,2 | CHI05-05-03-MG-1650 | Trim out MEP - COLO5 Cell 3 - MG | Not Started | 82 |
| 950 | CHI05-PH2-FIT-BL-D5,3,3,3,3,2 | CHI05-05-03-MG-1595 | Post Wall Overhead MEP - COLO5 Cell 3 - MG | Not Started | 77 |
| 951 | CHI05-PH2-FIT-BL-D5,3,3,3,3,5 | CHI05-05-03-ER-1550 | Install Walls and Primer Paint - COLO5 Cell 3 - ER | Not Started | 61 |
| 952 | CHI05-PH2-FIT-BL-D5,3,3,3,3,5 | CHI05-05-03-ER-1560 | Sprinklers and Overhead MEP (Above Ceiling) - COLO5 Cell 3 - ER | Not Started | 58 |
| 953 | CHI05-PH2-FIT-BL-D5,3,3,3,3,5 | CHI05-05-03-ER-1570 | Install Upper Screens - COLO5 Cell 3 - ER | Not Started | 61 |
| 954 | CHI05-PH2-FIT-BL-D5,3,3,3,3,5 | CHI05-05-03-ER-1580 | Install Ceiling - COLO5 Cell 3 - ER | Not Started | 58 |
| 955 | CHI05-PH2-FIT-BL-D5,3,3,3,3,5 | CHI05-05-03-ER-1590 | Below Ceiling MEP Rough In - COLO5 Cell 3 - ER | Not Started | 58 |
| 956 | CHI05-PH2-FIT-BL-D5,3,3,3,3,5 | CHI05-05-03-ER-1600 | Installation of ADP & ATS - COLO5 Cell 3 - ER | Not Started | 87 |
| 957 | CHI05-PH2-FIT-BL-D5,3,3,3,3,5 | CHI05-05-03-ER-1610 | Installation of UPS Equipment - COLO5 Cell 3 - ER | Not Started | 63 |
| 958 | CHI05-PH2-FIT-BL-D5,3,3,3,3,5 | CHI05-05-03-ER-1620 | Connet to Cable tray and conduit equipment - COLO5 Cell 3 - ER | Not Started | 114 |
| 959 | CHI05-PH2-FIT-BL-D5,3,3,3,3,5 | CHI05-05-03-ER-1630 | Cable Pulling at Elec. Equipment - COLO5 Cell 3 - ER | Not Started | 94 |
| 960 | CHI05-PH2-FIT-BL-D5,3,3,3,3,5 | CHI05-05-03-ER-1640 | Door Frame Installation - COLO5 Cell 3 - ER | Not Started | 67 |
| 961 | CHI05-PH2-FIT-BL-D5,3,3,3,3,5 | CHI05-05-03-ER-1650 | Finishes and Signage - COLO5 Cell 3 - ER | Not Started | 85 |
| 962 | CHI05-PH2-FIT-BL-D5,3,3,3,3,5 | CHI05-05-03-ER-1605 | Installation of MSB - COLO5 Cell 3 - ER | Not Started | 81 |
| 963 | CHI05-PH2-FIT-BL-D5,3,3,3,3,1 | CHI05-05-03-DH-1540 | Termination at PDU & Busway - COLO5 Cell 3 - DH | Not Started | 39 |
| 964 | CHI05-PH2-FIT-BL-D5,3,3,3,3,1 | CHI05-05-03-DH-1550 | Overhead MEP and Hangers (Above Ceiling) - COLO5 Cell 3 - DH | Not Started | 69 |
| 965 | CHI05-PH2-FIT-BL-D5,3,3,3,3,1 | CHI05-05-03-DH-1560 | HAC install and Rise - COLO5 Cell 3 - DH | Not Started | 64 |
| 966 | CHI05-PH2-FIT-BL-D5,3,3,3,3,1 | CHI05-05-03-DH-1570 | Cable Pulling at PDU & Busway- COLO5 Cell 3 - DH | Not Started | 49 |
| 967 | CHI05-PH2-FIT-BL-D5,3,3,3,3,1 | CHI05-05-03-DH-1580 | Security Screen Installation - COLO5 Cell 3 - DH | Not Started | 44 |
| 968 | CHI05-PH2-FIT-BL-D5,3,3,3,3,1 | CHI05-05-03-DH-1590 | Ceiling Grid and Tile - COLO5 Cell 3 - DH | Not Started | 44 |
| 969 | CHI05-PH2-FIT-BL-D5,3,3,3,3,1 | CHI05-05-03-DH-1600 | Install PDU's - COLO5 Cell 3 - DH | Not Started | 44 |
| 970 | CHI05-PH2-FIT-BL-D5,3,3,3,3,1 | CHI05-05-03-DH-1610 | Overhead MEP Installation (Below Ceiling) - COLO5 Cell 3 - DH | Not Started | 44 |
| 971 | CHI05-PH2-FIT-BL-D5,3,3,3,3,1 | CHI05-05-03-DH-1620 | Install Low Voltage Wiring and Fiber Optic - COLO5 Cell 3 - DH | Not Started | 64 |
| 972 | CHI05-PH2-FIT-BL-D5,3,3,3,3,1 | CHI05-05-03-DH-1630 | HAC Placing - COLO5 Cell 3 - DH | Not Started | 64 |
| 973 | CHI05-PH2-FIT-BL-D5,3,3,3,3,1 | CHI05-05-03-DH-1640 | Finishes and Signage - COLO5 Cell 3 - DH | Not Started | 85 |
| 974 | CHI05-PH2-FIT-BL-D5,3,3,3,3,4,1 | CHI05-05-03-L1-1740 | Interior - L1 UPS - COLO5 Cell 3 | Not Started | 83 |
| 975 | CHI05-PH2-FIT-BL-D5,3,3,3,3,4,1 | CHI05-05-03-L1-1750 | Interior - L1 MSB - COLO5 Cell 3 | Not Started | 93 |
| 976 | CHI05-PH2-FIT-BL-D5,3,3,3,3,4,1 | CHI05-05-03-L1-1760 | Interior - L1 PDUs - COLO5 Cell 3 | Not Started | 73 |
| 977 | CHI05-PH2-FIT-BL-D5,3,3,3,3,4,1 | CHI05-05-03-L1-1770 | Interior - L1 AHUs - COLO5 Cell 3 | Not Started | 81 |
| 978 | CHI05-PH2-FIT-BL-D5,3,3,3,3,4,1 | CHI05-05-03-L1-1780 | Interior - L1 ATSs - COLO5 Cell 3 | Not Started | 101 |
| 979 | CHI05-PH2-FIT-BL-D5,3,3,3,3,4,1 | CHI05-05-03-L1-1790 | Interior - L1 Busway - COLO5 Cell 3 | Not Started | 77 |
| 980 | CHI05-PH2-FIT-BL-D5,3,3,3,3,4,1 | CHI05-05-03-L1-1850 | Interior - L1 ADP - COLO5 Cell 3 | Not Started | 97 |

| entry | activity_code | activity_id | activity_name | activity_status | total_float |
| --- | --- | --- | --- | --- | --- |
| 981 | CHI05-PH2-FIT-BL-D5,3,3,3,3,4,2 | CHI05-05-03-L2-1860 | Interior - L2 UPS - COLO5 Cell 3 | Not Started | 52 |
| 982 | CHI05-PH2-FIT-BL-D5,3,3,3,3,4,2 | CHI05-05-03-L2-1870 | Interior - L2 MSB - COLO5 Cell 3 | Not Started | 52 |
| 983 | CHI05-PH2-FIT-BL-D5,3,3,3,3,4,2 | CHI05-05-03-L2-1880 | Interior - L2 PDUs - COLO5 Cell 3 | Not Started | 52 |
| 984 | CHI05-PH2-FIT-BL-D5,3,3,3,3,4,2 | CHI05-05-03-L2-1890 | Interior - L2 AHUs - COLO5 Cell 3 | Not Started | 52 |
| 985 | CHI05-PH2-FIT-BL-D5,3,3,3,3,4,2 | CHI05-05-03-L2-1900 | Interior - L2 ATSs - COLO5 Cell 3 | Not Started | 52 |
| 986 | CHI05-PH2-FIT-BL-D5,3,3,3,3,4,2 | CHI05-05-03-L2-1910 | Interior - L2 Busway - COLO5 Cell 3 | Not Started | 52 |
| 987 | CHI05-PH2-FIT-BL-D5,3,3,3,3,4,2 | CHI05-05-03-L2-1970 | Interior - L2 ADP - COLO5 Cell 3 | Not Started | 52 |
| 988 | CHI05-PH2-FIT-BL-D5,3,3,3,3,4,3 | CHI05-05-03-L3-1980 | Interior - L3 UPS - COLO5 Cell 3 | Not Started | 37 |
| 989 | CHI05-PH2-FIT-BL-D5,3,3,3,3,4,3 | CHI05-05-03-L3-1990 | Interior - L3 MSB - COLO5 Cell 3 | Not Started | 37 |
| 990 | CHI05-PH2-FIT-BL-D5,3,3,3,3,4,3 | CHI05-05-03-L3-2000 | Interior - L3 PDUs - COLO5 Cell 3 | Not Started | 37 |
| 991 | CHI05-PH2-FIT-BL-D5,3,3,3,3,4,3 | CHI05-05-03-L3-2010 | Interior - L3 AHUs - COLO5 Cell 3 | Not Started | 37 |
| 992 | CHI05-PH2-FIT-BL-D5,3,3,3,3,4,3 | CHI05-05-03-L3-2020 | Interior - L3 ATSs - COLO5 Cell 3 | Not Started | 37 |
| 993 | CHI05-PH2-FIT-BL-D5,3,3,3,3,4,3 | CHI05-05-03-L3-2030 | Interior - L3 Busway - COLO5 Cell 3 | Not Started | 37 |
| 994 | CHI05-PH2-FIT-BL-D5,3,3,3,3,4,3 | CHI05-05-03-L3-2090 | Interior - L3 ADP - COLO5 Cell 3 | Not Started | 37 |
| 995 | CHI05-PH2-FIT-BL-D5,3,3,3,2,2 | CHI05-05-04-MG-1660 | Install Dampers and actuators at Louvers - Upper level (RED) - COLO5 Cell 4 - MG | Not Started | 73 |
| 996 | CHI05-PH2-FIT-BL-D5,3,3,3,2,2 | CHI05-05-04-MG-1670 | Install Dampers and actuators at Louvers - Lower level (OA) - COLO5 Cell 4 - MG | Not Started | 78 |
| 997 | CHI05-PH2-FIT-BL-D5,3,3,3,2,2 | CHI05-05-04-MG-1680 | Overhead MEP Installation - COLO5 Cell 4 - MG | Not Started | 63 |
| 998 | CHI05-PH2-FIT-BL-D5,3,3,3,2,2 | CHI05-05-04-MG-1690 | Deliver AHU into Mech. Gallery - COLO5 Cell 4 - MG | Not Started | 63 |
| 999 | CHI05-PH2-FIT-BL-D5,3,3,3,2,2 | CHI05-05-04-MG-1700 | Install Walls and Primer Paint - COLO5 Cell 4 - MG | Not Started | 49 |
| 1000 | CHI05-PH2-FIT-BL-D5,3,3,3,2,2 | CHI05-05-04-MG-1710 | Placing the AHU - COLO5 Cell 4 - MG | Not Started | 69 |
| 1001 | CHI05-PH2-FIT-BL-D5,3,3,3,2,2 | CHI05-05-04-MG-1720 | Layout Ceiling and install Pencile Rod - COLO5 Cell 4 - MG | Not Started | 73 |
| 1002 | CHI05-PH2-FIT-BL-D5,3,3,3,2,2 | CHI05-05-04-MG-1730 | Piping and Electrical Termination to AHUs - COLO5 Cell 4 - MG | Not Started | 77 |
| 1003 | CHI05-PH2-FIT-BL-D5,3,3,3,2,2 | CHI05-05-04-MG-1740 | Pipe Testing - COLO5 Cell 4 - MG | Not Started | 77 |
| 1004 | CHI05-PH2-FIT-BL-D5,3,3,3,2,2 | CHI05-05-04-MG-1750 | Install ceiling and Light Fittings - COLO5 Cell 4 - MG | Not Started | 77 |
| 1005 | CHI05-PH2-FIT-BL-D5,3,3,3,2,2 | CHI05-05-04-MG-1760 | Trim out MEP - COLO5 Cell 4 - MG | Not Started | 77 |
| 1006 | CHI05-PH2-FIT-BL-D5,3,3,3,2,2 | CHI05-05-04-MG-1705 | Post Wall Overhead MEP - COLO5 Cell 4 - MG | Not Started | 69 |
| 1007 | CHI05-PH2-FIT-BL-D5,3,3,3,2,5 | CHI05-05-04-ER-1660 | Install Walls and Primer Paint - COLO5 Cell 4 - ER | Not Started | 61 |
| 1008 | CHI05-PH2-FIT-BL-D5,3,3,3,2,5 | CHI05-05-04-ER-1670 | Sprinklers and Overhead MEP (Above Ceiling) - COLO5 Cell 4 - ER | Not Started | 58 |
| 1009 | CHI05-PH2-FIT-BL-D5,3,3,3,2,5 | CHI05-05-04-ER-1680 | Install Upper Screens - COLO5 Cell 4 - ER | Not Started | 61 |
| 1010 | CHI05-PH2-FIT-BL-D5,3,3,3,2,5 | CHI05-05-04-ER-1690 | Install Ceiling - COLO5 Cell 4 - ER | Not Started | 58 |
| 1011 | CHI05-PH2-FIT-BL-D5,3,3,3,2,5 | CHI05-05-04-ER-1700 | Below Ceiling MEP Rough In - COLO5 Cell 4 - ER | Not Started | 58 |
| 1012 | CHI05-PH2-FIT-BL-D5,3,3,3,2,5 | CHI05-05-04-ER-1710 | Installation of ADP & ATS - COLO5 Cell 4 - ER | Not Started | 83 |
| 1013 | CHI05-PH2-FIT-BL-D5,3,3,3,2,5 | CHI05-05-04-ER-1720 | Installation of UPS Equipment - COLO5 Cell 4 - ER | Not Started | 58 |
| 1014 | CHI05-PH2-FIT-BL-D5,3,3,3,2,5 | CHI05-05-04-ER-1730 | Connet to Cable tray and conduit equipment - COLO5 Cell 4 - ER | Not Started | 124 |
| 1015 | CHI05-PH2-FIT-BL-D5,3,3,3,2,5 | CHI05-05-04-ER-1740 | Cable Pulling at Elec. Equipment - COLO5 Cell 4 - ER | Not Started | 94 |
| 1016 | CHI05-PH2-FIT-BL-D5,3,3,3,2,5 | CHI05-05-04-ER-1750 | Door Frame Installation - COLO5 Cell 4 - ER | Not Started | 58 |
| 1017 | CHI05-PH2-FIT-BL-D5,3,3,3,2,5 | CHI05-05-04-ER-1760 | Finishes and Signage - COLO5 Cell 4 - ER | Not Started | 85 |
| 1018 | CHI05-PH2-FIT-BL-D5,3,3,3,2,5 | CHI05-05-04-ER-1715 | Installation of MSB - COLO5 Cell 4 - ER | Not Started | 81 |
| 1019 | CHI05-PH2-FIT-BL-D5,3,3,3,2,1 | CHI05-05-04-DH-1745 | Closing Construction Access Door - COLO5 Cell 4 - DH | Not Started | 69 |
| 1020 | CHI05-PH2-FIT-BL-D5,3,3,3,2,1 | CHI05-05-04-DH-1650 | Termination at PDU & Busway - COLO5 Cell 4 - DH | Not Started | 39 |
| 1021 | CHI05-PH2-FIT-BL-D5,3,3,3,2,1 | CHI05-05-04-DH-1660 | Overhead MEP and Hangers (Above Ceiling) - COLO5 Cell 4 - DH | Not Started | 72 |
| 1022 | CHI05-PH2-FIT-BL-D5,3,3,3,2,1 | CHI05-05-04-DH-1670 | HAC install and Rise - COLO5 Cell 4 - DH | Not Started | 64 |
| 1023 | CHI05-PH2-FIT-BL-D5,3,3,3,2,1 | CHI05-05-04-DH-1680 | Cable Pulling at PDU & Busway- COLO5 Cell 4 - DH | Not Started | 54 |
| 1024 | CHI05-PH2-FIT-BL-D5,3,3,3,2,1 | CHI05-05-04-DH-1690 | Security Screen Installation - COLO5 Cell 4 - DH | Not Started | 49 |
| 1025 | CHI05-PH2-FIT-BL-D5,3,3,3,2,1 | CHI05-05-04-DH-1700 | Ceiling Grid and Tile - COLO5 Cell 4 - DH | Not Started | 49 |
| 1026 | CHI05-PH2-FIT-BL-D5,3,3,3,2,1 | CHI05-05-04-DH-1710 | Install PDU's - COLO5 Cell 4 - DH | Not Started | 49 |
| 1027 | CHI05-PH2-FIT-BL-D5,3,3,3,2,1 | CHI05-05-04-DH-1720 | Overhead MEP Installation (Below Ceiling) - COLO5 Cell 4 - DH | Not Started | 49 |
| 1028 | CHI05-PH2-FIT-BL-D5,3,3,3,2,1 | CHI05-05-04-DH-1730 | Install Low Voltage Wiring and Fiber Optic - COLO5 Cell 4 - DH | Not Started | 64 |
| 1029 | CHI05-PH2-FIT-BL-D5,3,3,3,2,1 | CHI05-05-04-DH-1740 | HAC Placing - COLO5 Cell 4 - DH | Not Started | 64 |
| 1030 | CHI05-PH2-FIT-BL-D5,3,3,3,2,1 | CHI05-05-04-DH-1750 | Finishes and Signage - COLO5 Cell 4 - DH | Not Started | 85 |
| 1031 | CHI05-PH2-FIT-BL-D5,3,3,3,2,4,1 | CHI05-05-04-L1-1860 | Interior - L1 UPS - COLO5 Cell 4 | Not Started | 83 |
| 1032 | CHI05-PH2-FIT-BL-D5,3,3,3,2,4,1 | CHI05-05-04-L1-1870 | Interior - L1 MSB - COLO5 Cell 4 | Not Started | 81 |
| 1033 | CHI05-PH2-FIT-BL-D5,3,3,3,2,4,1 | CHI05-05-04-L1-1880 | Interior - L1 PDUs - COLO5 Cell 4 | Not Started | 49 |
| 1034 | CHI05-PH2-FIT-BL-D5,3,3,3,2,4,1 | CHI05-05-04-L1-1890 | Interior - L1 AHUs - COLO5 Cell 4 | Not Started | 49 |
| 1035 | CHI05-PH2-FIT-BL-D5,3,3,3,2,4,1 | CHI05-05-04-L1-1900 | Interior - L1 ATSs - COLO5 Cell 4 | Not Started | 81 |
| 1036 | CHI05-PH2-FIT-BL-D5,3,3,3,2,4,1 | CHI05-05-04-L1-1910 | Interior - L1 Busway - COLO5 Cell 4 | Not Started | 49 |
| 1037 | CHI05-PH2-FIT-BL-D5,3,3,3,2,4,1 | CHI05-05-04-L1-1970 | Interior - L1 ADP - COLO5 Cell 4 | Not Started | 81 |
| 1038 | CHI05-PH2-FIT-BL-D5,3,3,3,2,4,2 | CHI05-05-04-L2-1980 | Interior - L2 UPS - COLO5 Cell 4 | Not Started | 49 |
| 1039 | CHI05-PH2-FIT-BL-D5,3,3,3,2,4,2 | CHI05-05-04-L2-1990 | Interior - L2 MSB - COLO5 Cell 4 | Not Started | 49 |
| 1040 | CHI05-PH2-FIT-BL-D5,3,3,3,2,4,2 | CHI05-05-04-L2-2000 | Interior - L2 PDUs - COLO5 Cell 4 | Not Started | 39 |
| 1041 | CHI05-PH2-FIT-BL-D5,3,3,3,2,4,2 | CHI05-05-04-L2-2010 | Interior - L2 AHUs - COLO5 Cell 4 | Not Started | 39 |
| 1042 | CHI05-PH2-FIT-BL-D5,3,3,3,2,4,2 | CHI05-05-04-L2-2020 | Interior - L2 ATSs - COLO5 Cell 4 | Not Started | 49 |
| 1043 | CHI05-PH2-FIT-BL-D5,3,3,3,2,4,2 | CHI05-05-04-L2-2030 | Interior - L2 Busway - COLO5 Cell 4 | Not Started | 39 |
| 1044 | CHI05-PH2-FIT-BL-D5,3,3,3,2,4,2 | CHI05-05-04-L2-2090 | Interior - L2 ADP - COLO5 Cell 4 | Not Started | 49 |
| 1045 | CHI05-PH2-FIT-BL-D5,3,3,3,2,4,3 | CHI05-05-04-L3-2100 | Interior - L3 UPS - COLO5 Cell 4 | Not Started | 35 |
| 1046 | CHI05-PH2-FIT-BL-D5,3,3,3,2,4,3 | CHI05-05-04-L3-2110 | Interior - L3 MSB - COLO5 Cell 4 | Not Started | 35 |
| 1047 | CHI05-PH2-FIT-BL-D5,3,3,3,2,4,3 | CHI05-05-04-L3-2120 | Interior - L3 PDUs - COLO5 Cell 4 | Not Started | 40 |
| 1048 | CHI05-PH2-FIT-BL-D5,3,3,3,2,4,3 | CHI05-05-04-L3-2130 | Interior - L3 AHUs - COLO5 Cell 4 | Not Started | 35 |
| 1049 | CHI05-PH2-FIT-BL-D5,3,3,3,2,4,3 | CHI05-05-04-L3-2140 | Interior - L3 ATSs - COLO5 Cell 4 | Not Started | 35 |
| 1050 | CHI05-PH2-FIT-BL-D5,3,3,3,2,4,3 | CHI05-05-04-L3-2150 | Interior - L3 Busway - COLO5 Cell 4 | Not Started | 35 |

| entry | activity_code | activity_id | activity_name | activity_status | total_float |
| --- | --- | --- | --- | --- | --- |
| 1051 | CHI05-PH2-FIT-BL-D5,3,3,3,2,4,3 | CHI05-05-04-L3-2210 | Interior - L3 ADP - COLO5 Cell 4 | Not Started | 35 |
| 1052 | CHI05-PH2-FIT-BL-D5,3,3,3,5,1 | CHI05-05-04-L4-1000 | COLO5 Cx LEV4 - COLO5 | Not Started | 35 |
| 1053 | CHI05-PH2-FIT-BL-D5,3,3,3,5,2 | CHI05-05-04-L5-1000 | COLO5 Cx LEV5 / IST - COLO5 | Not Started | 35 |
| 1054 | CHI05-PH2-FIT-BL-D5,3,3,6,1 | CHI05-02-01-L1-1220 | L1 UPM - COLO2 | Not Started | 75 |
| 1055 | CHI05-PH2-FIT-BL-D5,3,3,6,1 | CHI05-02-01-L1-1230 | L1 XFMR - MV- COLO2 | Not Started | 96 |
| 1056 | CHI05-PH2-FIT-BL-D5,3,3,6,1 | CHI05-02-01-L1-1240 | L1 GEN - COLO2 | Not Started | 83 |
| 1057 | CHI05-PH2-FIT-BL-D5,3,3,6,1 | CHI05-03-01-L1-1340 | L1 UPM - COLO3 | Not Started | 68 |
| 1058 | CHI05-PH2-FIT-BL-D5,3,3,6,1 | CHI05-03-01-L1-1350 | L1 XFMR - MV- COLO3 | Not Started | 84 |
| 1059 | CHI05-PH2-FIT-BL-D5,3,3,6,1 | CHI05-03-01-L1-1360 | L1 GEN - COLO3 | Not Started | 86 |
| 1060 | CHI05-PH2-FIT-BL-D5,3,3,6,1 | CHI05-04-01-L1-1460 | L1 UPM - COLO4 | Not Started | 74 |
| 1061 | CHI05-PH2-FIT-BL-D5,3,3,6,1 | CHI05-04-01-L1-1470 | L1 XFMR - MV- COLO4 | Not Started | 85 |
| 1062 | CHI05-PH2-FIT-BL-D5,3,3,6,1 | CHI05-04-01-L1-1480 | L1 GEN - COLO4 | Not Started | 87 |
| 1063 | CHI05-PH2-FIT-BL-D5,3,3,6,1 | CHI05-05-01-L1-1580 | L1 UPM - COLO5 | Not Started | 75 |
| 1064 | CHI05-PH2-FIT-BL-D5,3,3,6,1 | CHI05-05-01-L1-1590 | L1 XFMR - MV- COLO5 | Not Started | 81 |
| 1065 | CHI05-PH2-FIT-BL-D5,3,3,6,1 | CHI05-05-01-L1-1600 | L1 GEN - COLO5 | Not Started | 83 |
| 1066 | CHI05-PH2-FIT-BL-D5,3,3,6,1 | CHI05-02-01-L1-1200 | L1 UTS / UTSR - Site | Not Started | 42 |
| 1067 | CHI05-PH2-FIT-BL-D5,3,3,6,1 | CHI05-02-01-L1-1210 | L1 UMS 04 - COLO 3 | Not Started | 73 |
| 1068 | CHI05-PH2-FIT-BL-D5,3,3,6,1 | CHI05-02-02-L1-1330 | L1 UMS 03 - COLO 3 | Not Started | 73 |
| 1069 | CHI05-PH2-FIT-BL-D5,3,3,6,1 | CHI05-02-03-L1-1450 | L1 UMS 01 - COLO 5 | Not Started | 68 |
| 1070 | CHI05-PH2-FIT-BL-D5,3,3,6,1 | CHI05-02-04-L1-1570 | L1 URS 01 - COLO 5 | Not Started | 68 |
| 1071 | CHI05-PH2-FIT-BL-D5,3,3,6,2 | CHI05-02-01-L2-1340 | L2 UPM - COLO2 | Not Started | 35 |
| 1072 | CHI05-PH2-FIT-BL-D5,3,3,6,2 | CHI05-02-01-L2-1350 | L2 XFMR - COLO2 | Not Started | 40 |
| 1073 | CHI05-PH2-FIT-BL-D5,3,3,6,2 | CHI05-02-01-L2-1360 | L2 GEN - COLO2 | Not Started | 40 |
| 1074 | CHI05-PH2-FIT-BL-D5,3,3,6,2 | CHI05-03-01-L2-1460 | L2 UPM - COLO3 | Not Started | 28 |
| 1075 | CHI05-PH2-FIT-BL-D5,3,3,6,2 | CHI05-03-01-L2-1470 | L2 XFMR - COLO3 | Not Started | 33 |
| 1076 | CHI05-PH2-FIT-BL-D5,3,3,6,2 | CHI05-03-01-L2-1480 | L2 GEN - COLO3 | Not Started | 33 |
| 1077 | CHI05-PH2-FIT-BL-D5,3,3,6,2 | CHI05-04-01-L2-1580 | L2 UPM - COLO4 | Not Started | 34 |
| 1078 | CHI05-PH2-FIT-BL-D5,3,3,6,2 | CHI05-04-01-L2-1590 | L2 XFMR - COLO4 | Not Started | 39 |
| 1079 | CHI05-PH2-FIT-BL-D5,3,3,6,2 | CHI05-04-01-L2-1600 | L2 GEN - COLO4 | Not Started | 39 |
| 1080 | CHI05-PH2-FIT-BL-D5,3,3,6,2 | CHI05-05-01-L2-1700 | L2 UPM - COLO5 | Not Started | 35 |
| 1081 | CHI05-PH2-FIT-BL-D5,3,3,6,2 | CHI05-05-01-L2-1710 | L2 XFMR - COLO5 | Not Started | 40 |
| 1082 | CHI05-PH2-FIT-BL-D5,3,3,6,2 | CHI05-05-01-L2-1720 | L2 GEN - COLO5 | Not Started | 40 |
| 1083 | CHI05-PH2-FIT-BL-D5,3,3,6,2 | CHI05-02-01-L2-1330 | L2 URS 01 - COLO 5 | Not Started | 33 |
| 1084 | CHI05-PH2-FIT-BL-D5,3,3,6,2 | CHI05-02-02-L2-1450 | L2 UMS 03 - COLO 3 | Not Started | 28 |
| 1085 | CHI05-PH2-FIT-BL-D5,3,3,6,2 | CHI05-02-03-L2-1570 | L2 UMS 04 - COLO 3 | Not Started | 28 |
| 1086 | CHI05-PH2-FIT-BL-D5,3,3,6,2 | CHI05-02-04-L2-1690 | L2 UMS 01 - COLO 5 | Not Started | 28 |
| 1087 | CHI05-PH2-FIT-BL-D5,3,3,6,2 | CHI05-05-01-L2-1680 | L2 UTS / UTSR - Site | Not Started | 28 |
| 1088 | CHI05-PH2-FIT-BL-D5,3,3,6,3 | CHI05-02-01-L3-1460 | L3 UPM - COLO2 | Not Started | 35 |
| 1089 | CHI05-PH2-FIT-BL-D5,3,3,6,3 | CHI05-02-01-L3-1470 | L3 XFMR - COLO2 | Not Started | 40 |
| 1090 | CHI05-PH2-FIT-BL-D5,3,3,6,3 | CHI05-02-01-L3-1480 | L3 GEN - COLO2 | Not Started | 40 |
| 1091 | CHI05-PH2-FIT-BL-D5,3,3,6,3 | CHI05-03-01-L3-1580 | L3 UPM - COLO3 | Not Started | 27 |
| 1092 | CHI05-PH2-FIT-BL-D5,3,3,6,3 | CHI05-03-01-L3-1590 | L3 XFMR - COLO3 | Not Started | 32 |
| 1093 | CHI05-PH2-FIT-BL-D5,3,3,6,3 | CHI05-03-01-L3-1600 | L3 GEN - COLO3 | Not Started | 32 |
| 1094 | CHI05-PH2-FIT-BL-D5,3,3,6,3 | CHI05-04-01-L3-1700 | L3 UPM - COLO4 | Not Started | 0 |
| 1095 | CHI05-PH2-FIT-BL-D5,3,3,6,3 | CHI05-04-01-L3-1710 | L3 XFMR - COLO4 | Not Started | 5 |
| 1096 | CHI05-PH2-FIT-BL-D5,3,3,6,3 | CHI05-04-01-L3-1720 | L3 GEN - COLO4 | Not Started | 5 |
| 1097 | CHI05-PH2-FIT-BL-D5,3,3,6,3 | CHI05-05-01-L3-1820 | L3 UPM - COLO5 | Not Started | 35 |
| 1098 | CHI05-PH2-FIT-BL-D5,3,3,6,3 | CHI05-05-01-L3-1830 | L3 XFMR - COLO5 | Not Started | 40 |
| 1099 | CHI05-PH2-FIT-BL-D5,3,3,6,3 | CHI05-05-01-L3-1840 | L3 GEN - COLO5 | Not Started | 40 |
| 1100 | CHI05-PH2-FIT-BL-D5,3,3,6,3 | CHI05-02-01-L3-1440 | L3 UTS / UTSR - Site | Not Started | 29 |
| 1101 | CHI05-PH2-FIT-BL-D5,3,3,6,3 | CHI05-02-01-L3-1450 | L3 UMS 04 - COLO 3 | Not Started | 29 |
| 1102 | CHI05-PH2-FIT-BL-D5,3,3,6,3 | CHI05-02-02-L3-1570 | L3 UMS 03 - COLO 3 | Not Started | 29 |
| 1103 | CHI05-PH2-FIT-BL-D5,3,3,6,3 | CHI05-02-03-L3-1690 | L3 URS 01 - COLO 5 | Not Started | 29 |
| 1104 | CHI05-PH2-FIT-BL-D5,3,3,6,3 | CHI05-02-04-L3-1810 | L3 UMS 01 - COLO 5 | Not Started | 29 |
| 1105 | CHI05-PH2-FIT-BL-D5,3,2 | CHI05-CON-1020 | (3) UTS - Install and Terminate (1 wk/ea) | Not Started | 28 |
| 1106 | CHI05-PH2-FIT-BL-D5,3,2 | CHI05-CON-1050 | Permanent Power Live | Not Started | 0 |
| 1107 | CHI05-PH2-FIT-BL-D5,3,2 | CHI05-CON-1030 | Installation and Termiation of MV Cable | Not Started | 28 |
| 1108 | CHI05-PH2-FIT-BL-D5,4,2,1 | CHI05-CFCI-1020 | HAC's - Submittal Preparation | Completed |  |
| 1109 | CHI05-PH2-FIT-BL-D5,4,2,1 | CHI05-CFCI-1080 | HAC's - Submittal Review | Completed |  |
| 1110 | CHI05-PH2-FIT-BL-D5,4,2,1 | CHI05-CFCI-1090 | HAC's - Lead Time | In Progress | 140 |
| 1111 | CHI05-PH2-FIT-BL-D5,4,2,9 | CHI05-CFCI-1140 | Doors/Frames/Hardware - Submittal Preparation | In Progress | 60 |
| 1112 | CHI05-PH2-FIT-BL-D5,4,2,9 | CHI05-CFCI-1160 | Doors/Frames/Hardware - Submittal Review | In Progress | 60 |
| 1113 | CHI05-PH2-FIT-BL-D5,4,2,9 | CHI05-CFCI-1220 | Doors/Frames/Hardware - Lead Time | Not Started | 60 |
| 1114 | CHI05-PH2-FIT-BL-D5,4,2,4 | CHI05-CFCI-1000 | DX Split Units - Submittal Preparation | Completed |  |
| 1115 | CHI05-PH2-FIT-BL-D5,4,2,4 | CHI05-CFCI-1120 | DX Split Units - Submittal Review | Completed |  |
| 1116 | CHI05-PH2-FIT-BL-D5,4,2,4 | CHI05-CFCI-1170 | DX Split Units - Lead Time | In Progress | 57 |
| 1117 | CHI05-PH2-FIT-BL-D5,4,2,6 | CHI05-CFCI-1030 | AHU (Admin) - Submittal Preparation | Completed |  |
| 1118 | CHI05-PH2-FIT-BL-D5,4,2,6 | CHI05-CFCI-1150 | AHU (Admin) - Submittal Review | Completed |  |
| 1119 | CHI05-PH2-FIT-BL-D5,4,2,6 | CHI05-CFCI-1200 | AHU (Admin) - Lead Time | In Progress | 39 |
| 1120 | CHI05-PH2-FIT-BL-D5,4,2,8 | CHI05-CFCI-1050 | Overhead Cable Bus - Submittal Preparation | Completed |  |

| entry | activity_code | activity_id | activity_name | activity_status | total_float |
| --- | --- | --- | --- | --- | --- |
| 1121 | CHI05-PH2-FIT-BL-D5,4,2,8 | CHI05-CFCI-1070 | Overhead Cable Bus - Submittal Review | Completed |  |
| 1122 | CHI05-PH2-FIT-BL-D5,4,2,8 | CHI05-CFCI-1100 | Overhead Cable Bus - Lead Time | In Progress | 40 |
| 1123 | CHI05-PH2-FIT-BL-D5,4,2,3 | CHI05-CFCI-1180 | Medium Voltage Cabling - Submittal Preparation | Completed |  |
| 1124 | CHI05-PH2-FIT-BL-D5,4,2,3 | CHI05-CFCI-1190 | Medium Voltage Cabling - Submittal Review | In Progress | 33 |
| 1125 | CHI05-PH2-FIT-BL-D5,4,2,3 | CHI05-CFCI-1210 | Medium Voltage Cabling - Lead Time | In Progress | 33 |
| 1126 | CHI05-PH2-FIT-BL-D5,4,2,5 | CHI05-CFCI-1040 | Elec. Distribution System - Submittal Preparation | Completed |  |
| 1127 | CHI05-PH2-FIT-BL-D5,4,2,5 | CHI05-CFCI-1110 | Elec. Distribution System - Submittal Review | Completed |  |
| 1128 | CHI05-PH2-FIT-BL-D5,4,2,5 | CHI05-CFCI-1130 | Elec. Distribution System - Lead Time | In Progress | 186 |
| 1129 | CHI05-PH2-FIT-BL-D5,4,2,7 | CHI05-CFCI-1010 | Light Fixture - Submittal Preparation | In Progress | 130 |
| 1130 | CHI05-PH2-FIT-BL-D5,4,2,7 | CHI05-CFCI-1060 | Light Fixture - Submittal Review | In Progress | 130 |
| 1131 | CHI05-PH2-FIT-BL-D5,4,2,7 | CHI05-CFCI-1230 | Light Fixture - Lead Time | Not Started | 130 |
| 1132 | CHI05-PH2-FIT-BL-D5,4,2,2 | CHI05-CFCI-1240 | Damper Assembly and Delivery | Not Started | 0 |
| 1133 | CHI05-PH2-FIT-BL-D5,4,1,1,1 | CHI05-OFCI-1000 | AHU - COLO 2 - In Storage | Not Started | 49 |
| 1134 | CHI05-PH2-FIT-BL-D5,4,1,1,2 | CHI05-OFCI-1450 | AHU - COLO 3 - In Storage | Not Started | 49 |
| 1135 | CHI05-PH2-FIT-BL-D5,4,1,1,3 | CHI05-OFCI-1460 | AHU - COLO 4 - Start ROJ | Not Started | 55 |
| 1136 | CHI05-PH2-FIT-BL-D5,4,1,1,3 | CHI05-OFCI-1470 | AHU - COLO 4 - ROJ | Not Started | 55 |
| 1137 | CHI05-PH2-FIT-BL-D5,4,1,1,3 | CHI05-OFCI-1480 | AHU - COLO 4 - Finish ROJ | Not Started | 55 |
| 1138 | CHI05-PH2-FIT-BL-D5,4,1,1,5 | CHI05-OFCI-1010 | AHU - COLO 5 - Start ROJ | Not Started | 63 |
| 1139 | CHI05-PH2-FIT-BL-D5,4,1,1,5 | CHI05-OFCI-1020 | AHU - COLO 5 - ROJ | Not Started | 63 |
| 1140 | CHI05-PH2-FIT-BL-D5,4,1,1,5 | CHI05-OFCI-1490 | AHU - COLO 5 - Finish ROJ | Not Started | 63 |
| 1141 | CHI05-PH2-FIT-BL-D5,4,1,2,1 | CHI05-OFCI-1860 | ATS - COLO 2 - Start ROJ | Not Started | 0 |
| 1142 | CHI05-PH2-FIT-BL-D5,4,1,2,1 | CHI05-OFCI-1870 | ATS - COLO 2 - ROJ | Not Started | 94 |
| 1143 | CHI05-PH2-FIT-BL-D5,4,1,2,1 | CHI05-OFCI-1970 | ATS - COLO 2 - Finish ROJ | Not Started | 94 |
| 1144 | CHI05-PH2-FIT-BL-D5,4,1,2,2 | CHI05-OFCI-2140 | ATS - COLO 3 - Start ROJ | Not Started | 78 |
| 1145 | CHI05-PH2-FIT-BL-D5,4,1,2,2 | CHI05-OFCI-2150 | ATS - COLO 3 - ROJ | Not Started | 78 |
| 1146 | CHI05-PH2-FIT-BL-D5,4,1,2,2 | CHI05-OFCI-2270 | ATS - COLO 3 - Finish ROJ | Not Started | 78 |
| 1147 | CHI05-PH2-FIT-BL-D5,4,1,2,3 | CHI05-OFCI-1590 | ATS - COLO 4 - Start ROJ | Not Started | 64 |
| 1148 | CHI05-PH2-FIT-BL-D5,4,1,2,3 | CHI05-OFCI-1600 | ATS - COLO 4 - ROJ | Not Started | 64 |
| 1149 | CHI05-PH2-FIT-BL-D5,4,1,2,3 | CHI05-OFCI-1980 | ATS - COLO 4 - Finish ROJ | Not Started | 64 |
| 1150 | CHI05-PH2-FIT-BL-D5,4,1,2,5 | CHI05-OFCI-1030 | ATS - COLO 5 - Start ROJ | Not Started | 118 |
| 1151 | CHI05-PH2-FIT-BL-D5,4,1,2,5 | CHI05-OFCI-1040 | ATS - COLO 5 - ROJ | Not Started | 118 |
| 1152 | CHI05-PH2-FIT-BL-D5,4,1,2,5 | CHI05-OFCI-1500 | ATS - COLO 5 - Finish ROJ | Not Started | 118 |
| 1153 | CHI05-PH2-FIT-BL-D5,4,1,6,1 | CHI05-OFCI-1050 | BAS - COLO 2 - Start ROJ | Not Started | 27 |
| 1154 | CHI05-PH2-FIT-BL-D5,4,1,6,1 | CHI05-OFCI-1060 | BAS - COLO 2 - ROJ | Not Started | 27 |
| 1155 | CHI05-PH2-FIT-BL-D5,4,1,6,1 | CHI05-OFCI-1650 | BAS - COLO 2 - Finish ROJ | Not Started | 27 |
| 1156 | CHI05-PH2-FIT-BL-D5,4,1,6,2 | CHI05-OFCI-1680 | BAS - COLO 3 - Start ROJ | Not Started | 27 |
| 1157 | CHI05-PH2-FIT-BL-D5,4,1,6,2 | CHI05-OFCI-1690 | BAS - COLO 3 - ROJ | Not Started | 27 |
| 1158 | CHI05-PH2-FIT-BL-D5,4,1,6,2 | CHI05-OFCI-2230 | BAS - COLO 3 - Finish ROJ | Not Started | 27 |
| 1159 | CHI05-PH2-FIT-BL-D5,4,1,6,3 | CHI05-OFCI-1700 | BAS - COLO 4 - Start ROJ | Not Started | 38 |
| 1160 | CHI05-PH2-FIT-BL-D5,4,1,6,3 | CHI05-OFCI-1710 | BAS - COLO 4 - ROJ | Not Started | 38 |
| 1161 | CHI05-PH2-FIT-BL-D5,4,1,6,3 | CHI05-OFCI-2240 | BAS - COLO 4 - Finish ROJ | Not Started | 38 |
| 1162 | CHI05-PH2-FIT-BL-D5,4,1,6,5 | CHI05-OFCI-1070 | BAS - COLO 5 - Start ROJ | Not Started | 76 |
| 1163 | CHI05-PH2-FIT-BL-D5,4,1,6,5 | CHI05-OFCI-1080 | BAS - COLO 5 - ROJ | Not Started | 76 |
| 1164 | CHI05-PH2-FIT-BL-D5,4,1,6,5 | CHI05-OFCI-1660 | BAS - COLO 5 - Finish ROJ | Not Started | 76 |
| 1165 | CHI05-PH2-FIT-BL-D5,4,1,3,1 | CHI05-OFCI-1090 | Busway/Bus Plugs - COLO 2 - In Storage | Not Started | 31 |
| 1166 | CHI05-PH2-FIT-BL-D5,4,1,3,2 | CHI05-OFCI-2020 | Busway/Bus Plugs - COLO 3 - Start ROJ | Not Started | 0 |
| 1167 | CHI05-PH2-FIT-BL-D5,4,1,3,2 | CHI05-OFCI-2030 | Busway/Bus Plugs - COLO 3 - ROJ | Not Started | 85 |
| 1168 | CHI05-PH2-FIT-BL-D5,4,1,3,2 | CHI05-OFCI-2250 | Busway/Bus Plugs - COLO 3 - Finish ROJ | Not Started | 85 |
| 1169 | CHI05-PH2-FIT-BL-D5,4,1,3,3 | CHI05-OFCI-2040 | Busway/Bus Plugs - COLO 4 - Start ROJ | Not Started | 87 |
| 1170 | CHI05-PH2-FIT-BL-D5,4,1,3,3 | CHI05-OFCI-2050 | Busway/Bus Plugs - COLO 4 - ROJ | Not Started | 87 |
| 1171 | CHI05-PH2-FIT-BL-D5,4,1,3,3 | CHI05-OFCI-2260 | Busway/Bus Plugs - COLO 4 - Finish ROJ | Not Started | 87 |
| 1172 | CHI05-PH2-FIT-BL-D5,4,1,3,5 | CHI05-OFCI-1100 | Busway/Bus Plugs - COLO 5 - Start ROJ | Not Started | 122 |
| 1173 | CHI05-PH2-FIT-BL-D5,4,1,3,5 | CHI05-OFCI-1110 | Busway/Bus Plugs - COLO 5 - ROJ | Not Started | 122 |
| 1174 | CHI05-PH2-FIT-BL-D5,4,1,3,5 | CHI05-OFCI-1670 | Busway/Bus Plugs - COLO 5 - Finish ROJ | Not Started | 122 |
| 1175 | CHI05-PH2-FIT-BL-D5,4,1,4,1 | CHI05-OFCI-1120 | EPMS - COLO 2 | Not Started | 103 |
| 1176 | CHI05-PH2-FIT-BL-D5,4,1,4,2 | CHI05-OFCI-1440 | EPMS - COLO 3 | Not Started | 103 |
| 1177 | CHI05-PH2-FIT-BL-D5,4,1,4,3 | CHI05-OFCI-1570 | EPMS - COLO 4 | Not Started | 103 |
| 1178 | CHI05-PH2-FIT-BL-D5,4,1,4,5 | CHI05-OFCI-1730 | EPMS - COLO 5 | Not Started | 103 |
| 1179 | CHI05-PH2-FIT-BL-D5,4,1,5,1 | CHI05-OFCI-1130 | GENS - COLO 2 - In Storage | Not Started | 0 |
| 1180 | CHI05-PH2-FIT-BL-D5,4,1,5,2 | CHI05-OFCI-1140 | GENS - COLO 3 - In Storage | Not Started | 67 |
| 1181 | CHI05-PH2-FIT-BL-D5,4,1,5,3 | CHI05-OFCI-1150 | GENS - COLO 4 - In Storage | Not Started | 67 |
| 1182 | CHI05-PH2-FIT-BL-D5,4,1,5,5 | CHI05-OFCI-1160 | GENS - COLO 5 - In Storage | Not Started | 67 |
| 1183 | CHI05-PH2-FIT-BL-D5,4,1,7,1 | CHI05-OFCI-1840 | LVS - COLO 2 - Start ROJ | Not Started | 0 |
| 1184 | CHI05-PH2-FIT-BL-D5,4,1,7,1 | CHI05-OFCI-1850 | LVS - COLO 2 - ROJ | Not Started | 0 |
| 1185 | CHI05-PH2-FIT-BL-D5,4,1,7,1 | CHI05-OFCI-1990 | LVS - COLO 2 - Finish ROJ | Not Started | 94 |
| 1186 | CHI05-PH2-FIT-BL-D5,4,1,7,2 | CHI05-OFCI-1930 | LVS - COLO 3 - Start ROJ | Not Started | 87 |
| 1187 | CHI05-PH2-FIT-BL-D5,4,1,7,2 | CHI05-OFCI-1940 | LVS - COLO 3 - ROJ | Not Started | 95 |
| 1188 | CHI05-PH2-FIT-BL-D5,4,1,7,2 | CHI05-OFCI-2100 | LVS - COLO 3 - Finish ROJ | Not Started | 95 |
| 1189 | CHI05-PH2-FIT-BL-D5,4,1,7,3 | CHI05-OFCI-2180 | LVS - COLO 4 - Start ROJ | Not Started | 0 |
| 1190 | CHI05-PH2-FIT-BL-D5,4,1,7,3 | CHI05-OFCI-2190 | LVS - COLO 4 - ROJ | Not Started | 60 |

| entry | activity_code | activity_id | activity_name | activity_status | total_float |
| --- | --- | --- | --- | --- | --- |
| 1191 | CHI05-PH2-FIT-BL-D5,4,1,7,3 | CHI05-OFCI-2280 | LVS - COLO 4 - Finish ROJ | Not Started | 60 |
| 1192 | CHI05-PH2-FIT-BL-D5,4,1,7,5 | CHI05-OFCI-1950 | LVS - COLO 5 - Start ROJ | Not Started | 87 |
| 1193 | CHI05-PH2-FIT-BL-D5,4,1,7,5 | CHI05-OFCI-1960 | LVS - COLO 5 - ROJ | Not Started | 87 |
| 1194 | CHI05-PH2-FIT-BL-D5,4,1,7,5 | CHI05-OFCI-2110 | LVS - COLO 5 - Finish ROJ | Not Started | 87 |
| 1195 | CHI05-PH2-FIT-BL-D5,4,1,8,1 | CHI05-OFCI-1170 | MVS (UPM) - COLO 2 - Start ROJ | Not Started | 173 |
| 1196 | CHI05-PH2-FIT-BL-D5,4,1,8,1 | CHI05-OFCI-1180 | MVS (UPM) - COLO 2 - ROJ | Not Started | 173 |
| 1197 | CHI05-PH2-FIT-BL-D5,4,1,8,1 | CHI05-OFCI-1530 | MVS (UPM) - COLO 2 - Finish ROJ | Not Started | 173 |
| 1198 | CHI05-PH2-FIT-BL-D5,4,1,8,2 | CHI05-OFCI-1190 | MVS (UPM) - COLO 3 - Start ROJ | Not Started | 173 |
| 1199 | CHI05-PH2-FIT-BL-D5,4,1,8,2 | CHI05-OFCI-1200 | MVS (UPM) - COLO 3 - ROJ | Not Started | 173 |
| 1200 | CHI05-PH2-FIT-BL-D5,4,1,8,2 | CHI05-OFCI-1510 | MVS (UPM) - COLO 3 - Finish ROJ | Not Started | 173 |
| 1201 | CHI05-PH2-FIT-BL-D5,4,1,8,3 | CHI05-OFCI-1210 | MVS (UPM) - COLO 4 - Start ROJ | Not Started | 178 |
| 1202 | CHI05-PH2-FIT-BL-D5,4,1,8,3 | CHI05-OFCI-1220 | MVS (UPM) - COLO 4 - ROJ | Not Started | 178 |
| 1203 | CHI05-PH2-FIT-BL-D5,4,1,8,3 | CHI05-OFCI-1520 | MVS (UPM) - COLO 4 - Finish ROJ | Not Started | 178 |
| 1204 | CHI05-PH2-FIT-BL-D5,4,1,8,5 | CHI05-OFCI-1230 | MVS (UPM) - COLO 5 - Start ROJ | Not Started | 89 |
| 1205 | CHI05-PH2-FIT-BL-D5,4,1,8,5 | CHI05-OFCI-1240 | MVS (UPM) - COLO 5 - ROJ | Not Started | 89 |
| 1206 | CHI05-PH2-FIT-BL-D5,4,1,8,5 | CHI05-OFCI-1540 | MVS (UPM) - COLO 5 - Finish ROJ | Not Started | 89 |
| 1207 | CHI05-PH2-FIT-BL-D5,4,1,9,1 | CHI05-OFCI-1250 | MVS (XFMR) - COLO 2 - In storage | Not Started | 63 |
| 1208 | CHI05-PH2-FIT-BL-D5,4,1,9,2 | CHI05-OFCI-1260 | MVS (XFMR) - COLO 3 - In storage | Not Started | 68 |
| 1209 | CHI05-PH2-FIT-BL-D5,4,1,9,3 | CHI05-OFCI-1270 | MVS (XFMR) - COLO 4 - In storage | Not Started | 73 |
| 1210 | CHI05-PH2-FIT-BL-D5,4,1,9,5 | CHI05-OFCI-1280 | MVS (XFMR) - COLO 5 - Start ROJ | Not Started | 0 |
| 1211 | CHI05-PH2-FIT-BL-D5,4,1,9,5 | CHI05-OFCI-1290 | MVS (XFMR) - COLO 5 - ROJ | Not Started | 65 |
| 1212 | CHI05-PH2-FIT-BL-D5,4,1,9,5 | CHI05-OFCI-1550 | MVS (XFMR) - COLO 5 - Finish ROJ | Not Started | 65 |
| 1213 | CHI05-PH2-FIT-BL-D5,4,1,10,1 | CHI05-OFCI-1300 | UMS & URS - COLO 2 - In storage, needs modifications | Not Started | 63 |
| 1214 | CHI05-PH2-FIT-BL-D5,4,1,10,2 | CHI05-OFCI-1580 | UMS & URS - COLO 3 - In storage, needs modifications | Not Started | 68 |
| 1215 | CHI05-PH2-FIT-BL-D5,4,1,10,3 | CHI05-OFCI-1720 | UMS & URS - COLO 4 - In storage, needs modifications | Not Started | 73 |
| 1216 | CHI05-PH2-FIT-BL-D5,4,1,10,5 | CHI05-OFCI-1880 | UMS & URS - COLO 5 - In storage, needs modifications | Not Started | 0 |
| 1217 | CHI05-PH2-FIT-BL-D5,4,1,11,1 | CHI05-OFCI-1610 | PDU - COLO 2 - Start ROJ | Not Started | 0 |
| 1218 | CHI05-PH2-FIT-BL-D5,4,1,11,1 | CHI05-OFCI-1620 | PDU - COLO 2 - ROJ | Not Started | 13 |
| 1219 | CHI05-PH2-FIT-BL-D5,4,1,11,1 | CHI05-OFCI-1820 | PDU - COLO 2 - Finish ROJ | Not Started | 13 |
| 1220 | CHI05-PH2-FIT-BL-D5,4,1,11,2 | CHI05-OFCI-2060 | PDU - COLO 3 - Start ROJ | Not Started | 0 |
| 1221 | CHI05-PH2-FIT-BL-D5,4,1,11,2 | CHI05-OFCI-2070 | PDU - COLO 3 - ROJ | Not Started | 36 |
| 1222 | CHI05-PH2-FIT-BL-D5,4,1,11,2 | CHI05-OFCI-2160 | PDU - COLO 3 - Finish ROJ | Not Started | 36 |
| 1223 | CHI05-PH2-FIT-BL-D5,4,1,11,3 | CHI05-OFCI-2080 | PDU - COLO 4 - Start ROJ | Not Started | 42 |
| 1224 | CHI05-PH2-FIT-BL-D5,4,1,11,3 | CHI05-OFCI-2090 | PDU - COLO 4 - ROJ | Not Started | 42 |
| 1225 | CHI05-PH2-FIT-BL-D5,4,1,11,3 | CHI05-OFCI-2170 | PDU - COLO 4 - Finish ROJ | Not Started | 42 |
| 1226 | CHI05-PH2-FIT-BL-D5,4,1,11,5 | CHI05-OFCI-1630 | PDU - COLO 5 - Start ROJ | Not Started | 69 |
| 1227 | CHI05-PH2-FIT-BL-D5,4,1,11,5 | CHI05-OFCI-1640 | PDU - COLO 5 - ROJ | Not Started | 69 |
| 1228 | CHI05-PH2-FIT-BL-D5,4,1,11,5 | CHI05-OFCI-1830 | PDU - COLO 5 - Finish ROJ | Not Started | 69 |
| 1229 | CHI05-PH2-FIT-BL-D5,4,1,12,1 | CHI05-OFCI-1310 | UPS - COLO 2 - In storage | Not Started | 89 |
| 1230 | CHI05-PH2-FIT-BL-D5,4,1,12,2 | CHI05-OFCI-1320 | UPS - COLO 3 - In storage | Not Started | 99 |
| 1231 | CHI05-PH2-FIT-BL-D5,4,1,12,3 | CHI05-OFCI-1330 | UPS - COLO 4 - In storage | Not Started | 100 |
| 1232 | CHI05-PH2-FIT-BL-D5,4,1,12,5 | CHI05-OFCI-1340 | UPS - COLO 5 - Start ROJ | Not Started | 101 |
| 1233 | CHI05-PH2-FIT-BL-D5,4,1,12,5 | CHI05-OFCI-1350 | UPS - COLO 5 - ROJ | Not Started | 101 |
| 1234 | CHI05-PH2-FIT-BL-D5,4,1,12,5 | CHI05-OFCI-1560 | UPS - COLO 5 - Finish ROJ | Not Started | 101 |
| 1235 | CHI05-PH2-FIT-BL-D5,4,1,13,1 | CHI05-OFCI-2000 | UTS - Site - Start ROJ | Not Started | 0 |
| 1236 | CHI05-PH2-FIT-BL-D5,4,1,13,1 | CHI05-OFCI-2010 | UTS - Site - ROJ | Not Started | 28 |
| 1237 | CHI05-PH2-FIT-BL-D5,4,1,13,1 | CHI05-OFCI-2130 | UTS - Site - Finish ROJ | Not Started | 28 |
| 1238 | CHI05-PH2-FIT-BL-D5,4,1,14,1 | CHI05-OFCI-1360 | MVS (UPM) Terminators/Lighting Arrestors - COLO 2 - Start ROJ | Not Started | 130 |
| 1239 | CHI05-PH2-FIT-BL-D5,4,1,14,1 | CHI05-OFCI-1370 | MVS (UPM) Terminators/Lighting Arrestors - COLO 2 - ROJ | Not Started | 130 |
| 1240 | CHI05-PH2-FIT-BL-D5,4,1,14,1 | CHI05-OFCI-2120 | MVS (UPM) Terminators/Lighting Arrestors - COLO 2 - Finish ROJ | Not Started | 130 |
| 1241 | CHI05-PH2-FIT-BL-D5,4,1,14,2 | CHI05-OFCI-1380 | MVS (UPM) Terminators/Lighting Arrestors - COLO 3 - Start ROJ | Not Started | 130 |
| 1242 | CHI05-PH2-FIT-BL-D5,4,1,14,2 | CHI05-OFCI-1390 | MVS (UPM) Terminators/Lighting Arrestors - COLO 3 - ROJ | Not Started | 130 |
| 1243 | CHI05-PH2-FIT-BL-D5,4,1,14,2 | CHI05-OFCI-2200 | MVS (UPM) Terminators/Lighting Arrestors - COLO 3 - Finish ROJ | Not Started | 130 |
| 1244 | CHI05-PH2-FIT-BL-D5,4,1,14,3 | CHI05-OFCI-1400 | MVS (UPM) Terminators/Lighting Arrestors - COLO 4 - Start ROJ | Not Started | 135 |
| 1245 | CHI05-PH2-FIT-BL-D5,4,1,14,3 | CHI05-OFCI-1410 | MVS (UPM) Terminators/Lighting Arrestors - COLO 4 - ROJ | Not Started | 135 |
| 1246 | CHI05-PH2-FIT-BL-D5,4,1,14,3 | CHI05-OFCI-2210 | MVS (UPM) Terminators/Lighting Arrestors - COLO 4 - Finish ROJ | Not Started | 135 |
| 1247 | CHI05-PH2-FIT-BL-D5,4,1,14,5 | CHI05-OFCI-1420 | MVS (UPM) Terminators/Lighting Arrestors - COLO 5 - Start ROJ | Not Started | 130 |
| 1248 | CHI05-PH2-FIT-BL-D5,4,1,14,5 | CHI05-OFCI-1430 | MVS (UPM) Terminators/Lighting Arrestors - COLO 5 - ROJ | Not Started | 130 |
| 1249 | CHI05-PH2-FIT-BL-D5,4,1,14,5 | CHI05-OFCI-2220 | MVS (UPM) Terminators/Lighting Arrestors - COLO 5 - Finish ROJ | Not Started | 130 |
| 1250 | CHI05-PH2-FIT-BL-D5,4,1,15,1 | CHI05-OFCI-1740 | Mufflers - COLO 2 - Start ROJ | Not Started | 47 |
| 1251 | CHI05-PH2-FIT-BL-D5,4,1,15,1 | CHI05-OFCI-1750 | Mufflers - COLO 2 - ROJ | Not Started | 82 |
| 1252 | CHI05-PH2-FIT-BL-D5,4,1,15,1 | CHI05-OFCI-1890 | Mufflers - COLO 2 - Finish ROJ | Not Started | 82 |
| 1253 | CHI05-PH2-FIT-BL-D5,4,1,15,2 | CHI05-OFCI-1760 | Mufflers - COLO 3 - Start ROJ | Not Started | 47 |
| 1254 | CHI05-PH2-FIT-BL-D5,4,1,15,2 | CHI05-OFCI-1770 | Mufflers - COLO 3 - ROJ | Not Started | 47 |
| 1255 | CHI05-PH2-FIT-BL-D5,4,1,15,2 | CHI05-OFCI-1900 | Mufflers - COLO 3 - Finish ROJ | Not Started | 47 |
| 1256 | CHI05-PH2-FIT-BL-D5,4,1,15,3 | CHI05-OFCI-1780 | Mufflers - COLO 4 - Start ROJ | Not Started | 47 |
| 1257 | CHI05-PH2-FIT-BL-D5,4,1,15,3 | CHI05-OFCI-1790 | Mufflers - COLO 4 - ROJ | Not Started | 47 |
| 1258 | CHI05-PH2-FIT-BL-D5,4,1,15,3 | CHI05-OFCI-1910 | Mufflers - COLO 4 - Finish ROJ | Not Started | 47 |
| 1259 | CHI05-PH2-FIT-BL-D5,4,1,15,5 | CHI05-OFCI-1800 | Mufflers - COLO 5 - Start ROJ | Not Started | 51 |
| 1260 | CHI05-PH2-FIT-BL-D5,4,1,15,5 | CHI05-OFCI-1810 | Mufflers - COLO 5 - ROJ | Not Started | 51 |

| entry | activity_code | activity_id | activity_name | activity_status | total_float |
| --- | --- | --- | --- | --- | --- |
| 1261 | CHI05-PH2-FIT-BL-D5,4,1,15,5 | CHI05-OFCI-1920 | Mufflers - COLO 5 - Finish ROJ | Not Started | 51 |
| 1262 | CHI05-PH2-FIT-BL-D5,4,1,16,1 | A1000 | MSB - COLO 2 - ROJ | Not Started | 60 |
| 1263 | CHI05-PH2-FIT-BL-D5,4,1,16,2 | A1010 | MSB - COLO 3 - ROJ | Not Started | 60 |
| 1264 | CHI05-PH2-FIT-BL-D5,4,1,16,3 | A1020 | MSB - COLO 4 - ROJ | Not Started | 60 |
| 1265 | CHI05-PH2-FIT-BL-D5,4,1,16,5 | A1040 | MSB - COLO 5 - ROJ | Not Started | 81 |
